# ----------------Project Header-------------
project mm "Mashhad Mall" 2017-06-01 +344d {
    workinghours thu 08:00 - 17:00
    workinghours tue 08:00 - 17:00
    workinghours wed 08:00 - 17:00
    workinghours fri 08:00 - 17:00
    workinghours mon 08:00 - 17:00
    outputdir "reports"

# ------------Scenarios-------------
scenario plan "planned" {
    scenario delayed ""
}
# ------------END-------------
}

# ------------END-------------


# ------------Shifts-------------
# ------------END-------------


# ------------Flags-------------
# ------------END-------------


# ----------------Accounts-------------
account cost "Primary cost account" {
    account resCost "Resources costs" {
        aggregate resources
    }
    account taskCost "Tasks costs" {
        aggregate tasks
    }
}
account rev "Primary revenue account"

# ------------END-------------


# ------------Resources-------------
resource res88 "mamad" {
    rate 1000
}

# ------------END-------------



# ------------Tasks-------------
task task0 "test task 1" {
    chargeset taskCost
    charge 50 onend
}

task task01 "tast task 2" {
    priority 1000
}

task task4 "تهیه صورتجلسه فصل مشترک" {
    milestone
    chargeset taskCost
    priority 500
    complete 100
    maxstart 2017-06-22
    minstart 2017-06-22
    maxend 2017-06-22
    minend 2017-06-22
}

task task5 "طبقه 4+" {
    chargeset taskCost
    priority 500
    complete 62
    maxstart 2017-06-22
    minstart 2017-06-22
    maxend 2018-05-11
    minend 2018-05-11
    start 2017-06-22
    end 2018-05-11
    charge 89860934144.0 onend
    delayed:charge 0.1111 onend


    task task6 "بلوک 6" {
        priority 500
        complete 58
        maxstart 2017-06-22
        minstart 2017-06-22
        maxend 2018-05-11
        minend 2018-05-11
        start 2017-06-22
        end 2018-05-11
        charge 6095839067.5 onend

        task task7 "شیب بندی بام" {
            priority 500
            complete 100
            maxstart 2017-06-22
            minstart 2017-06-22
            maxend 2017-09-10
            minend 2017-09-10
            start 2017-06-22
            end 2017-09-10
            charge 838772717.5 onend

            task task8 "سفتکاری" {
                priority 500
                complete 100
                maxstart 2017-06-22
                minstart 2017-06-22
                maxend 2017-09-10
                minend 2017-09-10
                start 2017-06-22
                end 2017-09-10
                charge 838772717.5 onend

                task task9 "نصب وال پست شیب بندی بام بلوک 6" {
                    milestone
                    priority 500
                    complete 100
                    maxstart 2017-06-22
                    minstart 2017-06-22
                    maxend 2017-07-01
                    minend 2017-07-01
                    charge 26234208.0 onend
                }


                task task10 "دیوارچینی هبلکس شیب بندی بام بلوک 6" {
                    milestone
                    priority 500
                    complete 100
                    maxstart 2017-07-01
                    minstart 2017-07-01
                    maxend 2017-07-06
                    minend 2017-07-06
                    charge 33729696.0 onend
                    delayed:priority 88
                    delayed:duration 69.0d

                }


                task task11 "عایق حرارتی شیب بندی بام بلوک 6" {
                    milestone
                    priority 500
                    complete 100
                    maxstart 2017-07-20
                    minstart 2017-07-20
                    maxend 2017-07-26
                    minend 2017-07-26
                    charge 132658240.0 onend
                }


                task task12 "کروم بندی و فوم بتن شیب بندی بام بلوک 6" {
                    milestone
                    priority 500
                    complete 100
                    maxstart 2017-07-26
                    minstart 2017-07-26
                    maxend 2017-08-01
                    minend 2017-08-01
                    charge 278582304.0 onend
                }


                task task13 "عایق رطوبتی و لایه محافظ شیب بندی بام بلوک 6" {
                    milestone
                    priority 500
                    complete 100
                    maxstart 2017-08-01
                    minstart 2017-08-01
                    maxend 2017-08-07
                    minend 2017-08-07
                    charge 109992260.0 onend
                }


                task task14 "موزاییک شیب بندی بام بلوک 6" {
                    milestone
                    priority 500
                    complete 100
                    maxstart 2017-08-29
                    minstart 2017-08-29
                    maxend 2017-09-04
                    minend 2017-09-04
                    charge 200700000.0 onend
                }


                task task15 "گاترشیب بندی بام بلوک 6" {
                    milestone
                    priority 500
                    complete 100
                    maxstart 2017-09-04
                    minstart 2017-09-04
                    maxend 2017-09-10
                    minend 2017-09-10
                    charge 3336809.5 onend
                }


                task task16 "آهن کشی ودیوارچینی درزژوئن شیب بندی بام بلوک 6" {
                    milestone
                    priority 500
                    complete 100
                    maxstart 2017-07-06
                    minstart 2017-07-06
                    maxend 2017-07-08
                    minend 2017-07-08
                    charge 53539200.0 onend
                }

            }

        }


        task task17 "بام باغ" {
            priority 500
            complete 99
            maxstart 2017-07-08
            minstart 2017-07-08
            maxend 2017-11-28
            minend 2017-11-28
            start 2017-07-08
            end 2017-11-28
            charge 887376257.0 onend

            task task18 "سفتکاری" {
                priority 500
                complete 99
                maxstart 2017-07-08
                minstart 2017-07-08
                maxend 2017-11-28
                minend 2017-11-28
                start 2017-07-08
                end 2017-11-28
                charge 887376257.0 onend

                task task19 "کرسی چینی بام باغ بلوک 6" {
                    milestone
                    priority 500
                    complete 100
                    maxstart 2017-09-26
                    minstart 2017-09-26
                    maxend 2017-10-06
                    minend 2017-10-06
                    charge 235600365.0 onend
                }


                task task20 "عایق رطوبتی بام باغ بلوک 6" {
                    milestone
                    priority 500
                    complete 99
                    maxstart 2017-10-13
                    minstart 2017-10-13
                    maxend 2017-11-01
                    minend 2017-11-01
                    charge 299897264.0 onend
                }


                task task21 "کفسازی بام باغ بلوک 6" {
                    milestone
                    priority 500
                    complete 100
                    maxstart 2017-11-09
                    minstart 2017-11-09
                    maxend 2017-11-28
                    minend 2017-11-28
                    charge 211338228.0 onend
                }


                task task22 "آهن کشی ودیوارچینی درزژوئن بام باغ بلوک 6" {
                    milestone
                    priority 500
                    complete 100
                    maxstart 2017-07-08
                    minstart 2017-07-08
                    maxend 2017-07-10
                    minend 2017-07-10
                    charge 140540400.0 onend
                }

            }

        }


        task task23 "راهرو" {
            priority 500
            complete 58
            maxstart 2017-07-10
            minstart 2017-07-10
            maxend 2018-05-11
            minend 2018-05-11
            start 2017-07-10
            end 2018-05-11
            charge 1570456900.0 onend

            task task24 "سفتکاری" {
                priority 500
                complete 100
                maxstart 2017-07-10
                minstart 2017-07-10
                maxend 2017-07-18
                minend 2017-07-18
                start 2017-07-10
                end 2017-07-18
                charge 153925200.0 onend

                task task25 "آهن کشی ودیوارچینی درزژوئن راهرو بلوک 6" {
                    milestone
                    priority 500
                    complete 100
                    maxstart 2017-07-10
                    minstart 2017-07-10
                    maxend 2017-07-18
                    minend 2017-07-18
                    charge 153925200.0 onend
                }

            }


            task task26 "تاسیسات مکانیکی فاز 1" {
                priority 500
                complete 99
                maxstart 2017-07-23
                minstart 2017-07-23
                maxend 2017-11-28
                minend 2017-11-28
                start 2017-07-23
                end 2017-11-28
                charge 367798770.0 onend

                task task27 "ساخت کانال راهرو بلوک 6" {
                    milestone
                    priority 500
                    complete 100
                    maxstart 2017-07-23
                    minstart 2017-07-23
                    maxend 2017-07-26
                    minend 2017-07-26
                    charge 38815920.0 onend
                }


                task task28 "ساپورت زنی و شاسی کشی راهرو بلوک 6" {
                    milestone
                    priority 500
                    complete 100
                    maxstart 2017-08-15
                    minstart 2017-08-15
                    maxend 2017-08-23
                    minend 2017-08-23
                    charge 61997650.0 onend
                }


                task task29 "نصب کانال راهرو بلوک 6" {
                    milestone
                    priority 500
                    complete 99
                    maxstart 2017-08-23
                    minstart 2017-08-23
                    maxend 2017-08-30
                    minend 2017-08-30
                    charge 38815920.0 onend
                }


                task task30 "عایق کانال راهرو بلوک 6" {
                    milestone
                    priority 500
                    complete 100
                    maxstart 2017-08-30
                    minstart 2017-08-30
                    maxend 2017-09-03
                    minend 2017-09-03
                    charge 38700000.0 onend
                }


                task task31 "لوله سرد و گرم مصرفی راهرو بلوک 6" {
                    milestone
                    priority 500
                    complete 100
                    maxstart 2017-11-22
                    minstart 2017-11-22
                    maxend 2017-11-25
                    minend 2017-11-25
                    charge 15615600.0 onend
                }


                task task32 "لوله اطفاء حریق راهرو بلوک 6" {
                    milestone
                    priority 500
                    complete 100
                    maxstart 2017-10-15
                    minstart 2017-10-15
                    maxend 2017-10-18
                    minend 2017-10-18
                    charge 138458320.0 onend
                }


                task task33 "عایق لوله راهرو بلوک 6" {
                    milestone
                    priority 500
                    complete 100
                    maxstart 2017-11-25
                    minstart 2017-11-25
                    maxend 2017-11-28
                    minend 2017-11-28
                    charge 24204180.0 onend
                }


                task task34 "تست لوله ها راهرو بلوک 6" {
                    milestone
                    priority 500
                    complete 100
                    maxstart 2017-11-25
                    minstart 2017-11-25
                    maxend 2017-11-28
                    minend 2017-11-28
                    charge 11191180.0 onend
                }

            }


            task task35 "تاسیسات برقی فاز 1" {
                priority 500
                complete 99
                maxstart 2017-09-23
                minstart 2017-09-23
                maxend 2017-12-03
                minend 2017-12-03
                start 2017-09-23
                end 2017-12-03
                charge 268546080.0 onend

                task task36 "سوراخکاری و شیارزنی راهرو بلوک 6" {
                    milestone
                    priority 500
                    complete 100
                    maxstart 2017-11-22
                    minstart 2017-11-22
                    maxend 2017-11-30
                    minend 2017-11-30
                    charge 2090000.0 onend
                }


                task task37 "ساپورت زنی راهرو بلوک 6" {
                    milestone
                    priority 500
                    complete 100
                    maxstart 2017-09-23
                    minstart 2017-09-23
                    maxend 2017-10-01
                    minend 2017-10-01
                    charge 6015000.0 onend
                }


                task task38 "سینی کابل راهرو بلوک 6" {
                    milestone
                    priority 500
                    complete 99
                    maxstart 2017-10-23
                    minstart 2017-10-23
                    maxend 2017-10-30
                    minend 2017-10-30
                    charge 24217380.0 onend
                }


                task task39 "لوله گذاری صوت، روشنایی و اعلام حریق راهرو بلوک 6" {
                    milestone
                    priority 500
                    complete 100
                    maxstart 2017-09-23
                    minstart 2017-09-23
                    maxend 2017-09-30
                    minend 2017-09-30
                    charge 77175700.0 onend
                }


                task task40 "کابل کشی ولتاژ ضعیف راهرو بلوک 6" {
                    milestone
                    priority 500
                    complete 100
                    maxstart 2017-11-22
                    minstart 2017-11-22
                    maxend 2017-12-03
                    minend 2017-12-03
                    charge 159048000.0 onend
                }

            }


            task task41 "نازک کاری" {
                priority 500
                complete 79
                maxstart 2018-01-21
                minstart 2018-01-21
                maxend 2018-04-24
                minend 2018-04-21
                start 2018-01-21
                end 2018-04-21
                charge 690566884.0 onend

                task task42 "زیرسازی سقف کاذب راهرو بلوک 6" {
                    milestone
                    priority 500
                    complete 100
                    maxstart 2018-01-21
                    minstart 2018-01-21
                    maxend 2018-02-14
                    minend 2018-02-14
                    charge 272336064.0 onend
                }


                task task43 "نصب پنل سقف کاذب راهرو بلوک 6" {
                    milestone
                    priority 500
                    complete 99
                    maxstart 2018-02-12
                    minstart 2018-02-12
                    maxend 2018-02-19
                    minend 2018-02-19
                    charge 254099492.0 onend
                }


                task task44 "کفسازی راهرو بلوک 6" {
                    milestone
                    priority 500
                    maxstart 2018-04-16
                    minstart 2018-04-13
                    maxend 2018-04-24
                    minend 2018-04-21
                    charge 164131328.0 onend
                }

            }


            task task45 "تاسیسات مکانیکی فاز 2" {
                priority 500
                maxstart 2018-04-24
                minstart 2018-04-21
                maxend 2018-05-11
                minend 2018-05-11
                start 2018-04-21
                end 2018-05-11
                charge 21275400.0 onend

                task task46 "نصب فن کوئل راهرو بلوک 6" {
                    milestone
                    priority 500
                    maxstart 2018-05-11
                    minstart 2018-05-11
                    maxend 2018-05-11
                    minend 2018-05-11
                    charge 16200000.0 onend
                }


                task task47 "نصب دریچه هوا راهرو بلوک 6" {
                    milestone
                    priority 500
                    maxstart 2018-04-24
                    minstart 2018-04-21
                    maxend 2018-04-28
                    minend 2018-04-25
                    charge 3900000.0 onend
                }


                task task48 "تست تاسیسات مکانیکی راهرو بلوک 6" {
                    milestone
                    priority 500
                    maxstart 2018-05-11
                    minstart 2018-05-11
                    maxend 2018-05-11
                    minend 2018-05-11
                    charge 1175400.0 onend
                }

            }


            task task49 "تاسیسات برقی فاز 2" {
                priority 500
                maxstart 2018-04-25
                minstart 2018-04-21
                maxend 2018-05-11
                minend 2018-05-11
                start 2018-04-21
                end 2018-05-11
                charge 68344566.0 onend

                task task50 "نصب کلید و پریز راهرو بلوک 6" {
                    milestone
                    priority 500
                    maxstart 2018-04-25
                    minstart 2018-04-21
                    maxend 2018-05-09
                    minend 2018-05-05
                    charge 294306.0 onend
                }


                task task51 "نصب تجهیزات صوت راهرو بلوک 6" {
                    milestone
                    priority 500
                    maxstart 2018-04-25
                    minstart 2018-04-21
                    maxend 2018-05-05
                    minend 2018-05-01
                    charge 33926750.0 onend
                }


                task task52 "نصب تجهیزات روشنایی راهرو بلوک 6" {
                    milestone
                    priority 500
                    maxstart 2018-04-25
                    minstart 2018-04-21
                    maxend 2018-05-11
                    minend 2018-05-11
                    charge 34123510.0 onend
                }

            }

        }


        task task53 "سرویس های بهداشتی" {
            priority 500
            complete 56
            maxstart 2017-07-18
            minstart 2017-07-18
            maxend 2018-05-11
            minend 2018-05-11
            start 2017-07-18
            end 2018-05-11
            charge 1927428923.0 onend

            task task54 "سفتکاری" {
                priority 500
                complete 100
                maxstart 2017-07-18
                minstart 2017-07-18
                maxend 2017-12-22
                minend 2017-12-22
                start 2017-07-18
                end 2017-12-22
                charge 578154074.0 onend

                task task55 "نصب وال پست سرویس بهداشتی بلوک 6" {
                    milestone
                    priority 500
                    complete 100
                    maxstart 2017-07-18
                    minstart 2017-07-18
                    maxend 2017-07-25
                    minend 2017-07-25
                    charge 211955744.0 onend
                }


                task task56 "دیوارچینی هبلکس سرویس بهداشتی بلوک 6" {
                    milestone
                    priority 500
                    complete 100
                    maxstart 2017-07-25
                    minstart 2017-07-25
                    maxend 2017-08-02
                    minend 2017-08-02
                    charge 272514528.0 onend
                }


                task task57 "شیب بندی سرویس بهداشتی بلوک 6" {
                    milestone
                    priority 500
                    complete 100
                    maxstart 2017-12-14
                    minstart 2017-12-14
                    maxend 2017-12-18
                    minend 2017-12-18
                    charge 59339280.0 onend
                }


                task task58 "عایق رطوبتی سرویس بهداشتی بلوک 6" {
                    milestone
                    priority 500
                    complete 100
                    maxstart 2017-12-18
                    minstart 2017-12-18
                    maxend 2017-12-22
                    minend 2017-12-22
                    charge 34344522.0 onend
                }

            }


            task task59 "تاسیسات مکانیکی فاز 1" {
                priority 500
                complete 100
                maxstart 2017-07-26
                minstart 2017-07-26
                maxend 2017-12-08
                minend 2017-12-08
                start 2017-07-26
                end 2017-12-08
                charge 535964786.0 onend

                task task60 "ساخت کانال سرویس بهداشتی بلوک 6" {
                    milestone
                    priority 500
                    complete 100
                    maxstart 2017-07-26
                    minstart 2017-07-26
                    maxend 2017-07-28
                    minend 2017-07-28
                    charge 43099056.0 onend
                }


                task task61 "ساپورت زنی و شاسی کشی سرویس بهداشتی بلوک 6" {
                    milestone
                    priority 500
                    complete 100
                    maxstart 2017-08-23
                    minstart 2017-08-23
                    maxend 2017-08-26
                    minend 2017-08-26
                    charge 68838770.0 onend
                }


                task task62 "نصب کانال سرویس بهداشتی بلوک 6" {
                    milestone
                    priority 500
                    complete 100
                    maxstart 2017-08-26
                    minstart 2017-08-26
                    maxend 2017-08-29
                    minend 2017-08-29
                    charge 43099056.0 onend
                }


                task task63 "عایق کانال سرویس بهداشتی بلوک 6" {
                    milestone
                    priority 500
                    complete 100
                    maxstart 2017-08-29
                    minstart 2017-08-29
                    maxend 2017-09-01
                    minend 2017-09-01
                    charge 30960000.0 onend
                }


                task task64 "لوله سرد و گرم مصرفی سرویس بهداشتی بلوک 6" {
                    milestone
                    priority 500
                    complete 100
                    maxstart 2017-11-25
                    minstart 2017-11-25
                    maxend 2017-11-28
                    minend 2017-11-28
                    charge 115109280.0 onend
                }


                task task65 "لوله اطفاء حریق سرویس بهداشتی بلوک 6" {
                    milestone
                    priority 500
                    complete 100
                    maxstart 2017-10-19
                    minstart 2017-10-19
                    maxend 2017-10-22
                    minend 2017-10-22
                    charge 12492480.0 onend
                }


                task task66 "عایق لوله سرویس بهداشتی بلوک 6" {
                    milestone
                    priority 500
                    complete 100
                    maxstart 2017-11-28
                    minstart 2017-11-28
                    maxend 2017-12-01
                    minend 2017-12-01
                    charge 178419384.0 onend
                }


                task task67 "لوله فاضلاب و ونت سرویس بهداشتی بلوک 6" {
                    milestone
                    priority 500
                    complete 100
                    maxstart 2017-12-03
                    minstart 2017-12-03
                    maxend 2017-12-06
                    minend 2017-12-06
                    charge 31603000.0 onend
                }


                task task68 "تست لوله ها سرویس بهداشتی بلوک 6" {
                    milestone
                    priority 500
                    complete 100
                    maxstart 2017-12-06
                    minstart 2017-12-06
                    maxend 2017-12-08
                    minend 2017-12-08
                    charge 12343760.0 onend
                }

            }


            task task69 "تاسیسات برقی فاز 1" {
                priority 500
                complete 100
                maxstart 2017-11-30
                minstart 2017-11-30
                maxend 2017-12-17
                minend 2017-12-17
                start 2017-11-30
                end 2017-12-17
                charge 144487286.0 onend

                task task70 "سوراخکاری و شیارزنی سرویس بهداشتی بلوک 6" {
                    milestone
                    priority 500
                    complete 100
                    maxstart 2017-11-30
                    minstart 2017-11-30
                    maxend 2017-12-04
                    minend 2017-12-04
                    charge 1900000.0 onend
                }


                task task71 "لوله گذاری صوت، روشنایی و اعلام حریق سرویس بهداشتی بلوک 6" {
                    milestone
                    priority 500
                    complete 100
                    maxstart 2017-12-04
                    minstart 2017-12-04
                    maxend 2017-12-08
                    minend 2017-12-08
                    charge 28885762.0 onend
                }


                task task72 "کابل کشی جریان ضعیف(تلفن) سرویس بهداشتی بلوک 6" {
                    milestone
                    priority 500
                    complete 100
                    maxstart 2017-12-08
                    minstart 2017-12-08
                    maxend 2017-12-12
                    minend 2017-12-12
                    charge 901524.0 onend
                }


                task task73 "کابل کشی ولتاژ ضعیف سرویس بهداشتی بلوک 6" {
                    milestone
                    priority 500
                    complete 100
                    maxstart 2017-12-08
                    minstart 2017-12-08
                    maxend 2017-12-17
                    minend 2017-12-17
                    charge 112800000.0 onend
                }

            }


            task task74 "نازک کاری" {
                priority 500
                complete 100
                maxstart 2017-10-11
                minstart 2017-10-11
                maxend 2018-02-28
                minend 2018-02-28
                start 2017-10-11
                end 2018-02-28
                charge 376661545.0 onend

                task task75 "نصب درب و پنجره سرویس بهداشتی بلوک 6" {
                    milestone
                    priority 500
                    complete 100
                    maxstart 2018-02-04
                    minstart 2018-02-04
                    maxend 2018-02-08
                    minend 2018-02-08
                    charge 74360000.0 onend
                }


                task task76 "پوشش دیوارها سرویس بهداشتی بلوک 6" {
                    milestone
                    priority 500
                    complete 100
                    maxstart 2017-10-11
                    minstart 2017-10-11
                    maxend 2017-10-20
                    minend 2017-10-20
                    charge 151833990.0 onend
                }


                task task77 "زیرسازی سقف کاذب سرویس بهداشتی بلوک 6" {
                    milestone
                    priority 500
                    complete 100
                    maxstart 2018-02-14
                    minstart 2018-02-14
                    maxend 2018-02-20
                    minend 2018-02-20
                    charge 59339280.0 onend
                }


                task task78 "نصب پنل سقف کاذب سرویس بهداشتی بلوک 6" {
                    milestone
                    priority 500
                    complete 100
                    maxstart 2018-02-15
                    minstart 2018-02-15
                    maxend 2018-02-19
                    minend 2018-02-19
                    charge 55365715.0 onend
                }


                task task79 "کفسازی سرویس بهداشتی بلوک 6" {
                    milestone
                    priority 500
                    complete 100
                    maxstart 2018-02-19
                    minstart 2018-02-19
                    maxend 2018-02-28
                    minend 2018-02-28
                    charge 35762560.0 onend
                }

            }


            task task80 "تاسیسات مکانیکی فاز 2" {
                priority 500
                maxstart 2018-04-25
                minstart 2018-04-25
                maxend 2018-05-11
                minend 2018-05-11
                start 2018-04-25
                end 2018-05-11
                charge 265304800.0 onend

                task task81 "نصب شیرآلات و تجهیزات بهداشتی سرویس بهداشتی بلوک 6" {
                    milestone
                    priority 500
                    maxstart 2018-04-25
                    minstart 2018-04-25
                    maxend 2018-05-09
                    minend 2018-05-09
                    charge 220000000.0 onend
                }


                task task82 "نصب دریچه هوا سرویس بهداشتی بلوک 6" {
                    milestone
                    priority 500
                    maxstart 2018-04-29
                    minstart 2018-04-25
                    maxend 2018-05-11
                    minend 2018-05-11
                    charge 31200000.0 onend
                }


                task task83 "تست تاسیسات مکانیکی سرویس بهداشتی بلوک 6" {
                    milestone
                    priority 500
                    maxstart 2018-05-11
                    minstart 2018-05-11
                    maxend 2018-05-11
                    minend 2018-05-11
                    charge 14104800.0 onend
                }

            }


            task task84 "تاسیسات برقی فاز 2" {
                priority 500
                maxstart 2018-05-09
                minstart 2018-05-01
                maxend 2018-05-11
                minend 2018-05-11
                start 2018-05-01
                end 2018-05-11
                charge 26856432.0 onend

                task task85 "نصب کلید و پریز سرویس بهداشتی بلوک 6" {
                    milestone
                    priority 500
                    maxstart 2018-05-11
                    minstart 2018-05-05
                    maxend 2018-05-11
                    minend 2018-05-11
                    charge 588612.0 onend
                }


                task task86 "نصب تجهیزات صوت سرویس بهداشتی بلوک 6" {
                    milestone
                    priority 500
                    maxstart 2018-05-09
                    minstart 2018-05-01
                    maxend 2018-05-11
                    minend 2018-05-07
                    charge 13570700.0 onend
                }


                task task87 "نصب تجهیزات روشنایی سرویس بهداشتی بلوک 6" {
                    milestone
                    priority 500
                    maxstart 2018-05-11
                    minstart 2018-05-11
                    maxend 2018-05-11
                    minend 2018-05-11
                    charge 12697120.0 onend
                }

            }

        }


        task task88 "رستوران" {
            priority 500
            complete 29
            maxstart 2017-07-18
            minstart 2017-07-18
            maxend 2018-05-11
            minend 2018-05-11
            start 2017-07-18
            end 2018-05-11
            charge 871804270.0 onend

            task task89 "سفتکاری" {
                priority 500
                complete 100
                maxstart 2017-07-18
                minstart 2017-07-18
                maxend 2017-11-09
                minend 2017-11-09
                start 2017-07-18
                end 2017-11-09
                charge 115555440.0 onend

                task task90 "نصب پیش فریم رستوران بلوک 6" {
                    milestone
                    priority 500
                    complete 100
                    maxstart 2017-11-07
                    minstart 2017-11-07
                    maxend 2017-11-09
                    minend 2017-11-09
                    charge 1784640.0 onend
                }


                task task91 "آهن کشی ودیوارچینی درزژوئن رستوران بلوک 6" {
                    milestone
                    priority 500
                    complete 100
                    maxstart 2017-07-18
                    minstart 2017-07-18
                    maxend 2017-07-20
                    minend 2017-07-20
                    charge 113770800.0 onend
                }

            }


            task task92 "تاسیسات مکانیکی فاز 1" {
                priority 500
                complete 100
                maxstart 2017-07-28
                minstart 2017-07-28
                maxend 2017-10-28
                minend 2017-10-28
                start 2017-07-28
                end 2017-10-28
                charge 250068300.0 onend

                task task93 "ساخت کانال رستوران بلوک 6" {
                    milestone
                    priority 500
                    complete 100
                    maxstart 2017-07-28
                    minstart 2017-07-28
                    maxend 2017-08-01
                    minend 2017-08-01
                    charge 40154400.0 onend
                }


                task task94 "ساپورت زنی و شاسی کشی رستوران بلوک 6" {
                    milestone
                    priority 500
                    complete 100
                    maxstart 2017-08-26
                    minstart 2017-08-26
                    maxend 2017-09-02
                    minend 2017-09-02
                    charge 64135500.0 onend
                }


                task task95 "نصب کانال رستوران بلوک 6" {
                    milestone
                    priority 500
                    complete 100
                    maxstart 2017-09-02
                    minstart 2017-09-02
                    maxend 2017-09-09
                    minend 2017-09-09
                    charge 40154400.0 onend
                }


                task task96 "عایق کانال رستوران بلوک 6" {
                    milestone
                    priority 500
                    complete 100
                    maxstart 2017-09-09
                    minstart 2017-09-09
                    maxend 2017-09-14
                    minend 2017-09-14
                    charge 38700000.0 onend
                }


                task task97 "لوله اطفاء حریق رستوران بلوک 6" {
                    milestone
                    priority 500
                    complete 100
                    maxstart 2017-10-23
                    minstart 2017-10-23
                    maxend 2017-10-26
                    minend 2017-10-26
                    charge 62462400.0 onend
                }


                task task98 "تست لوله ها رستوران بلوک 6" {
                    milestone
                    priority 500
                    complete 100
                    maxstart 2017-10-26
                    minstart 2017-10-26
                    maxend 2017-10-28
                    minend 2017-10-28
                    charge 4461600.0 onend
                }

            }


            task task99 "تاسیسات برقی فاز 1" {
                priority 500
                complete 100
                maxstart 2017-12-17
                minstart 2017-12-17
                maxend 2017-12-21
                minend 2017-12-21
                start 2017-12-17
                end 2017-12-21
                charge 4700000.0 onend

                task task100 "کابل کشی ولتاژ ضعیف رستوران بلوک 6" {
                    milestone
                    priority 500
                    complete 100
                    maxstart 2017-12-17
                    minstart 2017-12-17
                    maxend 2017-12-21
                    minend 2017-12-21
                    charge 4700000.0 onend
                }

            }


            task task101 "نازک کاری" {
                priority 500
                maxstart 2018-04-17
                minstart 2018-04-13
                maxend 2018-04-29
                minend 2018-04-25
                start 2018-04-13
                end 2018-04-25
                charge 321486592.0 onend

                task task102 "کفسازی رستوران بلوک 6" {
                    milestone
                    priority 500
                    maxstart 2018-04-17
                    minstart 2018-04-13
                    maxend 2018-04-29
                    minend 2018-04-25
                    charge 321486592.0 onend
                }

            }


            task task103 "تاسیسات مکانیکی فاز 2" {
                priority 500
                maxstart 2018-04-29
                minstart 2018-04-25
                maxend 2018-05-11
                minend 2018-05-11
                start 2018-04-25
                end 2018-05-11
                charge 179450000.0 onend

                task task104 "نصب دمپر و فایر دمپر رستوران بلوک 6" {
                    milestone
                    priority 500
                    maxstart 2018-05-02
                    minstart 2018-04-25
                    maxend 2018-05-07
                    minend 2018-04-30
                    charge 48000000.0 onend
                }


                task task105 "نصب جعبه و کپسول آتش نشانی رستوران بلوک 6" {
                    milestone
                    priority 500
                    maxstart 2018-04-29
                    minstart 2018-04-25
                    maxend 2018-05-06
                    minend 2018-05-02
                    charge 29960000.0 onend
                }


                task task106 "نصب دریچه هوا رستوران بلوک 6" {
                    milestone
                    priority 500
                    maxstart 2018-05-06
                    minstart 2018-05-02
                    maxend 2018-05-11
                    minend 2018-05-11
                    charge 81900000.0 onend
                }


                task task107 "تست تاسیسات مکانیکی  رستوران بلوک 6" {
                    milestone
                    priority 500
                    maxstart 2018-05-11
                    minstart 2018-05-11
                    maxend 2018-05-11
                    minend 2018-05-11
                    charge 19590000.0 onend
                }

            }


            task task108 "تاسیسات برقی فاز 2" {
                priority 500
                maxstart 2018-05-11
                minstart 2018-05-11
                maxend 2018-05-11
                minend 2018-05-11
                start 2018-05-11
                end 2018-05-11
                charge 543938.0 onend

                task task109 "نصب کلید و پریز رستوران بلوک 6" {
                    milestone
                    priority 500
                    maxstart 2018-05-11
                    minstart 2018-05-11
                    maxend 2018-05-11
                    minend 2018-05-11
                    charge 147153.0 onend
                }


                task task110 "نصب تجهیزات روشنایی رستوران بلوک 6" {
                    milestone
                    priority 500
                    maxstart 2018-05-11
                    minstart 2018-05-11
                    maxend 2018-05-11
                    minend 2018-05-11
                    charge 396785.0 onend
                }

            }

        }

    }


    task task111 "بلوک 10" {
        priority 500
        complete 100
        maxstart 2017-06-22
        minstart 2017-06-22
        maxend 2017-09-08
        minend 2017-09-08
        start 2017-06-22
        end 2017-09-08
        charge 2224731421.5 onend

        task task112 "شیب بندی بام" {
            priority 500
            complete 100
            maxstart 2017-06-22
            minstart 2017-06-22
            maxend 2017-09-08
            minend 2017-09-08
            start 2017-06-22
            end 2017-09-08
            charge 2224731421.5 onend

            task task113 "سفتکاری" {
                priority 500
                complete 100
                maxstart 2017-06-22
                minstart 2017-06-22
                maxend 2017-09-08
                minend 2017-09-08
                start 2017-06-22
                end 2017-09-08
                charge 2224731421.5 onend

                task task114 "دیوارچینی هبلکس شیب بندی بام بلوک 10" {
                    milestone
                    priority 500
                    complete 100
                    maxstart 2017-06-22
                    minstart 2017-06-22
                    maxend 2017-06-25
                    minend 2017-06-25
                    charge 7495488.0 onend
                }


                task task115 "عایق حرارتی شیب بندی بام بلوک 10" {
                    milestone
                    priority 500
                    complete 100
                    maxstart 2017-07-31
                    minstart 2017-07-31
                    maxend 2017-08-03
                    minend 2017-08-03
                    charge 349194560.0 onend
                }


                task task116 "کروم بندی و فوم بتن شیب بندی بام بلوک 10" {
                    milestone
                    priority 500
                    complete 100
                    maxstart 2017-08-03
                    minstart 2017-08-03
                    maxend 2017-08-06
                    minend 2017-08-06
                    charge 733308576.0 onend
                }


                task task117 "عایق رطوبتی و لایه محافظ شیب بندی بام بلوک 10" {
                    milestone
                    priority 500
                    complete 100
                    maxstart 2017-08-26
                    minstart 2017-08-26
                    maxend 2017-08-29
                    minend 2017-08-29
                    charge 289795934.0 onend
                }


                task task118 "موزاییک شیب بندی بام بلوک 10" {
                    milestone
                    priority 500
                    complete 100
                    maxstart 2017-08-29
                    minstart 2017-08-29
                    maxend 2017-09-03
                    minend 2017-09-03
                    charge 528300000.0 onend
                }


                task task119 "گاترشیب بندی بام بلوک 10" {
                    milestone
                    priority 500
                    complete 100
                    maxstart 2017-09-03
                    minstart 2017-09-03
                    maxend 2017-09-08
                    minend 2017-09-08
                    charge 8786463.5 onend
                }


                task task120 "آهن کشی ودیوارچینی درزژوئن شیب بندی بام بلوک 10" {
                    milestone
                    priority 500
                    complete 100
                    maxstart 2017-07-20
                    minstart 2017-07-20
                    maxend 2017-07-23
                    minend 2017-07-23
                    charge 307850400.0 onend
                }

            }

        }

    }


    task task121 "بلوک 2" {
        priority 500
        complete 67
        maxstart 2017-06-25
        minstart 2017-06-25
        maxend 2018-05-11
        minend 2018-05-11
        start 2017-06-25
        end 2018-05-11
        charge 9742993344.0 onend

        task task122 "شیب بندی بام" {
            priority 500
            complete 99
            maxstart 2017-06-25
            minstart 2017-06-25
            maxend 2017-11-19
            minend 2017-11-19
            start 2017-06-25
            end 2017-11-19
            charge 1620630716.0 onend

            task task123 "سفتکاری" {
                priority 500
                complete 99
                maxstart 2017-06-25
                minstart 2017-06-25
                maxend 2017-11-19
                minend 2017-11-19
                start 2017-06-25
                end 2017-11-19
                charge 1620630716.0 onend

                task task124 "نصب وال پست شیب بندی بام بلوک 2" {
                    milestone
                    priority 500
                    complete 99
                    maxstart 2017-06-25
                    minstart 2017-06-25
                    maxend 2017-07-10
                    minend 2017-07-10
                    charge 32480448.0 onend
                }


                task task125 "دیوارچینی هبلکس شیب بندی بام بلوک 2" {
                    milestone
                    priority 500
                    complete 100
                    maxstart 2017-07-10
                    minstart 2017-07-10
                    maxend 2017-07-20
                    minend 2017-07-20
                    charge 41760576.0 onend
                }


                task task126 "عایق حرارتی شیب بندی بام بلوک 2" {
                    milestone
                    priority 500
                    complete 100
                    maxstart 2017-08-08
                    minstart 2017-08-08
                    maxend 2017-08-23
                    minend 2017-08-23
                    charge 263234400.0 onend
                }


                task task127 "کروم بندی و فوم بتن شیب بندی بام بلوک 2" {
                    milestone
                    priority 500
                    complete 100
                    maxstart 2017-08-13
                    minstart 2017-08-13
                    maxend 2017-08-28
                    minend 2017-08-28
                    charge 552792240.0 onend
                }


                task task128 "عایق رطوبتی و لایه محافظ شیب بندی بام بلوک 2" {
                    milestone
                    priority 500
                    complete 100
                    maxstart 2017-09-25
                    minstart 2017-09-25
                    maxend 2017-10-10
                    minend 2017-10-10
                    charge 218413202.0 onend
                }


                task task129 "موزاییک شیب بندی بام بلوک 2" {
                    milestone
                    priority 500
                    complete 100
                    maxstart 2017-10-20
                    minstart 2017-10-20
                    maxend 2017-11-04
                    minend 2017-11-04
                    charge 398250000.0 onend
                }


                task task130 "گاترشیب بندی بام بلوک 2" {
                    milestone
                    priority 500
                    complete 100
                    maxstart 2017-11-04
                    minstart 2017-11-04
                    maxend 2017-11-19
                    minend 2017-11-19
                    charge 6621450.0 onend
                }


                task task131 "آهن کشی ودیوارچینی درزژوئن شیب بندی بام بلوک 2" {
                    milestone
                    priority 500
                    complete 100
                    maxstart 2017-07-23
                    minstart 2017-07-23
                    maxend 2017-07-26
                    minend 2017-07-26
                    charge 107078400.0 onend
                }

            }

        }


        task task132 "راهروها" {
            priority 500
            complete 60
            maxstart 2017-07-10
            minstart 2017-07-10
            maxend 2018-05-11
            minend 2018-05-11
            start 2017-07-10
            end 2018-05-11
            charge 1521180858.0 onend

            task task133 "سفتکاری" {
                priority 500
                complete 99
                maxstart 2017-07-10
                minstart 2017-07-10
                maxend 2017-07-27
                minend 2017-07-27
                start 2017-07-10
                end 2017-07-27
                charge 252318352.0 onend

                task task134 "نصب وال پست راهرو بلوک 2" {
                    milestone
                    priority 500
                    complete 100
                    maxstart 2017-07-10
                    minstart 2017-07-10
                    maxend 2017-07-17
                    minend 2017-07-17
                    charge 101605504.0 onend
                }


                task task135 "دیوارچینی هبلکس راهرو بلوک 2" {
                    milestone
                    priority 500
                    complete 99
                    maxstart 2017-07-17
                    minstart 2017-07-17
                    maxend 2017-07-24
                    minend 2017-07-24
                    charge 130635648.0 onend
                }


                task task136 "آهن کشی ودیوارچینی درزژوئن راهرو بلوک 2" {
                    milestone
                    priority 500
                    complete 100
                    maxstart 2017-07-26
                    minstart 2017-07-26
                    maxend 2017-07-27
                    minend 2017-07-27
                    charge 20077200.0 onend
                }

            }


            task task137 "تاسیسات مکانیکی فاز 1" {
                priority 500
                complete 100
                maxstart 2017-10-27
                minstart 2017-10-27
                maxend 2017-12-14
                minend 2017-12-14
                start 2017-10-27
                end 2017-12-14
                charge 691994160.0 onend

                task task138 "لوله سرد و گرم فن کوئل راهرو بلوک 2" {
                    milestone
                    priority 500
                    complete 100
                    maxstart 2017-11-22
                    minstart 2017-11-22
                    maxend 2017-11-30
                    minend 2017-11-30
                    charge 232003200.0 onend
                }


                task task139 "لوله سرد و گرم مصرفی راهرو بلوک 2" {
                    milestone
                    priority 500
                    complete 100
                    maxstart 2017-11-28
                    minstart 2017-11-28
                    maxend 2017-12-06
                    minend 2017-12-06
                    charge 22308000.0 onend
                }


                task task140 "لوله اطفاء حریق راهرو بلوک 2" {
                    milestone
                    priority 500
                    complete 100
                    maxstart 2017-10-27
                    minstart 2017-10-27
                    maxend 2017-11-03
                    minend 2017-11-03
                    charge 20820800.0 onend
                }


                task task141 "عایق لوله راهرو بلوک 2" {
                    milestone
                    priority 500
                    complete 100
                    maxstart 2017-12-06
                    minstart 2017-12-06
                    maxend 2017-12-14
                    minend 2017-12-14
                    charge 394182360.0 onend
                }


                task task142 "تست لوله ها راهرو بلوک 2" {
                    milestone
                    priority 500
                    complete 100
                    maxstart 2017-12-06
                    minstart 2017-12-06
                    maxend 2017-12-14
                    minend 2017-12-14
                    charge 22679800.0 onend
                }

            }


            task task143 "تاسیسات برقی فاز 1" {
                priority 500
                complete 99
                maxstart 2017-10-01
                minstart 2017-10-01
                maxend 2017-12-27
                minend 2017-12-27
                start 2017-10-01
                end 2017-12-27
                charge 111747450.0 onend

                task task144 "ساپورت زنی راهرو بلوک 2" {
                    milestone
                    priority 500
                    complete 99
                    maxstart 2017-10-01
                    minstart 2017-10-01
                    maxend 2017-10-14
                    minend 2017-10-14
                    charge 4010000.0 onend
                }


                task task145 "سینی کابل راهرو بلوک 2" {
                    milestone
                    priority 500
                    complete 100
                    maxstart 2017-10-30
                    minstart 2017-10-30
                    maxend 2017-11-04
                    minend 2017-11-04
                    charge 22015800.0 onend
                }


                task task146 "لوله گذاری صوت، روشنایی و اعلام حریق راهرو بلوک 2" {
                    milestone
                    priority 500
                    complete 100
                    maxstart 2017-12-08
                    minstart 2017-12-08
                    maxend 2017-12-14
                    minend 2017-12-14
                    charge 16537650.0 onend
                }


                task task147 "کابل کشی ولتاژ ضعیف راهرو بلوک 2" {
                    milestone
                    priority 500
                    complete 100
                    maxstart 2017-12-21
                    minstart 2017-12-21
                    maxend 2017-12-27
                    minend 2017-12-27
                    charge 69184000.0 onend
                }

            }


            task task148 "نازک کاری" {
                priority 500
                complete 93
                maxstart 2018-02-20
                minstart 2018-02-20
                maxend 2018-05-06
                minend 2018-03-23
                start 2018-02-20
                end 2018-03-23
                charge 327860883.0 onend

                task task149 "زیرسازی سقف کاذب راهرو بلوک 2" {
                    milestone
                    priority 500
                    complete 100
                    maxstart 2018-02-20
                    minstart 2018-02-20
                    maxend 2018-03-10
                    minend 2018-03-10
                    charge 129297168.0 onend
                }


                task task150 "نصب پنل سقف کاذب راهرو بلوک 2" {
                    milestone
                    priority 500
                    complete 100
                    maxstart 2018-03-10
                    minstart 2018-03-10
                    maxend 2018-03-18
                    minend 2018-03-18
                    charge 120638979.0 onend
                }


                task task151 "کفسازی راهرو بلوک 2" {
                    milestone
                    priority 500
                    complete 56
                    maxstart 2018-03-18
                    minstart 2018-03-18
                    maxend 2018-05-06
                    minend 2018-03-23
                    charge 77924736.0 onend
                }

            }


            task task152 "تاسیسات مکانیکی فاز 2" {
                priority 500
                maxstart 2018-05-06
                minstart 2018-05-02
                maxend 2018-05-11
                minend 2018-05-11
                start 2018-05-02
                end 2018-05-11
                charge 79299000.0 onend

                task task153 "نصب فن کوئلها و اسپلیتها راهرو بلوک 2" {
                    milestone
                    priority 500
                    maxstart 2018-05-11
                    minstart 2018-05-11
                    maxend 2018-05-11
                    minend 2018-05-11
                    charge 32400000.0 onend
                }


                task task154 "نصب جعبه و کپسول آتش نشانی راهرو بلوک 2" {
                    milestone
                    priority 500
                    maxstart 2018-05-06
                    minstart 2018-05-02
                    maxend 2018-05-11
                    minend 2018-05-07
                    charge 44940000.0 onend
                }


                task task155 "تست تاسیسات مکانیکی راهرو بلوک 2" {
                    milestone
                    priority 500
                    maxstart 2018-05-11
                    minstart 2018-05-11
                    maxend 2018-05-11
                    minend 2018-05-11
                    charge 1959000.0 onend
                }

            }


            task task156 "تاسیسات برقی فاز 2" {
                priority 500
                maxstart 2018-05-09
                minstart 2018-05-05
                maxend 2018-05-11
                minend 2018-05-11
                start 2018-05-05
                end 2018-05-11
                charge 57961013.0 onend

                task task157 "نصب کلید و پریز راهرو بلوک 2" {
                    milestone
                    priority 500
                    maxstart 2018-05-09
                    minstart 2018-05-05
                    maxend 2018-05-11
                    minend 2018-05-11
                    charge 147153.0 onend
                }


                task task158 "نصب تجهیزات صوت راهرو بلوک 2" {
                    milestone
                    priority 500
                    maxstart 2018-05-11
                    minstart 2018-05-07
                    maxend 2018-05-11
                    minend 2018-05-11
                    charge 47497450.0 onend
                }


                task task159 "نصب تجهیزات روشنایی راهرو بلوک 2" {
                    milestone
                    priority 500
                    maxstart 2018-05-11
                    minstart 2018-05-11
                    maxend 2018-05-11
                    minend 2018-05-11
                    charge 10316410.0 onend
                }

            }

        }


        task task160 "لابی  آسانسور" {
            priority 500
            complete 56
            maxstart 2017-12-04
            minstart 2017-12-04
            maxend 2018-05-11
            minend 2018-05-11
            start 2017-12-04
            end 2018-05-11
            charge 120156456.0 onend

            task task161 "تاسیسات برقی فاز 1" {
                priority 500
                complete 100
                maxstart 2017-12-04
                minstart 2017-12-04
                maxend 2018-01-02
                minend 2018-01-02
                start 2017-12-04
                end 2018-01-02
                charge 8095271.0 onend

                task task162 "سوراخکاری و شیارزنی لابی آسانسور بلوک 2" {
                    milestone
                    priority 500
                    complete 100
                    maxstart 2017-12-04
                    minstart 2017-12-04
                    maxend 2017-12-09
                    minend 2017-12-09
                    charge 798000.0 onend
                }


                task task163 "لوله گذاری صوت، روشنایی و اعلام حریق لابی آسانسور بلوک 2" {
                    milestone
                    priority 500
                    complete 100
                    maxstart 2017-12-14
                    minstart 2017-12-14
                    maxend 2017-12-19
                    minend 2017-12-19
                    charge 2315271.0 onend
                }


                task task164 "کابل کشی ولتاژ ضعیف لابی آسانسور بلوک 2" {
                    milestone
                    priority 500
                    complete 100
                    maxstart 2017-12-27
                    minstart 2017-12-27
                    maxend 2018-01-02
                    minend 2018-01-02
                    charge 4982000.0 onend
                }

            }


            task task165 "نازک کاری" {
                priority 500
                complete 64
                maxstart 2018-03-10
                minstart 2018-03-10
                maxend 2018-05-11
                minend 2018-03-27
                start 2018-03-10
                end 2018-03-27
                charge 110870830.0 onend

                task task166 "زیرسازی سقف کاذب لابی آسانسور بلوک 2" {
                    milestone
                    priority 500
                    complete 100
                    maxstart 2018-03-10
                    minstart 2018-03-10
                    maxend 2018-03-16
                    minend 2018-03-16
                    charge 43723680.0 onend
                }


                task task167 "نصب پنل سقف کاذب لابی آسانسور بلوک 2" {
                    milestone
                    priority 500
                    complete 69
                    maxstart 2018-03-16
                    minstart 2018-03-16
                    maxend 2018-05-11
                    minend 2018-03-23
                    charge 40795790.0 onend
                }


                task task168 "کفسازی لابی آسانسور بلوک 2" {
                    milestone
                    priority 500
                    maxstart 2018-05-11
                    minstart 2018-03-23
                    maxend 2018-05-11
                    minend 2018-03-27
                    charge 26351360.0 onend
                }

            }


            task task169 "تاسیسات برقی فاز 2" {
                priority 500
                maxstart 2018-05-11
                minstart 2018-05-11
                maxend 2018-05-11
                minend 2018-05-11
                start 2018-05-11
                end 2018-05-11
                charge 1190355.0 onend

                task task170 "نصب تجهیزات روشنایی لابی آسانسور بلوک 2" {
                    milestone
                    priority 500
                    maxstart 2018-05-11
                    minstart 2018-05-11
                    maxend 2018-05-11
                    minend 2018-05-11
                    charge 1190355.0 onend
                }

            }

        }


        task task171 "سرویس های بهداشتی" {
            priority 500
            complete 42
            maxstart 2017-07-17
            minstart 2017-07-17
            maxend 2018-05-11
            minend 2018-05-11
            start 2017-07-17
            end 2018-05-11
            charge 2480346740.0 onend

            task task172 "سفتکاری" {
                priority 500
                complete 100
                maxstart 2017-07-17
                minstart 2017-07-17
                maxend 2017-12-28
                minend 2017-12-28
                start 2017-07-17
                end 2017-12-28
                charge 529962278.0 onend

                task task173 "نصب وال پست سرویس بهداشتی بلوک 2" {
                    milestone
                    priority 500
                    complete 100
                    maxstart 2017-07-17
                    minstart 2017-07-17
                    maxend 2017-07-29
                    minend 2017-07-29
                    charge 180308128.0 onend
                }


                task task174 "دیوارچینی هبلکس سرویس بهداشتی بلوک 2" {
                    milestone
                    priority 500
                    complete 100
                    maxstart 2017-07-29
                    minstart 2017-07-29
                    maxend 2017-08-10
                    minend 2017-08-10
                    charge 231824736.0 onend
                }


                task task175 "شیب بندی سرویس بهداشتی بلوک 2" {
                    milestone
                    priority 500
                    complete 100
                    maxstart 2017-12-18
                    minstart 2017-12-18
                    maxend 2017-12-23
                    minend 2017-12-23
                    charge 74954880.0 onend
                }


                task task176 "عایق رطوبتی سرویس بهداشتی بلوک 2" {
                    milestone
                    priority 500
                    complete 100
                    maxstart 2017-12-23
                    minstart 2017-12-23
                    maxend 2017-12-28
                    minend 2017-12-28
                    charge 42874534.0 onend
                }

            }


            task task177 "تاسیسات مکانیکی فاز 1" {
                priority 500
                complete 99
                maxstart 2017-08-01
                minstart 2017-08-01
                maxend 2017-12-16
                minend 2017-12-16
                start 2017-08-01
                end 2017-12-16
                charge 566280482.0 onend

                task task178 "ساخت کانال سرویس بهداشتی  بلوک 2" {
                    milestone
                    priority 500
                    complete 100
                    maxstart 2017-08-01
                    minstart 2017-08-01
                    maxend 2017-08-08
                    minend 2017-08-08
                    charge 43634448.0 onend
                }


                task task179 "ساپورت زنی و شاسی کشی سرویس بهداشتی بلوک 2" {
                    milestone
                    priority 500
                    complete 100
                    maxstart 2017-09-02
                    minstart 2017-09-02
                    maxend 2017-09-06
                    minend 2017-09-06
                    charge 69693910.0 onend
                }


                task task180 "نصب کانال سرویس بهداشتی بلوک 2" {
                    milestone
                    priority 500
                    complete 100
                    maxstart 2017-09-06
                    minstart 2017-09-06
                    maxend 2017-09-10
                    minend 2017-09-10
                    charge 43634448.0 onend
                }


                task task181 "عایق کانال سرویس بهداشتی بلوک 2" {
                    milestone
                    priority 500
                    complete 100
                    maxstart 2017-09-10
                    minstart 2017-09-10
                    maxend 2017-09-13
                    minend 2017-09-13
                    charge 38700000.0 onend
                }


                task task182 "لوله سرد و گرم مصرفی سرویس بهداشتی بلوک 2" {
                    milestone
                    priority 500
                    complete 100
                    maxstart 2017-12-06
                    minstart 2017-12-06
                    maxend 2017-12-09
                    minend 2017-12-09
                    charge 76739520.0 onend
                }


                task task183 "لوله اطفاء حریق سرویس بهداشتی بلوک 2" {
                    milestone
                    priority 500
                    complete 100
                    maxstart 2017-11-04
                    minstart 2017-11-04
                    maxend 2017-11-06
                    minend 2017-11-06
                    charge 23943920.0 onend
                }


                task task184 "عایق لوله سرویس بهداشتی بلوک 2" {
                    milestone
                    priority 500
                    complete 100
                    maxstart 2017-12-09
                    minstart 2017-12-09
                    maxend 2017-12-13
                    minend 2017-12-13
                    charge 191558796.0 onend
                }


                task task185 "لوله فاضلاب و ونت سرویس بهداشتی بلوک 2" {
                    milestone
                    priority 500
                    complete 99
                    maxstart 2017-12-06
                    minstart 2017-12-06
                    maxend 2017-12-13
                    minend 2017-12-13
                    charge 66366300.0 onend
                }


                task task186 "تست لوله ها سرویس بهداشتی بلوک 2" {
                    milestone
                    priority 500
                    complete 100
                    maxstart 2017-12-13
                    minstart 2017-12-13
                    maxend 2017-12-16
                    minend 2017-12-16
                    charge 12009140.0 onend
                }

            }


            task task187 "تاسیسات برقی فاز 1" {
                priority 500
                complete 100
                maxstart 2017-12-09
                minstart 2017-12-09
                maxend 2018-01-08
                minend 2018-01-08
                start 2017-12-09
                end 2018-01-08
                charge 82308467.0 onend

                task task188 "سوراخکاری و شیارزنی سرویس بهداشتی بلوک 2" {
                    milestone
                    priority 500
                    complete 100
                    maxstart 2017-12-09
                    minstart 2017-12-09
                    maxend 2017-12-12
                    minend 2017-12-12
                    charge 950000.0 onend
                }


                task task189 "لوله گذاری صوت، روشنایی و اعلام حریق سرویس بهداشتی بلوک 2" {
                    milestone
                    priority 500
                    complete 100
                    maxstart 2017-12-19
                    minstart 2017-12-19
                    maxend 2017-12-23
                    minend 2017-12-23
                    charge 23924467.0 onend
                }


                task task190 "کابل کشی ولتاژ ضعیف سرویس بهداشتی بلوک 2" {
                    milestone
                    priority 500
                    complete 100
                    maxstart 2018-01-02
                    minstart 2018-01-02
                    maxend 2018-01-08
                    minend 2018-01-08
                    charge 57434000.0 onend
                }

            }


            task task191 "نازک کاری" {
                priority 500
                complete 34
                maxstart 2017-10-20
                minstart 2017-10-20
                maxend 2018-04-21
                minend 2018-04-20
                start 2017-10-20
                end 2018-04-20
                charge 656636304.0 onend

                task task192 "پوشش دیوارها سرویس بهداشتی بلوک 2" {
                    milestone
                    priority 500
                    complete 100
                    maxstart 2017-10-20
                    minstart 2017-10-20
                    maxend 2017-11-01
                    minend 2017-11-01
                    charge 187722024.0 onend
                }


                task task193 "زیرسازی سقف کاذب سرویس بهداشتی بلوک 2" {
                    milestone
                    priority 500
                    complete 44
                    maxstart 2018-03-16
                    minstart 2018-03-16
                    maxend 2018-03-28
                    minend 2018-03-27
                    charge 74954880.0 onend
                }


                task task194 "نصب پنل سقف کاذب سرویس بهداشتی بلوک 2" {
                    milestone
                    priority 500
                    maxstart 2018-03-28
                    minstart 2018-03-27
                    maxend 2018-04-07
                    minend 2018-04-06
                    charge 69935640.0 onend
                }


                task task195 "کفسازی سرویس بهداشتی بلوک 2" {
                    milestone
                    priority 500
                    maxstart 2018-04-07
                    minstart 2018-04-06
                    maxend 2018-04-14
                    minend 2018-04-13
                    charge 45173760.0 onend
                }


                task task196 "نصب درب و پنجره سرویس بهداشتی بلوک 2" {
                    milestone
                    priority 500
                    maxstart 2018-04-12
                    minstart 2018-04-11
                    maxend 2018-04-21
                    minend 2018-04-20
                    charge 278850000.0 onend
                }

            }


            task task197 "تاسیسات مکانیکی فاز 2" {
                priority 500
                maxstart 2018-04-21
                minstart 2018-04-21
                maxend 2018-05-11
                minend 2018-05-11
                start 2018-04-21
                end 2018-05-11
                charge 616426000.0 onend

                task task198 "نصب شیرآلات و تجهیزات بهداشتی سرویس بهداشتی بلوک 2" {
                    milestone
                    priority 500
                    maxstart 2018-04-21
                    minstart 2018-04-21
                    maxend 2018-05-11
                    minend 2018-05-11
                    charge 550000000.0 onend
                }


                task task199 "نصب دریچه هوا سرویس بهداشتی بلوک 2" {
                    milestone
                    priority 500
                    maxstart 2018-05-11
                    minstart 2018-05-11
                    maxend 2018-05-11
                    minend 2018-05-11
                    charge 39000000.0 onend
                }


                task task200 "تست تاسیسات مکانیکی سرویس بهداشتی بلوک 2" {
                    milestone
                    priority 500
                    maxstart 2018-05-11
                    minstart 2018-05-11
                    maxend 2018-05-11
                    minend 2018-05-11
                    charge 27426000.0 onend
                }

            }


            task task201 "تاسیسات برقی فاز 2" {
                priority 500
                maxstart 2018-05-11
                minstart 2018-05-11
                maxend 2018-05-11
                minend 2018-05-11
                start 2018-05-11
                end 2018-05-11
                charge 28733209.0 onend

                task task202 "نصب کلید و پریز سرویس بهداشتی بلوک 2" {
                    milestone
                    priority 500
                    maxstart 2018-05-11
                    minstart 2018-05-11
                    maxend 2018-05-11
                    minend 2018-05-11
                    charge 441459.0 onend
                }


                task task203 "نصب تجهیزات صوت سرویس بهداشتی بلوک 2" {
                    milestone
                    priority 500
                    maxstart 2018-05-11
                    minstart 2018-05-11
                    maxend 2018-05-11
                    minend 2018-05-11
                    charge 20356050.0 onend
                }


                task task204 "نصب تجهیزات روشنایی سرویس بهداشتی بلوک 2" {
                    milestone
                    priority 500
                    maxstart 2018-05-11
                    minstart 2018-05-11
                    maxend 2018-05-11
                    minend 2018-05-11
                    charge 7935700.0 onend
                }

            }

        }


        task task205 "آشپزخانه" {
            priority 500
            complete 82
            maxstart 2017-07-29
            minstart 2017-07-29
            maxend 2018-05-11
            minend 2018-05-11
            start 2017-07-29
            end 2018-05-11
            charge 1292143229.0 onend

            task task206 "سفتکاری" {
                priority 500
                complete 100
                maxstart 2017-07-29
                minstart 2017-07-29
                maxend 2017-11-12
                minend 2017-11-12
                start 2017-07-29
                end 2017-11-12
                charge 465315136.0 onend

                task task207 "نصب وال پست آشپزخانه بلوک 2" {
                    milestone
                    priority 500
                    complete 100
                    maxstart 2017-07-29
                    minstart 2017-07-29
                    maxend 2017-08-10
                    minend 2017-08-10
                    charge 202794592.0 onend
                }


                task task208 "دیوارچینی هبلکس آشپزخانه بلوک 2" {
                    milestone
                    priority 500
                    complete 100
                    maxstart 2017-08-10
                    minstart 2017-08-10
                    maxend 2017-08-22
                    minend 2017-08-22
                    charge 260735904.0 onend
                }


                task task209 "نصب پیش فریم آشپزخانه بلوک 2" {
                    milestone
                    priority 500
                    complete 100
                    maxstart 2017-11-09
                    minstart 2017-11-09
                    maxend 2017-11-12
                    minend 2017-11-12
                    charge 1784640.0 onend
                }

            }


            task task210 "تاسیسات مکانیکی فاز 1" {
                priority 500
                complete 100
                maxstart 2017-08-08
                minstart 2017-08-08
                maxend 2017-12-15
                minend 2017-12-15
                start 2017-08-08
                end 2017-12-15
                charge 307707500.0 onend

                task task211 "ساخت کانال آشپزخانه  بلوک 2" {
                    milestone
                    priority 500
                    complete 100
                    maxstart 2017-08-08
                    minstart 2017-08-08
                    maxend 2017-08-16
                    minend 2017-08-16
                    charge 40154400.0 onend
                }


                task task212 "ساپورت زنی و شاسی کشی آشپزخانه بلوک 2" {
                    milestone
                    priority 500
                    complete 100
                    maxstart 2017-09-06
                    minstart 2017-09-06
                    maxend 2017-09-16
                    minend 2017-09-16
                    charge 64135500.0 onend
                }


                task task213 "نصب کانال آشپزخانه بلوک 2" {
                    milestone
                    priority 500
                    complete 100
                    maxstart 2017-09-16
                    minstart 2017-09-16
                    maxend 2017-09-23
                    minend 2017-09-23
                    charge 40154400.0 onend
                }


                task task214 "عایق کانال آشپزخانه بلوک 2" {
                    milestone
                    priority 500
                    complete 100
                    maxstart 2017-09-23
                    minstart 2017-09-23
                    maxend 2017-09-27
                    minend 2017-09-27
                    charge 38700000.0 onend
                }


                task task215 "لوله سرد و گرم فن کوئل آشپزخانه بلوک 2" {
                    milestone
                    priority 500
                    complete 100
                    maxstart 2017-11-30
                    minstart 2017-11-30
                    maxend 2017-12-03
                    minend 2017-12-03
                    charge 17846400.0 onend
                }


                task task216 "لوله سرد و گرم مصرفی آشپزخانه بلوک 2" {
                    milestone
                    priority 500
                    complete 100
                    maxstart 2017-12-09
                    minstart 2017-12-09
                    maxend 2017-12-12
                    minend 2017-12-12
                    charge 17846400.0 onend
                }


                task task217 "لوله اطفاء حریق آشپزخانه بلوک 2" {
                    milestone
                    priority 500
                    complete 100
                    maxstart 2017-11-07
                    minstart 2017-11-07
                    maxend 2017-11-10
                    minend 2017-11-10
                    charge 41641600.0 onend
                }


                task task218 "عایق لوله آشپزخانه بلوک 2" {
                    milestone
                    priority 500
                    complete 100
                    maxstart 2017-12-12
                    minstart 2017-12-12
                    maxend 2017-12-15
                    minend 2017-12-15
                    charge 41280000.0 onend
                }


                task task219 "تست لوله ها آشپزخانه بلوک 2" {
                    milestone
                    priority 500
                    complete 100
                    maxstart 2017-12-12
                    minstart 2017-12-12
                    maxend 2017-12-15
                    minend 2017-12-15
                    charge 5948800.0 onend
                }

            }


            task task220 "نازک کاری" {
                priority 500
                complete 100
                maxstart 2018-01-21
                minstart 2018-01-21
                maxend 2018-02-24
                minend 2018-02-24
                start 2018-01-21
                end 2018-02-24
                charge 471938993.0 onend

                task task221 "زیرسازی سقف کاذب آشپزخانه بلوک 2" {
                    milestone
                    priority 500
                    complete 100
                    maxstart 2018-01-21
                    minstart 2018-01-21
                    maxend 2018-02-14
                    minend 2018-02-14
                    charge 163026864.0 onend
                }


                task task222 "نصب پنل سقف کاذب آشپزخانه بلوک 2" {
                    milestone
                    priority 500
                    complete 100
                    maxstart 2018-02-09
                    minstart 2018-02-09
                    maxend 2018-02-19
                    minend 2018-02-19
                    charge 152110017.0 onend
                }


                task task223 "نصب درب و پنجره آشپزخانه بلوک 2" {
                    milestone
                    priority 500
                    complete 100
                    maxstart 2018-02-08
                    minstart 2018-02-08
                    maxend 2018-02-12
                    minend 2018-02-12
                    charge 74360000.0 onend
                }


                task task224 "کفسازی آشپزخانه بلوک 2" {
                    milestone
                    priority 500
                    complete 100
                    maxstart 2018-02-19
                    minstart 2018-02-19
                    maxend 2018-02-24
                    minend 2018-02-24
                    charge 82442112.0 onend
                }

            }


            task task225 "تاسیسات مکانیکی فاز 2" {
                priority 500
                maxstart 2018-05-07
                minstart 2018-04-25
                maxend 2018-05-11
                minend 2018-05-11
                start 2018-04-25
                end 2018-05-11
                charge 47181600.0 onend

                task task226 "نصب دمپر و فایر دمپر آشپزخانه بلوک 2" {
                    milestone
                    priority 500
                    maxstart 2018-05-07
                    minstart 2018-04-30
                    maxend 2018-05-10
                    minend 2018-05-03
                    charge 8000000.0 onend
                }


                task task227 "نصب جعبه و کپسول آتش نشانی آشپزخانه بلوک 2" {
                    milestone
                    priority 500
                    maxstart 2018-05-11
                    minstart 2018-05-07
                    maxend 2018-05-11
                    minend 2018-05-11
                    charge 14980000.0 onend
                }


                task task228 "نصب دریچه هوا آشپزخانه بلوک 2" {
                    milestone
                    priority 500
                    maxstart 2018-05-11
                    minstart 2018-04-25
                    maxend 2018-05-11
                    minend 2018-05-05
                    charge 19500000.0 onend
                }


                task task229 "تست تاسیسات مکانیکی  آشپزخانه بلوک 2" {
                    milestone
                    priority 500
                    maxstart 2018-05-11
                    minstart 2018-05-11
                    maxend 2018-05-11
                    minend 2018-05-11
                    charge 4701600.0 onend
                }

            }

        }


        task task230 "رستوران" {
            priority 500
            complete 100
            maxstart 2017-08-16
            minstart 2017-08-16
            maxend 2018-02-28
            minend 2018-02-28
            start 2017-08-16
            end 2018-02-28
            charge 97424100.0 onend

            task task231 "سفتکاری" {
                priority 500
                complete 100
                maxstart 2017-11-12
                minstart 2017-11-12
                maxend 2017-11-14
                minend 2017-11-14
                start 2017-11-12
                end 2017-11-14
                charge 892320.0 onend

                task task232 "نصب پیش فریم رستوران بلوک 2" {
                    milestone
                    priority 500
                    complete 100
                    maxstart 2017-11-12
                    minstart 2017-11-12
                    maxend 2017-11-14
                    minend 2017-11-14
                    charge 892320.0 onend
                }

            }


            task task233 "تاسیسات مکانیکی فاز 1" {
                priority 500
                complete 100
                maxstart 2017-08-16
                minstart 2017-08-16
                maxend 2017-11-17
                minend 2017-11-17
                start 2017-08-16
                end 2017-11-17
                charge 83356100.0 onend

                task task234 "ساخت کانال رستوران  بلوک 2" {
                    milestone
                    priority 500
                    complete 100
                    maxstart 2017-08-16
                    minstart 2017-08-16
                    maxend 2017-08-18
                    minend 2017-08-18
                    charge 13384800.0 onend
                }


                task task235 "ساپورت زنی و شاسی کشی رستوران بلوک 2" {
                    milestone
                    priority 500
                    complete 100
                    maxstart 2017-09-16
                    minstart 2017-09-16
                    maxend 2017-09-19
                    minend 2017-09-19
                    charge 21378500.0 onend
                }


                task task236 "نصب کانال رستوران بلوک 2" {
                    milestone
                    priority 500
                    complete 100
                    maxstart 2017-09-19
                    minstart 2017-09-19
                    maxend 2017-09-22
                    minend 2017-09-22
                    charge 13384800.0 onend
                }


                task task237 "عایق کانال رستوران بلوک 2" {
                    milestone
                    priority 500
                    complete 100
                    maxstart 2017-09-22
                    minstart 2017-09-22
                    maxend 2017-09-25
                    minend 2017-09-25
                    charge 12900000.0 onend
                }


                task task238 "لوله اطفاء حریق رستوران بلوک 2" {
                    milestone
                    priority 500
                    complete 100
                    maxstart 2017-11-11
                    minstart 2017-11-11
                    maxend 2017-11-14
                    minend 2017-11-14
                    charge 20820800.0 onend
                }


                task task239 "تست لوله ها رستوران بلوک 2" {
                    milestone
                    priority 500
                    complete 100
                    maxstart 2017-11-14
                    minstart 2017-11-14
                    maxend 2017-11-17
                    minend 2017-11-17
                    charge 1487200.0 onend
                }

            }


            task task240 "نازک کاری" {
                priority 500
                complete 100
                maxstart 2018-02-24
                minstart 2018-02-24
                maxend 2018-02-28
                minend 2018-02-28
                start 2018-02-24
                end 2018-02-28
                charge 13175680.0 onend

                task task241 "کفسازی رستوران بلوک 2" {
                    milestone
                    priority 500
                    complete 100
                    maxstart 2018-02-24
                    minstart 2018-02-24
                    maxend 2018-02-28
                    minend 2018-02-28
                    charge 13175680.0 onend
                }

            }

        }


        task task242 "اتاق هوارسان" {
            priority 500
            complete 83
            maxstart 2017-08-10
            minstart 2017-08-10
            maxend 2018-05-11
            minend 2018-04-30
            start 2017-08-10
            end 2018-04-30
            charge 954212725.0 onend

            task task243 "سفتکاری" {
                priority 500
                complete 100
                maxstart 2017-08-10
                minstart 2017-08-10
                maxend 2018-01-03
                minend 2018-01-03
                start 2017-08-10
                end 2018-01-03
                charge 191237048.0 onend

                task task244 "نصب وال پست اتاق هوارسان بلوک 2" {
                    milestone
                    priority 500
                    complete 100
                    maxstart 2017-08-10
                    minstart 2017-08-10
                    maxend 2017-08-15
                    minend 2017-08-15
                    charge 64960896.0 onend
                }


                task task245 "دیوارچینی هبلکس اتاق هوارسان بلوک 2" {
                    milestone
                    priority 500
                    complete 100
                    maxstart 2017-08-15
                    minstart 2017-08-15
                    maxend 2017-08-20
                    minend 2017-08-20
                    charge 83521152.0 onend
                }


                task task246 "فونداسیون هواسارسان اتاق هوارسان بلوک 2" {
                    milestone
                    priority 500
                    complete 100
                    maxstart 2017-12-27
                    minstart 2017-12-27
                    maxend 2018-01-03
                    minend 2018-01-03
                    charge 42755000.0 onend
                }

            }


            task task247 "نازک کاری" {
                priority 500
                complete 77
                maxstart 2017-11-01
                minstart 2017-11-01
                maxend 2018-05-11
                minend 2018-04-30
                start 2017-11-01
                end 2018-04-30
                charge 762975677.0 onend

                task task248 "پوشش دیوارها اتاق هوارسان بلوک 2" {
                    milestone
                    priority 500
                    complete 100
                    maxstart 2017-11-01
                    minstart 2017-11-01
                    maxend 2017-11-10
                    minend 2017-11-10
                    charge 100762557.0 onend
                }


                task task249 "زیرسازی سقف کاذب اتاق هوارسان بلوک 2" {
                    milestone
                    priority 500
                    complete 100
                    maxstart 2018-02-14
                    minstart 2018-02-14
                    maxend 2018-02-24
                    minend 2018-02-24
                    charge 87447360.0 onend
                }


                task task250 "نصب پنل سقف کاذب اتاق هوارسان بلوک 2" {
                    milestone
                    priority 500
                    complete 100
                    maxstart 2018-02-24
                    minstart 2018-02-24
                    maxend 2018-03-06
                    minend 2018-03-06
                    charge 81591580.0 onend
                }


                task task251 "کفسازی اتاق هوارسان بلوک 2" {
                    milestone
                    priority 500
                    complete 100
                    maxstart 2018-03-06
                    minstart 2018-03-06
                    maxend 2018-03-10
                    minend 2018-03-10
                    charge 52702720.0 onend
                }


                task task252 "رنگ آمیزی اتاق هوارسان بلوک 2" {
                    milestone
                    priority 500
                    maxstart 2018-05-11
                    minstart 2018-04-20
                    maxend 2018-05-11
                    minend 2018-04-30
                    charge 440471460.0 onend
                }

            }

        }


        task task253 "دفتر تجاری" {
            priority 500
            complete 88
            maxstart 2017-07-06
            minstart 2017-07-06
            maxend 2018-05-11
            minend 2018-05-10
            start 2017-07-06
            end 2018-05-10
            charge 1032753256.0 onend

            task task254 "سفتکاری" {
                priority 500
                complete 100
                maxstart 2017-08-15
                minstart 2017-08-15
                maxend 2017-08-27
                minend 2017-08-27
                start 2017-08-15
                end 2017-08-27
                charge 178939904.0 onend

                task task255 "نصب وال پست دفتر تجاری بلوک 2" {
                    milestone
                    priority 500
                    complete 100
                    maxstart 2017-08-15
                    minstart 2017-08-15
                    maxend 2017-08-21
                    minend 2017-08-21
                    charge 78286208.0 onend
                }


                task task256 "دیوارچینی هبلکس دفتر تجاری بلوک 2" {
                    milestone
                    priority 500
                    complete 100
                    maxstart 2017-08-21
                    minstart 2017-08-21
                    maxend 2017-08-27
                    minend 2017-08-27
                    charge 100653696.0 onend
                }

            }


            task task257 "تاسیسات مکانیکی فاز 1" {
                priority 500
                complete 100
                maxstart 2017-08-18
                minstart 2017-08-18
                maxend 2017-11-22
                minend 2017-11-22
                start 2017-08-18
                end 2017-11-22
                charge 333042400.0 onend

                task task258 "ساخت کانال دفتر تجاری  بلوک 2" {
                    milestone
                    priority 500
                    complete 100
                    maxstart 2017-08-18
                    minstart 2017-08-18
                    maxend 2017-08-26
                    minend 2017-08-26
                    charge 26769600.0 onend
                }


                task task259 "ساپورت زنی و شاسی کشی دفتر تجاری بلوک 2" {
                    milestone
                    priority 500
                    complete 100
                    maxstart 2017-09-19
                    minstart 2017-09-19
                    maxend 2017-09-26
                    minend 2017-09-26
                    charge 42757000.0 onend
                }


                task task260 "نصب کانال دفتر تجاری بلوک 2" {
                    milestone
                    priority 500
                    complete 100
                    maxstart 2017-09-26
                    minstart 2017-09-26
                    maxend 2017-10-03
                    minend 2017-10-03
                    charge 26769600.0 onend
                }


                task task261 "عایق کانال دفتر تجاری بلوک 2" {
                    milestone
                    priority 500
                    complete 100
                    maxstart 2017-10-03
                    minstart 2017-10-03
                    maxend 2017-10-07
                    minend 2017-10-07
                    charge 10320000.0 onend
                }


                task task262 "لوله اطفاء حریق دفتر تجاری بلوک 2" {
                    milestone
                    priority 500
                    complete 100
                    maxstart 2017-11-15
                    minstart 2017-11-15
                    maxend 2017-11-20
                    minend 2017-11-20
                    charge 211331120.0 onend
                }


                task task263 "تست لوله ها دفتر تجاری بلوک 2" {
                    milestone
                    priority 500
                    complete 100
                    maxstart 2017-11-20
                    minstart 2017-11-20
                    maxend 2017-11-22
                    minend 2017-11-22
                    charge 15095080.0 onend
                }

            }


            task task264 "نازک کاری" {
                priority 500
                complete 100
                maxstart 2017-07-06
                minstart 2017-07-06
                maxend 2017-07-18
                minend 2017-07-18
                start 2017-07-06
                end 2017-07-18
                charge 394893952.0 onend

                task task265 "سرامیک دفتر تجاری بلوک 2" {
                    milestone
                    priority 500
                    complete 100
                    maxstart 2017-07-06
                    minstart 2017-07-06
                    maxend 2017-07-18
                    minend 2017-07-18
                    charge 394893952.0 onend
                }

            }


            task task266 "تاسیسات مکانیکی فاز 2" {
                priority 500
                maxstart 2018-05-10
                minstart 2018-05-03
                maxend 2018-05-11
                minend 2018-05-10
                start 2018-05-03
                end 2018-05-10
                charge 125877000.0 onend

                task task267 "نصب دمپر و فایر دمپر دفتر تجاری بلوک 2" {
                    milestone
                    priority 500
                    maxstart 2018-05-10
                    minstart 2018-05-03
                    maxend 2018-05-11
                    minend 2018-05-07
                    charge 120000000.0 onend
                }


                task task268 "تست تاسیسات مکانیکی دفتر تجاری بلوک 2" {
                    milestone
                    priority 500
                    maxstart 2018-05-11
                    minstart 2018-05-07
                    maxend 2018-05-11
                    minend 2018-05-10
                    charge 5877000.0 onend
                }

            }

        }


        task task269 "زباله دان" {
            priority 500
            complete 50
            maxstart 2017-08-21
            minstart 2017-08-21
            maxend 2018-05-11
            minend 2018-05-11
            start 2017-08-21
            end 2018-05-11
            charge 123165085.0 onend

            task task270 "سفتکاری" {
                priority 500
                complete 100
                maxstart 2017-08-21
                minstart 2017-08-21
                maxend 2017-11-16
                minend 2017-11-16
                start 2017-08-21
                end 2017-11-16
                charge 60856224.0 onend

                task task271 "نصب وال پست زباله دان بلوک 2" {
                    milestone
                    priority 500
                    complete 100
                    maxstart 2017-08-21
                    minstart 2017-08-21
                    maxend 2017-08-23
                    minend 2017-08-23
                    charge 26234208.0 onend
                }


                task task272 "دیوارچینی هبلکس زباله دان بلوک 2" {
                    milestone
                    priority 500
                    complete 100
                    maxstart 2017-08-23
                    minstart 2017-08-23
                    maxend 2017-08-25
                    minend 2017-08-25
                    charge 33729696.0 onend
                }


                task task273 "نصب پیش فریم زباله دان بلوک 2" {
                    milestone
                    priority 500
                    complete 100
                    maxstart 2017-11-14
                    minstart 2017-11-14
                    maxend 2017-11-16
                    minend 2017-11-16
                    charge 892320.0 onend
                }

            }


            task task274 "تاسیسات برقی فاز 1" {
                priority 500
                complete 100
                maxstart 2017-12-12
                minstart 2017-12-12
                maxend 2018-01-10
                minend 2018-01-10
                start 2017-12-12
                end 2018-01-10
                charge 13332540.0 onend

                task task275 "سوراخکاری و شیارزنی زباله دان بلوک 2" {
                    milestone
                    priority 500
                    complete 100
                    maxstart 2017-12-12
                    minstart 2017-12-12
                    maxend 2017-12-13
                    minend 2017-12-13
                    charge 950000.0 onend
                }


                task task276 "لوله گذاری صوت، روشنایی و اعلام حریق زباله دان بلوک 2" {
                    milestone
                    priority 500
                    complete 100
                    maxstart 2017-12-23
                    minstart 2017-12-23
                    maxend 2017-12-24
                    minend 2017-12-24
                    charge 3528032.0 onend
                }


                task task277 "کابل کشی جریان ضعیف(تلفن) زباله دان بلوک 2" {
                    milestone
                    priority 500
                    complete 100
                    maxstart 2017-12-24
                    minstart 2017-12-24
                    maxend 2017-12-26
                    minend 2017-12-26
                    charge 300508.0 onend
                }


                task task278 "کابل کشی ولتاژ ضعیف زباله دان بلوک 2" {
                    milestone
                    priority 500
                    complete 100
                    maxstart 2018-01-08
                    minstart 2018-01-08
                    maxend 2018-01-10
                    minend 2018-01-10
                    charge 8554000.0 onend
                }

            }


            task task279 "نازک کاری" {
                priority 500
                complete 100
                maxstart 2018-02-24
                minstart 2018-02-24
                maxend 2018-03-11
                minend 2018-03-11
                start 2018-02-24
                end 2018-03-11
                charge 46698090.0 onend

                task task280 "زیرسازی سقف کاذب زباله دان بلوک 2" {
                    milestone
                    priority 500
                    complete 100
                    maxstart 2018-02-24
                    minstart 2018-02-24
                    maxend 2018-02-27
                    minend 2018-02-27
                    charge 6246240.0 onend
                }


                task task281 "نصب پنل سقف کاذب زباله دان بلوک 2" {
                    milestone
                    priority 500
                    complete 100
                    maxstart 2018-02-27
                    minstart 2018-02-27
                    maxend 2018-03-03
                    minend 2018-03-03
                    charge 5827970.0 onend
                }


                task task282 "نصب درب و پنجره زباله دان بلوک 2" {
                    milestone
                    priority 500
                    complete 100
                    maxstart 2018-03-03
                    minstart 2018-03-03
                    maxend 2018-03-06
                    minend 2018-03-06
                    charge 18590000.0 onend
                }


                task task283 "کفسازی زباله دان بلوک 2" {
                    milestone
                    priority 500
                    complete 100
                    maxstart 2018-03-03
                    minstart 2018-03-03
                    maxend 2018-03-07
                    minend 2018-03-07
                    charge 3764480.0 onend
                }


                task task284 "رنگ آمیزی زباله دان بلوک 2" {
                    milestone
                    priority 500
                    complete 100
                    maxstart 2018-03-07
                    minstart 2018-03-07
                    maxend 2018-03-11
                    minend 2018-03-11
                    charge 12269400.0 onend
                }

            }


            task task285 "تاسیسات برقی فاز 2" {
                priority 500
                maxstart 2018-05-11
                minstart 2018-05-11
                maxend 2018-05-11
                minend 2018-05-11
                start 2018-05-11
                end 2018-05-11
                charge 2278231.0 onend

                task task286 "نصب کلید و پریز زباله دان بلوک 2" {
                    milestone
                    priority 500
                    maxstart 2018-05-11
                    minstart 2018-05-11
                    maxend 2018-05-11
                    minend 2018-05-11
                    charge 294306.0 onend
                }


                task task287 "نصب تجهیزات روشنایی زباله دان بلوک 2" {
                    milestone
                    priority 500
                    maxstart 2018-05-11
                    minstart 2018-05-11
                    maxend 2018-05-11
                    minend 2018-05-11
                    charge 1983925.0 onend
                }

            }

        }


        task task288 "اتاق برق" {
            priority 500
            complete 54
            maxstart 2017-08-23
            minstart 2017-08-23
            maxend 2018-05-11
            minend 2018-05-11
            start 2017-08-23
            end 2018-05-11
            charge 293263877.0 onend

            task task289 "سفتکاری" {
                priority 500
                complete 100
                maxstart 2017-08-23
                minstart 2017-08-23
                maxend 2017-11-18
                minend 2017-11-18
                start 2017-08-23
                end 2017-11-18
                charge 126947392.0 onend

                task task290 "نصب وال پست اتاق برق بلوک 2" {
                    milestone
                    priority 500
                    complete 100
                    maxstart 2017-08-23
                    minstart 2017-08-23
                    maxend 2017-08-28
                    minend 2017-08-28
                    charge 55383328.0 onend
                }


                task task291 "دیوارچینی هبلکس اتاق برق بلوک 2" {
                    milestone
                    priority 500
                    complete 100
                    maxstart 2017-08-28
                    minstart 2017-08-28
                    maxend 2017-09-01
                    minend 2017-09-01
                    charge 70671744.0 onend
                }


                task task292 "نصب پیش فریم اتاق برق بلوک 2" {
                    milestone
                    priority 500
                    complete 100
                    maxstart 2017-11-16
                    minstart 2017-11-16
                    maxend 2017-11-18
                    minend 2017-11-18
                    charge 892320.0 onend
                }

            }


            task task293 "تاسیسات برقی فاز 1" {
                priority 500
                complete 100
                maxstart 2017-10-14
                minstart 2017-10-14
                maxend 2018-01-14
                minend 2018-01-14
                start 2017-10-14
                end 2018-01-14
                charge 24478351.0 onend

                task task294 "سوراخکاری و شیارزنی اتاق برق بلوک 2" {
                    milestone
                    priority 500
                    complete 100
                    maxstart 2017-12-13
                    minstart 2017-12-13
                    maxend 2017-12-16
                    minend 2017-12-16
                    charge 380000.0 onend
                }


                task task295 "ساپورت زنی اتاق برق بلوک 2" {
                    milestone
                    priority 500
                    complete 100
                    maxstart 2017-10-14
                    minstart 2017-10-14
                    maxend 2017-10-17
                    minend 2017-10-17
                    charge 2807000.0 onend
                }


                task task296 "سینی کابل اتاق برق بلوک 2" {
                    milestone
                    priority 500
                    complete 100
                    maxstart 2017-11-04
                    minstart 2017-11-04
                    maxend 2017-11-08
                    minend 2017-11-08
                    charge 7705530.0 onend
                }


                task task297 "لوله گذاری صوت، روشنایی و اعلام حریق اتاق برق بلوک 2" {
                    milestone
                    priority 500
                    complete 100
                    maxstart 2017-12-24
                    minstart 2017-12-24
                    maxend 2017-12-27
                    minend 2017-12-27
                    charge 4299789.0 onend
                }


                task task298 "کابل کشی جریان ضعیف(تلفن) اتاق برق بلوک 2" {
                    milestone
                    priority 500
                    complete 100
                    maxstart 2017-12-27
                    minstart 2017-12-27
                    maxend 2017-12-31
                    minend 2017-12-31
                    charge 1202032.0 onend
                }


                task task299 "کابل کشی ولتاژ ضعیف اتاق برق بلوک 2" {
                    milestone
                    priority 500
                    complete 100
                    maxstart 2018-01-10
                    minstart 2018-01-10
                    maxend 2018-01-14
                    minend 2018-01-14
                    charge 8084000.0 onend
                }

            }


            task task300 "نازک کاری" {
                priority 500
                complete 100
                maxstart 2018-02-27
                minstart 2018-02-27
                maxend 2018-03-16
                minend 2018-03-16
                start 2018-02-27
                end 2018-03-16
                charge 137692426.0 onend

                task task301 "زیرسازی سقف کاذب اتاق برق بلوک 2" {
                    milestone
                    priority 500
                    complete 100
                    maxstart 2018-02-27
                    minstart 2018-02-27
                    maxend 2018-03-03
                    minend 2018-03-03
                    charge 8744736.0 onend
                }


                task task302 "نصب پنل سقف کاذب اتاق برق بلوک 2" {
                    milestone
                    priority 500
                    complete 100
                    maxstart 2018-03-03
                    minstart 2018-03-03
                    maxend 2018-03-08
                    minend 2018-03-08
                    charge 8159158.0 onend
                }


                task task303 "کفسازی اتاق برق بلوک 2" {
                    milestone
                    priority 500
                    complete 100
                    maxstart 2018-03-08
                    minstart 2018-03-08
                    maxend 2018-03-12
                    minend 2018-03-12
                    charge 5270272.0 onend
                }


                task task304 "نصب درب و پنجره اتاق برق بلوک 2" {
                    milestone
                    priority 500
                    complete 100
                    maxstart 2018-03-12
                    minstart 2018-03-12
                    maxend 2018-03-15
                    minend 2018-03-15
                    charge 18590000.0 onend
                }


                task task305 "رنگ آمیزی اتاق برق بلوک 2" {
                    milestone
                    priority 500
                    complete 100
                    maxstart 2018-03-12
                    minstart 2018-03-12
                    maxend 2018-03-16
                    minend 2018-03-16
                    charge 96928260.0 onend
                }

            }


            task task306 "تاسیسات برقی فاز 2" {
                priority 500
                maxstart 2018-04-30
                minstart 2018-04-21
                maxend 2018-05-11
                minend 2018-05-11
                start 2018-04-21
                end 2018-05-11
                charge 4145708.0 onend

                task task307 "نصب کلید و پریز اتاق برق بلوک 2" {
                    milestone
                    priority 500
                    maxstart 2018-05-09
                    minstart 2018-05-05
                    maxend 2018-05-11
                    minend 2018-05-11
                    charge 294306.0 onend
                }


                task task308 "نصب تجهیزات روشنایی اتاق برق بلوک 2" {
                    milestone
                    priority 500
                    maxstart 2018-05-11
                    minstart 2018-05-11
                    maxend 2018-05-11
                    minend 2018-05-11
                    charge 1587140.0 onend
                }


                task task309 "سرسیم بندی تابلو اتاق برق بلوک 2" {
                    milestone
                    priority 500
                    maxstart 2018-04-30
                    minstart 2018-04-21
                    maxend 2018-05-11
                    minend 2018-05-05
                    charge 2264262.0 onend
                }

            }

        }


        task task310 "لابی سرویس" {
            priority 500
            complete 89
            maxstart 2017-10-17
            minstart 2017-10-17
            maxend 2018-05-11
            minend 2018-05-11
            start 2017-10-17
            end 2018-05-11
            charge 207716302.0 onend

            task task311 "سفتکاری" {
                priority 500
                complete 100
                maxstart 2017-11-18
                minstart 2017-11-18
                maxend 2017-11-20
                minend 2017-11-20
                start 2017-11-18
                end 2017-11-20
                charge 892320.0 onend

                task task312 "نصب پیش فریم لابی سرویس بلوک 2" {
                    milestone
                    priority 500
                    complete 100
                    maxstart 2017-11-18
                    minstart 2017-11-18
                    maxend 2017-11-20
                    minend 2017-11-20
                    charge 892320.0 onend
                }

            }


            task task313 "تاسیسات برقی فاز 1" {
                priority 500
                complete 100
                maxstart 2017-10-17
                minstart 2017-10-17
                maxend 2018-01-26
                minend 2018-01-26
                start 2017-10-17
                end 2018-01-26
                charge 27434181.0 onend

                task task314 "سوراخکاری و شیارزنی لابی سرویس بلوک 2" {
                    milestone
                    priority 500
                    complete 100
                    maxstart 2017-12-16
                    minstart 2017-12-16
                    maxend 2017-12-19
                    minend 2017-12-19
                    charge 798000.0 onend
                }


                task task315 "ساپورت زنی لابی سرویس بلوک 2" {
                    milestone
                    priority 500
                    complete 100
                    maxstart 2017-10-17
                    minstart 2017-10-17
                    maxend 2017-10-20
                    minend 2017-10-20
                    charge 4411000.0 onend
                }


                task task316 "سینی کابل لابی سرویس بلوک 2" {
                    milestone
                    priority 500
                    complete 100
                    maxstart 2017-11-08
                    minstart 2017-11-08
                    maxend 2017-11-11
                    minend 2017-11-11
                    charge 6054345.0 onend
                }


                task task317 "لوله گذاری صوت، روشنایی و اعلام حریق لابی سرویس بلوک 2" {
                    milestone
                    priority 500
                    complete 100
                    maxstart 2017-12-27
                    minstart 2017-12-27
                    maxend 2017-12-31
                    minend 2017-12-31
                    charge 5512550.0 onend
                }


                task task318 "کابل کشی جریان ضعیف(تلفن) لابی سرویس بلوک 2" {
                    milestone
                    priority 500
                    complete 100
                    maxstart 2017-12-31
                    minstart 2017-12-31
                    maxend 2018-01-04
                    minend 2018-01-04
                    charge 1352286.0 onend
                }


                task task319 "کابل کشی ولتاژ ضعیف لابی سرویس بلوک 2" {
                    milestone
                    priority 500
                    complete 100
                    maxstart 2018-01-14
                    minstart 2018-01-14
                    maxend 2018-01-26
                    minend 2018-01-26
                    charge 9306000.0 onend
                }

            }


            task task320 "نازک کاری" {
                priority 500
                complete 100
                maxstart 2018-03-03
                minstart 2018-03-03
                maxend 2018-03-19
                minend 2018-03-19
                start 2018-03-03
                end 2018-03-19
                charge 172604451.0 onend

                task task321 "زیرسازی سقف کاذب لابی سرویس بلوک 2" {
                    milestone
                    priority 500
                    complete 100
                    maxstart 2018-03-03
                    minstart 2018-03-03
                    maxend 2018-03-06
                    minend 2018-03-06
                    charge 11867856.0 onend
                }


                task task322 "نصب پنل سقف کاذب لابی سرویس بلوک 2" {
                    milestone
                    priority 500
                    complete 100
                    maxstart 2018-03-06
                    minstart 2018-03-06
                    maxend 2018-03-10
                    minend 2018-03-10
                    charge 11073143.0 onend
                }


                task task323 "نصب درب و پنجره لابی سرویس بلوک 2" {
                    milestone
                    priority 500
                    complete 100
                    maxstart 2018-03-10
                    minstart 2018-03-10
                    maxend 2018-03-13
                    minend 2018-03-13
                    charge 18590000.0 onend
                }


                task task324 "کفسازی لابی سرویس بلوک 2" {
                    milestone
                    priority 500
                    complete 100
                    maxstart 2018-03-10
                    minstart 2018-03-10
                    maxend 2018-03-14
                    minend 2018-03-14
                    charge 7152512.0 onend
                }


                task task325 "رنگ آمیزی لابی سرویس بلوک 2" {
                    milestone
                    priority 500
                    complete 100
                    maxstart 2018-03-14
                    minstart 2018-03-14
                    maxend 2018-03-19
                    minend 2018-03-19
                    charge 123920940.0 onend
                }

            }


            task task326 "تاسیسات برقی فاز 2" {
                priority 500
                maxstart 2018-05-11
                minstart 2018-05-11
                maxend 2018-05-11
                minend 2018-05-11
                start 2018-05-11
                end 2018-05-11
                charge 6785350.0 onend

                task task327 "نصب تجهیزات صوت لابی سرویس بلوک 2" {
                    milestone
                    priority 500
                    maxstart 2018-05-11
                    minstart 2018-05-11
                    maxend 2018-05-11
                    minend 2018-05-11
                    charge 6785350.0 onend
                }

            }

        }

    }


    task task328 "بلوک 11" {
        priority 500
        complete 51
        maxstart 2017-07-06
        minstart 2017-07-06
        maxend 2018-05-11
        minend 2018-05-11
        start 2017-07-06
        end 2018-05-11
        charge 9210830750.5 onend

        task task329 "شیب بندی بام" {
            priority 500
            complete 100
            maxstart 2017-07-06
            minstart 2017-07-06
            maxend 2017-10-02
            minend 2017-10-02
            start 2017-07-06
            end 2017-10-02
            charge 3385638498.5 onend

            task task330 "سفتکاری" {
                priority 500
                complete 100
                maxstart 2017-07-06
                minstart 2017-07-06
                maxend 2017-10-02
                minend 2017-10-02
                start 2017-07-06
                end 2017-10-02
                charge 3385638498.5 onend

                task task331 "نصب وال پست شیب بندی بام بلوک 11" {
                    milestone
                    priority 500
                    complete 100
                    maxstart 2017-08-28
                    minstart 2017-08-28
                    maxend 2017-08-30
                    minend 2017-08-30
                    charge 28316288.0 onend
                }


                task task332 "دیوارچینی هبلکس شیب بندی بام بلوک 11" {
                    milestone
                    priority 500
                    complete 100
                    maxstart 2017-08-30
                    minstart 2017-08-30
                    maxend 2017-09-03
                    minend 2017-09-03
                    charge 20344896.0 onend
                }


                task task333 "آهن کشی ودیوارچینی درزژوئن شیب بندی بام بلوک 11" {
                    milestone
                    priority 500
                    complete 100
                    maxstart 2017-07-27
                    minstart 2017-07-27
                    maxend 2017-07-30
                    minend 2017-07-30
                    charge 214156800.0 onend
                }


                task task334 "عایق حرارتی شیب بندی بام بلوک 11" {
                    milestone
                    priority 500
                    complete 100
                    maxstart 2017-07-06
                    minstart 2017-07-06
                    maxend 2017-07-10
                    minend 2017-07-10
                    charge 571084800.0 onend
                }


                task task335 "کروم بندی و فوم بتن شیب بندی بام بلوک 11" {
                    milestone
                    priority 500
                    complete 100
                    maxstart 2017-07-10
                    minstart 2017-07-10
                    maxend 2017-07-14
                    minend 2017-07-14
                    charge 1199278080.0 onend
                }


                task task336 "عایق رطوبتی و لایه محافظ شیب بندی بام بلوک 11" {
                    milestone
                    priority 500
                    complete 100
                    maxstart 2017-08-22
                    minstart 2017-08-22
                    maxend 2017-08-26
                    minend 2017-08-26
                    charge 474089088.0 onend
                }


                task task337 "موزاییک شیب بندی بام بلوک 11" {
                    milestone
                    priority 500
                    complete 100
                    maxstart 2017-09-22
                    minstart 2017-09-22
                    maxend 2017-09-27
                    minend 2017-09-27
                    charge 864000000.0 onend
                }


                task task338 "گاترشیب بندی بام بلوک 11" {
                    milestone
                    priority 500
                    complete 100
                    maxstart 2017-09-27
                    minstart 2017-09-27
                    maxend 2017-10-02
                    minend 2017-10-02
                    charge 14368546.5 onend
                }

            }

        }


        task task339 "بام باغ" {
            priority 500
            complete 100
            maxstart 2017-10-06
            minstart 2017-10-06
            maxend 2017-10-16
            minend 2017-10-16
            start 2017-10-06
            end 2017-10-16
            charge 206487090.0 onend

            task task340 "سفتکاری" {
                priority 500
                complete 100
                maxstart 2017-10-06
                minstart 2017-10-06
                maxend 2017-10-16
                minend 2017-10-16
                start 2017-10-06
                end 2017-10-16
                charge 206487090.0 onend

                task task341 "کرسی چینی بام باغ بلوک 11" {
                    milestone
                    priority 500
                    complete 100
                    maxstart 2017-10-06
                    minstart 2017-10-06
                    maxend 2017-10-09
                    minend 2017-10-09
                    charge 92912820.0 onend
                }


                task task342 "عایق رطوبتی بام باغ بلوک 11" {
                    milestone
                    priority 500
                    complete 100
                    maxstart 2017-10-09
                    minstart 2017-10-09
                    maxend 2017-10-12
                    minend 2017-10-12
                    charge 66668778.0 onend
                }


                task task343 "کفسازی بام باغ بلوک 11" {
                    milestone
                    priority 500
                    complete 100
                    maxstart 2017-10-12
                    minstart 2017-10-12
                    maxend 2017-10-16
                    minend 2017-10-16
                    charge 46905492.0 onend
                }

            }

        }


        task task344 "راهرو" {
            priority 500
            complete 60
            maxstart 2017-07-30
            minstart 2017-07-30
            maxend 2018-05-11
            minend 2018-05-11
            start 2017-07-30
            end 2018-05-11
            charge 741358614.0 onend

            task task345 "سفتکاری" {
                priority 500
                complete 100
                maxstart 2017-07-30
                minstart 2017-07-30
                maxend 2017-09-04
                minend 2017-09-04
                start 2017-07-30
                end 2017-09-04
                charge 114306192.0 onend

                task task346 "نصب وال پست راهرو بلوک 11" {
                    milestone
                    priority 500
                    complete 100
                    maxstart 2017-08-30
                    minstart 2017-08-30
                    maxend 2017-09-01
                    minend 2017-09-01
                    charge 41225184.0 onend
                }


                task task347 "دیوارچینی هبلکس راهرو بلوک 11" {
                    milestone
                    priority 500
                    complete 100
                    maxstart 2017-09-01
                    minstart 2017-09-01
                    maxend 2017-09-04
                    minend 2017-09-04
                    charge 53003808.0 onend
                }


                task task348 "آهن کشی ودیوارچینی درزژوئن راهرو بلوک 11" {
                    milestone
                    priority 500
                    complete 100
                    maxstart 2017-07-30
                    minstart 2017-07-30
                    maxend 2017-08-03
                    minend 2017-08-03
                    charge 20077200.0 onend
                }

            }


            task task349 "تاسیسات مکانیکی فاز 1" {
                priority 500
                complete 100
                maxstart 2017-11-21
                minstart 2017-11-21
                maxend 2017-12-18
                minend 2017-12-18
                start 2017-11-21
                end 2017-12-18
                charge 377860340.0 onend

                task task350 "لوله سرد و گرم فن کوئل راهرو بلوک 11" {
                    milestone
                    priority 500
                    complete 100
                    maxstart 2017-12-03
                    minstart 2017-12-03
                    maxend 2017-12-06
                    minend 2017-12-06
                    charge 118232400.0 onend
                }


                task task351 "لوله سرد و گرم مصرفی راهرو بلوک 11" {
                    milestone
                    priority 500
                    complete 100
                    maxstart 2017-12-12
                    minstart 2017-12-12
                    maxend 2017-12-15
                    minend 2017-12-15
                    charge 17846400.0 onend
                }


                task task352 "لوله اطفاء حریق راهرو بلوک 11" {
                    milestone
                    priority 500
                    complete 100
                    maxstart 2017-11-21
                    minstart 2017-11-21
                    maxend 2017-11-24
                    minend 2017-11-24
                    charge 18218200.0 onend
                }


                task task353 "عایق لوله راهرو بلوک 11" {
                    milestone
                    priority 500
                    complete 100
                    maxstart 2017-12-15
                    minstart 2017-12-15
                    maxend 2017-12-18
                    minend 2017-12-18
                    charge 210922140.0 onend
                }


                task task354 "تست لوله ها راهرو بلوک 11" {
                    milestone
                    priority 500
                    complete 100
                    maxstart 2017-12-15
                    minstart 2017-12-15
                    maxend 2017-12-18
                    minend 2017-12-18
                    charge 12641200.0 onend
                }

            }


            task task355 "تاسیسات برقی فاز 1" {
                priority 500
                complete 99
                maxstart 2017-10-20
                minstart 2017-10-20
                maxend 2018-02-01
                minend 2018-02-01
                start 2017-10-20
                end 2018-02-01
                charge 99029540.0 onend

                task task356 "سوراخکاری و شیارزنی راهرو بلوک 11" {
                    milestone
                    priority 500
                    complete 100
                    maxstart 2017-12-19
                    minstart 2017-12-19
                    maxend 2017-12-25
                    minend 2017-12-25
                    charge 950000.0 onend
                }


                task task357 "ساپورت زنی راهرو بلوک 11" {
                    milestone
                    priority 500
                    complete 100
                    maxstart 2017-10-20
                    minstart 2017-10-20
                    maxend 2017-10-28
                    minend 2017-10-28
                    charge 8020000.0 onend
                }


                task task358 "سینی کابل راهرو بلوک 11" {
                    milestone
                    priority 500
                    complete 100
                    maxstart 2017-10-28
                    minstart 2017-10-28
                    maxend 2017-11-04
                    minend 2017-11-04
                    charge 31922910.0 onend
                }


                task task359 "لوله گذاری صوت، روشنایی و اعلام حریق راهرو بلوک 11" {
                    milestone
                    priority 500
                    complete 99
                    maxstart 2017-12-31
                    minstart 2017-12-31
                    maxend 2018-01-04
                    minend 2018-01-04
                    charge 14332630.0 onend
                }


                task task360 "کابل کشی ولتاژ ضعیف راهرو بلوک 11" {
                    milestone
                    priority 500
                    complete 100
                    maxstart 2018-01-26
                    minstart 2018-01-26
                    maxend 2018-02-01
                    minend 2018-02-01
                    charge 43804000.0 onend
                }

            }


            task task361 "نازک کاری" {
                priority 500
                complete 100
                maxstart 2018-03-06
                minstart 2018-03-06
                maxend 2018-03-15
                minend 2018-03-15
                start 2018-03-06
                end 2018-03-15
                charge 83945057.0 onend

                task task362 "زیرسازی سقف کاذب راهرو بلوک 11" {
                    milestone
                    priority 500
                    complete 100
                    maxstart 2018-03-06
                    minstart 2018-03-06
                    maxend 2018-03-08
                    minend 2018-03-08
                    charge 33105072.0 onend
                }


                task task363 "نصب پنل سقف کاذب راهرو بلوک 11" {
                    milestone
                    priority 500
                    complete 100
                    maxstart 2018-03-08
                    minstart 2018-03-08
                    maxend 2018-03-11
                    minend 2018-03-11
                    charge 30888241.0 onend
                }


                task task364 "کفسازی راهرو بلوک 11" {
                    milestone
                    priority 500
                    complete 100
                    maxstart 2018-03-11
                    minstart 2018-03-11
                    maxend 2018-03-15
                    minend 2018-03-15
                    charge 19951744.0 onend
                }

            }


            task task365 "تاسیسات مکانیکی فاز 2" {
                priority 500
                maxstart 2018-05-11
                minstart 2018-05-11
                maxend 2018-05-11
                minend 2018-05-11
                start 2018-05-11
                end 2018-05-11
                charge 30743600.0 onend

                task task366 "نصب جعبه و کپسول آتش نشانی راهرو بلوک 11" {
                    milestone
                    priority 500
                    maxstart 2018-05-11
                    minstart 2018-05-11
                    maxend 2018-05-11
                    minend 2018-05-11
                    charge 29960000.0 onend
                }


                task task367 "تست تاسیسات مکانیکی  راهرو بلوک راهرو بلوک 11" {
                    milestone
                    priority 500
                    maxstart 2018-05-11
                    minstart 2018-05-11
                    maxend 2018-05-11
                    minend 2018-05-11
                    charge 783600.0 onend
                }

            }


            task task368 "تاسیسات برقی فاز 2" {
                priority 500
                maxstart 2018-05-11
                minstart 2018-05-11
                maxend 2018-05-11
                minend 2018-05-11
                start 2018-05-11
                end 2018-05-11
                charge 35473885.0 onend

                task task369 "نصب تجهیزات صوت راهرو بلوک 11" {
                    milestone
                    priority 500
                    maxstart 2018-05-11
                    minstart 2018-05-11
                    maxend 2018-05-11
                    minend 2018-05-11
                    charge 27141400.0 onend
                }


                task task370 "نصب تجهیزات روشنایی راهرو بلوک 11" {
                    milestone
                    priority 500
                    maxstart 2018-05-11
                    minstart 2018-05-11
                    maxend 2018-05-11
                    minend 2018-05-11
                    charge 8332485.0 onend
                }

            }

        }


        task task371 "لابی آسانسور" {
            priority 500
            complete 67
            maxstart 2017-12-25
            minstart 2017-12-25
            maxend 2018-05-11
            minend 2018-05-11
            start 2017-12-25
            end 2018-05-11
            charge 115404849.0 onend

            task task372 "تاسیسات برقی فاز 1" {
                priority 500
                complete 100
                maxstart 2017-12-25
                minstart 2017-12-25
                maxend 2018-02-04
                minend 2018-02-04
                start 2017-12-25
                end 2018-02-04
                charge 8095271.0 onend

                task task373 "سوراخکاری و شیارزنی لابی آسانسور بلوک 11" {
                    milestone
                    priority 500
                    complete 100
                    maxstart 2017-12-25
                    minstart 2017-12-25
                    maxend 2017-12-28
                    minend 2017-12-28
                    charge 798000.0 onend
                }


                task task374 "لوله گذاری صوت، روشنایی و اعلام حریق لابی آسانسور بلوک 11" {
                    milestone
                    priority 500
                    complete 100
                    maxstart 2018-01-04
                    minstart 2018-01-04
                    maxend 2018-01-07
                    minend 2018-01-07
                    charge 2315271.0 onend
                }


                task task375 "کابل کشی ولتاژ ضعیف لابی آسانسور بلوک 11" {
                    milestone
                    priority 500
                    complete 100
                    maxstart 2018-01-31
                    minstart 2018-01-31
                    maxend 2018-02-04
                    minend 2018-02-04
                    charge 4982000.0 onend
                }

            }


            task task376 "نازک کاری" {
                priority 500
                complete 100
                maxstart 2018-03-08
                minstart 2018-03-08
                maxend 2018-03-18
                minend 2018-03-18
                start 2018-03-08
                end 2018-03-18
                charge 106119223.0 onend

                task task377 "زیرسازی سقف کاذب لابی آسانسور بلوک 11" {
                    milestone
                    priority 500
                    complete 100
                    maxstart 2018-03-08
                    minstart 2018-03-08
                    maxend 2018-03-11
                    minend 2018-03-11
                    charge 41849808.0 onend
                }


                task task378 "نصب پنل سقف کاذب لابی آسانسور بلوک 11" {
                    milestone
                    priority 500
                    complete 100
                    maxstart 2018-03-11
                    minstart 2018-03-11
                    maxend 2018-03-14
                    minend 2018-03-14
                    charge 39047399.0 onend
                }


                task task379 "کفسازی لابی آسانسور بلوک 11" {
                    milestone
                    priority 500
                    complete 100
                    maxstart 2018-03-14
                    minstart 2018-03-14
                    maxend 2018-03-18
                    minend 2018-03-18
                    charge 25222016.0 onend
                }

            }


            task task380 "تاسیسات برقی فاز 2" {
                priority 500
                maxstart 2018-05-11
                minstart 2018-05-11
                maxend 2018-05-11
                minend 2018-05-11
                start 2018-05-11
                end 2018-05-11
                charge 1190355.0 onend

                task task381 "نصب تجهیزات روشنایی لابی آسانسور بلوک 11" {
                    milestone
                    priority 500
                    maxstart 2018-05-11
                    minstart 2018-05-11
                    maxend 2018-05-11
                    minend 2018-05-11
                    charge 1190355.0 onend
                }

            }

        }


        task task382 "لابی سرویس" {
            priority 500
            complete 48
            maxstart 2017-10-28
            minstart 2017-10-28
            maxend 2018-05-11
            minend 2018-05-11
            start 2017-10-28
            end 2018-05-11
            charge 208827817.0 onend

            task task383 "سفتکاری" {
                priority 500
                complete 100
                maxstart 2017-11-20
                minstart 2017-11-20
                maxend 2017-11-22
                minend 2017-11-22
                start 2017-11-20
                end 2017-11-22
                charge 892320.0 onend

                task task384 "نصب پیش فریم لابی سرویس بلوک 11" {
                    milestone
                    priority 500
                    complete 100
                    maxstart 2017-11-20
                    minstart 2017-11-20
                    maxend 2017-11-22
                    minend 2017-11-22
                    charge 892320.0 onend
                }

            }


            task task385 "تاسیسات برقی فاز 1" {
                priority 500
                complete 99
                maxstart 2017-10-28
                minstart 2017-10-28
                maxend 2018-01-10
                minend 2018-01-10
                start 2017-10-28
                end 2018-01-10
                charge 25473895.0 onend

                task task386 "سوراخکاری و شیارزنی لابی سرویس بلوک 11" {
                    milestone
                    priority 500
                    complete 100
                    maxstart 2017-12-28
                    minstart 2017-12-28
                    maxend 2017-12-31
                    minend 2017-12-31
                    charge 190000.0 onend
                }


                task task387 "ساپورت زنی لابی سرویس بلوک 11" {
                    milestone
                    priority 500
                    complete 99
                    maxstart 2017-10-28
                    minstart 2017-10-28
                    maxend 2017-11-04
                    minend 2017-11-04
                    charge 4411000.0 onend
                }


                task task388 "سینی کابل لابی سرویس بلوک 11" {
                    milestone
                    priority 500
                    complete 100
                    maxstart 2017-11-04
                    minstart 2017-11-04
                    maxend 2017-11-08
                    minend 2017-11-08
                    charge 6054345.0 onend
                }


                task task389 "لوله گذاری صوت، روشنایی و اعلام حریق لابی سرویس بلوک 11" {
                    milestone
                    priority 500
                    complete 100
                    maxstart 2018-01-07
                    minstart 2018-01-07
                    maxend 2018-01-10
                    minend 2018-01-10
                    charge 5512550.0 onend
                }


                task task390 "کابل کشی ولتاژ ضعیف لابی سرویس بلوک 11" {
                    milestone
                    priority 500
                    complete 99
                    maxstart 2017-11-22
                    minstart 2017-11-22
                    maxend 2017-11-26
                    minend 2017-11-26
                    charge 9306000.0 onend
                }

            }


            task task391 "نازک کاری" {
                priority 500
                complete 75
                maxstart 2018-03-11
                minstart 2018-03-11
                maxend 2018-05-05
                minend 2018-03-25
                start 2018-03-11
                end 2018-03-25
                charge 172604451.0 onend

                task task392 "زیرسازی سقف کاذب لابی سرویس بلوک 11" {
                    milestone
                    priority 500
                    complete 100
                    maxstart 2018-03-11
                    minstart 2018-03-11
                    maxend 2018-03-13
                    minend 2018-03-13
                    charge 11867856.0 onend
                }


                task task393 "نصب پنل سقف کاذب لابی سرویس بلوک 11" {
                    milestone
                    priority 500
                    complete 100
                    maxstart 2018-03-13
                    minstart 2018-03-13
                    maxend 2018-03-16
                    minend 2018-03-16
                    charge 11073143.0 onend
                }


                task task394 "نصب درب و پنجره لابی سرویس بلوک 11" {
                    milestone
                    priority 500
                    complete 100
                    maxstart 2018-03-16
                    minstart 2018-03-16
                    maxend 2018-03-19
                    minend 2018-03-19
                    charge 18590000.0 onend
                }


                task task395 "کفسازی لابی سرویس بلوک 11" {
                    milestone
                    priority 500
                    complete 100
                    maxstart 2018-03-16
                    minstart 2018-03-16
                    maxend 2018-03-20
                    minend 2018-03-20
                    charge 7152512.0 onend
                }


                task task396 "رنگ آمیزی لابی سرویس بلوک 11" {
                    milestone
                    priority 500
                    complete 16
                    maxstart 2018-03-20
                    minstart 2018-03-20
                    maxend 2018-05-05
                    minend 2018-03-25
                    charge 123920940.0 onend
                }

            }


            task task397 "تاسیسات برقی فاز 2" {
                priority 500
                maxstart 2018-05-05
                minstart 2018-05-01
                maxend 2018-05-11
                minend 2018-05-11
                start 2018-05-01
                end 2018-05-11
                charge 9857151.0 onend

                task task398 "نصب کلید و پریز لابی سرویس بلوک 11" {
                    milestone
                    priority 500
                    maxstart 2018-05-11
                    minstart 2018-05-11
                    maxend 2018-05-11
                    minend 2018-05-11
                    charge 294306.0 onend
                }


                task task399 "نصب تجهیزات صوت لابی سرویس بلوک 11" {
                    milestone
                    priority 500
                    maxstart 2018-05-05
                    minstart 2018-05-01
                    maxend 2018-05-10
                    minend 2018-05-06
                    charge 6785350.0 onend
                }


                task task400 "نصب تجهیزات روشنایی لابی سرویس بلوک 11" {
                    milestone
                    priority 500
                    maxstart 2018-05-11
                    minstart 2018-05-11
                    maxend 2018-05-11
                    minend 2018-05-11
                    charge 2777495.0 onend
                }

            }

        }


        task task401 "سرویس های بهداشتی" {
            priority 500
            complete 41
            maxstart 2017-08-26
            minstart 2017-08-26
            maxend 2018-05-11
            minend 2018-05-11
            start 2017-08-26
            end 2018-05-11
            charge 1939326314.0 onend

            task task402 "سفتکاری" {
                priority 500
                complete 100
                maxstart 2017-12-23
                minstart 2017-12-23
                maxend 2017-12-29
                minend 2017-12-29
                start 2017-12-23
                end 2017-12-29
                charge 118502836.0 onend

                task task403 "شیب بندی سرویس بهداشتی بلوک 11" {
                    milestone
                    priority 500
                    complete 100
                    maxstart 2017-12-23
                    minstart 2017-12-23
                    maxend 2017-12-26
                    minend 2017-12-26
                    charge 74954880.0 onend
                }


                task task404 "عایق رطوبتی سرویس بهداشتی بلوک 11" {
                    milestone
                    priority 500
                    complete 100
                    maxstart 2017-12-26
                    minstart 2017-12-26
                    maxend 2017-12-29
                    minend 2017-12-29
                    charge 43547956.0 onend
                }

            }


            task task405 "تاسیسات مکانیکی فاز 1" {
                priority 500
                complete 99
                maxstart 2017-08-26
                minstart 2017-08-26
                maxend 2017-12-29
                minend 2017-12-29
                start 2017-08-26
                end 2017-12-29
                charge 453967574.0 onend

                task task406 "ساخت کانال سرویس بهداشتی   بلوک 11" {
                    milestone
                    priority 500
                    complete 100
                    maxstart 2017-08-26
                    minstart 2017-08-26
                    maxend 2017-09-01
                    minend 2017-09-01
                    charge 41492880.0 onend
                }


                task task407 "ساپورت زنی و شاسی کشی سرویس بهداشتی بلوک 11" {
                    milestone
                    priority 500
                    complete 99
                    maxstart 2017-09-26
                    minstart 2017-09-26
                    maxend 2017-10-03
                    minend 2017-10-03
                    charge 66273350.0 onend
                }


                task task408 "نصب کانال سرویس بهداشتی بلوک 11" {
                    milestone
                    priority 500
                    complete 100
                    maxstart 2017-10-03
                    minstart 2017-10-03
                    maxend 2017-10-06
                    minend 2017-10-06
                    charge 41492880.0 onend
                }


                task task409 "عایق کانال سرویس بهداشتی بلوک 11" {
                    milestone
                    priority 500
                    complete 100
                    maxstart 2017-10-06
                    minstart 2017-10-06
                    maxend 2017-10-09
                    minend 2017-10-09
                    charge 47988000.0 onend
                }


                task task410 "لوله سرد و گرم مصرفی سرویس بهداشتی بلوک 11" {
                    milestone
                    priority 500
                    complete 99
                    maxstart 2017-12-15
                    minstart 2017-12-15
                    maxend 2017-12-22
                    minend 2017-12-22
                    charge 66924000.0 onend
                }


                task task411 "لوله اطفاء حریق سرویس بهداشتی بلوک 11" {
                    milestone
                    priority 500
                    complete 100
                    maxstart 2017-11-25
                    minstart 2017-11-25
                    maxend 2017-11-28
                    minend 2017-11-28
                    charge 7807800.0 onend
                }


                task task412 "عایق لوله سرویس بهداشتی بلوک 11" {
                    milestone
                    priority 500
                    complete 100
                    maxstart 2017-12-22
                    minstart 2017-12-22
                    maxend 2017-12-29
                    minend 2017-12-29
                    charge 140384244.0 onend
                }


                task task413 "لوله فاضلاب و ونت سرویس بهداشتی بلوک 11" {
                    milestone
                    priority 500
                    complete 100
                    maxstart 2017-12-13
                    minstart 2017-12-13
                    maxend 2017-12-16
                    minend 2017-12-16
                    charge 33499180.0 onend
                }


                task task414 "تست لوله ها سرویس بهداشتی بلوک 11" {
                    milestone
                    priority 500
                    complete 100
                    maxstart 2017-12-22
                    minstart 2017-12-22
                    maxend 2017-12-25
                    minend 2017-12-25
                    charge 8105240.0 onend
                }

            }


            task task415 "تاسیسات برقی فاز 1" {
                priority 500
                complete 100
                maxstart 2017-12-31
                minstart 2017-12-31
                maxend 2018-01-20
                minend 2018-01-20
                start 2017-12-31
                end 2018-01-20
                charge 81748467.0 onend

                task task416 "سوراخکاری و شیارزنی سرویس بهداشتی بلوک 11" {
                    milestone
                    priority 500
                    complete 100
                    maxstart 2017-12-31
                    minstart 2017-12-31
                    maxend 2018-01-04
                    minend 2018-01-04
                    charge 1330000.0 onend
                }


                task task417 "لوله گذاری صوت، روشنایی و اعلام حریق سرویس بهداشتی بلوک 11" {
                    milestone
                    priority 500
                    complete 100
                    maxstart 2018-01-10
                    minstart 2018-01-10
                    maxend 2018-01-14
                    minend 2018-01-14
                    charge 23924467.0 onend
                }


                task task418 "کابل کشی ولتاژ ضعیف سرویس بهداشتی بلوک 11" {
                    milestone
                    priority 500
                    complete 100
                    maxstart 2018-01-14
                    minstart 2018-01-14
                    maxend 2018-01-20
                    minend 2018-01-20
                    charge 56494000.0 onend
                }

            }


            task task419 "نازک کاری" {
                priority 500
                complete 62
                maxstart 2017-12-10
                minstart 2017-12-10
                maxend 2018-05-11
                minend 2018-03-28
                start 2017-12-10
                end 2018-03-28
                charge 660777231.0 onend

                task task420 "پوشش دیوارها سرویس بهداشتی بلوک 11" {
                    milestone
                    priority 500
                    complete 99
                    maxstart 2017-12-10
                    minstart 2017-12-10
                    maxend 2017-12-21
                    minend 2017-12-21
                    charge 191862951.0 onend
                }


                task task421 "زیرسازی سقف کاذب سرویس بهداشتی بلوک 11" {
                    milestone
                    priority 500
                    complete 100
                    maxstart 2018-03-13
                    minstart 2018-03-13
                    maxend 2018-03-19
                    minend 2018-03-19
                    charge 74954880.0 onend
                }


                task task422 "نصب پنل سقف کاذب سرویس بهداشتی بلوک 11" {
                    milestone
                    priority 500
                    complete 45
                    maxstart 2018-03-19
                    minstart 2018-03-19
                    maxend 2018-03-25
                    minend 2018-03-23
                    charge 69935640.0 onend
                }


                task task423 "نصب درب و پنجره سرویس بهداشتی بلوک 11" {
                    milestone
                    priority 500
                    complete 31
                    maxstart 2018-03-18
                    minstart 2018-03-18
                    maxend 2018-05-11
                    minend 2018-03-27
                    charge 278850000.0 onend
                }


                task task424 "کفسازی سرویس بهداشتی بلوک 11" {
                    milestone
                    priority 500
                    maxstart 2018-05-05
                    minstart 2018-03-23
                    maxend 2018-05-10
                    minend 2018-03-28
                    charge 45173760.0 onend
                }

            }


            task task425 "تاسیسات مکانیکی فاز 2" {
                priority 500
                maxstart 2018-05-11
                minstart 2018-05-05
                maxend 2018-05-11
                minend 2018-05-11
                start 2018-05-05
                end 2018-05-11
                charge 588958800.0 onend

                task task426 "نصب شیرآلات و تجهیزات بهداشتی سرویس بهداشتی بلوک 11" {
                    milestone
                    priority 500
                    maxstart 2018-05-11
                    minstart 2018-05-11
                    maxend 2018-05-11
                    minend 2018-05-11
                    charge 528000000.0 onend
                }


                task task427 "نصب دریچه هوا سرویس بهداشتی بلوک 11" {
                    milestone
                    priority 500
                    maxstart 2018-05-11
                    minstart 2018-05-05
                    maxend 2018-05-11
                    minend 2018-05-11
                    charge 35100000.0 onend
                }


                task task428 "تست تاسیسات مکانیکی سرویس بهداشتی بلوک 11" {
                    milestone
                    priority 500
                    maxstart 2018-05-11
                    minstart 2018-05-11
                    maxend 2018-05-11
                    minend 2018-05-11
                    charge 25858800.0 onend
                }

            }


            task task429 "تاسیسات برقی فاز 2" {
                priority 500
                maxstart 2018-05-10
                minstart 2018-05-06
                maxend 2018-05-11
                minend 2018-05-11
                start 2018-05-06
                end 2018-05-11
                charge 35371406.0 onend

                task task430 "نصب کلید و پریز سرویس بهداشتی بلوک 11" {
                    milestone
                    priority 500
                    maxstart 2018-05-11
                    minstart 2018-05-11
                    maxend 2018-05-11
                    minend 2018-05-11
                    charge 294306.0 onend
                }


                task task431 "نصب تجهیزات صوت سرویس بهداشتی بلوک 11" {
                    milestone
                    priority 500
                    maxstart 2018-05-10
                    minstart 2018-05-06
                    maxend 2018-05-11
                    minend 2018-05-11
                    charge 27141400.0 onend
                }


                task task432 "نصب تجهیزات روشنایی سرویس بهداشتی بلوک 11" {
                    milestone
                    priority 500
                    maxstart 2018-05-11
                    minstart 2018-05-11
                    maxend 2018-05-11
                    minend 2018-05-11
                    charge 7935700.0 onend
                }

            }

        }


        task task433 "دفتر تجاری" {
            priority 500
            complete 100
            maxstart 2017-07-18
            minstart 2017-07-18
            maxend 2018-01-17
            minend 2018-01-17
            start 2017-07-18
            end 2018-01-17
            charge 254331938.0 onend

            task task434 "تاسیسات مکانیکی فاز 1" {
                priority 500
                complete 100
                maxstart 2017-09-01
                minstart 2017-09-01
                maxend 2017-12-05
                minend 2017-12-05
                start 2017-09-01
                end 2017-12-05
                charge 215607910.0 onend

                task task435 "ساخت کانال دفتر تجاری   بلوک 11" {
                    milestone
                    priority 500
                    complete 100
                    maxstart 2017-09-01
                    minstart 2017-09-01
                    maxend 2017-09-07
                    minend 2017-09-07
                    charge 14723280.0 onend
                }


                task task436 "ساپورت زنی و شاسی کشی دفتر تجاری بلوک 11" {
                    milestone
                    priority 500
                    complete 100
                    maxstart 2017-10-03
                    minstart 2017-10-03
                    maxend 2017-10-07
                    minend 2017-10-07
                    charge 23516350.0 onend
                }


                task task437 "نصب کانال دفتر تجاری بلوک 11" {
                    milestone
                    priority 500
                    complete 100
                    maxstart 2017-10-07
                    minstart 2017-10-07
                    maxend 2017-10-10
                    minend 2017-10-10
                    charge 14723280.0 onend
                }


                task task438 "عایق کانال دفتر تجاری بلوک 11" {
                    milestone
                    priority 500
                    complete 100
                    maxstart 2017-10-10
                    minstart 2017-10-10
                    maxend 2017-10-13
                    minend 2017-10-13
                    charge 23220000.0 onend
                }


                task task439 "لوله اطفاء حریق دفتر تجاری بلوک 11" {
                    milestone
                    priority 500
                    complete 100
                    maxstart 2017-11-29
                    minstart 2017-11-29
                    maxend 2017-12-02
                    minend 2017-12-02
                    charge 130130000.0 onend
                }


                task task440 "تست لوله ها دفتر تجاری بلوک 11" {
                    milestone
                    priority 500
                    complete 100
                    maxstart 2017-12-02
                    minstart 2017-12-02
                    maxend 2017-12-05
                    minend 2017-12-05
                    charge 9295000.0 onend
                }

            }


            task task441 "تاسیسات برقی فاز 1" {
                priority 500
                complete 100
                maxstart 2018-01-04
                minstart 2018-01-04
                maxend 2018-01-17
                minend 2018-01-17
                start 2018-01-04
                end 2018-01-17
                charge 2585020.0 onend

                task task442 "سوراخکاری و شیارزنی دفتر تجاری بلوک 11" {
                    milestone
                    priority 500
                    complete 100
                    maxstart 2018-01-04
                    minstart 2018-01-04
                    maxend 2018-01-07
                    minend 2018-01-07
                    charge 380000.0 onend
                }


                task task443 "لوله گذاری اعلام حریق دفتر تجاری بلوک 11" {
                    milestone
                    priority 500
                    complete 100
                    maxstart 2018-01-14
                    minstart 2018-01-14
                    maxend 2018-01-17
                    minend 2018-01-17
                    charge 2205020.0 onend
                }

            }


            task task444 "نازک کاری" {
                priority 500
                complete 100
                maxstart 2017-07-18
                minstart 2017-07-18
                maxend 2017-07-23
                minend 2017-07-23
                start 2017-07-18
                end 2017-07-23
                charge 36139008.0 onend

                task task445 "سرامیک دفتر تجاری بلوک 11" {
                    milestone
                    priority 500
                    complete 100
                    maxstart 2017-07-18
                    minstart 2017-07-18
                    maxend 2017-07-23
                    minend 2017-07-23
                    charge 36139008.0 onend
                }

            }

        }


        task task446 "رستوران" {
            priority 500
            complete 41
            maxstart 2017-09-01
            minstart 2017-09-01
            maxend 2018-05-11
            minend 2018-05-11
            start 2017-09-01
            end 2018-05-11
            charge 333878800.0 onend

            task task447 "سفتکاری" {
                priority 500
                complete 100
                maxstart 2017-09-01
                minstart 2017-09-01
                maxend 2017-09-06
                minend 2017-09-06
                start 2017-09-01
                end 2017-09-06
                charge 66626560.0 onend

                task task448 "نصب وال پست رستوران بلوک 11" {
                    milestone
                    priority 500
                    complete 100
                    maxstart 2017-09-01
                    minstart 2017-09-01
                    maxend 2017-09-03
                    minend 2017-09-03
                    charge 29149120.0 onend
                }


                task task449 "دیوارچینی هبلکس رستوران بلوک 11" {
                    milestone
                    priority 500
                    complete 100
                    maxstart 2017-09-03
                    minstart 2017-09-03
                    maxend 2017-09-06
                    minend 2017-09-06
                    charge 37477440.0 onend
                }

            }


            task task450 "تاسیسات مکانیکی فاز 1" {
                priority 500
                complete 100
                maxstart 2017-09-07
                minstart 2017-09-07
                maxend 2017-12-09
                minend 2017-12-09
                start 2017-09-07
                end 2017-12-09
                charge 164726496.0 onend

                task task451 "ساخت کانال رستوران   بلوک 11" {
                    milestone
                    priority 500
                    complete 100
                    maxstart 2017-09-07
                    minstart 2017-09-07
                    maxend 2017-09-13
                    minend 2017-09-13
                    charge 28911168.0 onend
                }


                task task452 "ساپورت زنی و شاسی کشی رستوران بلوک 11" {
                    milestone
                    priority 500
                    complete 100
                    maxstart 2017-10-07
                    minstart 2017-10-07
                    maxend 2017-10-10
                    minend 2017-10-10
                    charge 46177560.0 onend
                }


                task task453 "نصب کانال رستوران بلوک 11" {
                    milestone
                    priority 500
                    complete 100
                    maxstart 2017-10-10
                    minstart 2017-10-10
                    maxend 2017-10-13
                    minend 2017-10-13
                    charge 28911168.0 onend
                }


                task task454 "عایق کانال رستوران بلوک 11" {
                    milestone
                    priority 500
                    complete 100
                    maxstart 2017-10-13
                    minstart 2017-10-13
                    maxend 2017-10-16
                    minend 2017-10-16
                    charge 28380000.0 onend
                }


                task task455 "لوله اطفاء حریق رستوران بلوک 11" {
                    milestone
                    priority 500
                    complete 100
                    maxstart 2017-12-03
                    minstart 2017-12-03
                    maxend 2017-12-06
                    minend 2017-12-06
                    charge 30190160.0 onend
                }


                task task456 "تست لوله ها رستوران بلوک 11" {
                    milestone
                    priority 500
                    complete 100
                    maxstart 2017-12-06
                    minstart 2017-12-06
                    maxend 2017-12-09
                    minend 2017-12-09
                    charge 2156440.0 onend
                }

            }


            task task457 "نازک کاری" {
                priority 500
                maxstart 2018-05-10
                minstart 2018-03-28
                maxend 2018-05-11
                minend 2018-04-01
                start 2018-03-28
                end 2018-04-01
                charge 67007744.0 onend

                task task458 "کفسازی رستوران بلوک 11" {
                    milestone
                    priority 500
                    maxstart 2018-05-10
                    minstart 2018-03-28
                    maxend 2018-05-11
                    minend 2018-04-01
                    charge 67007744.0 onend
                }

            }


            task task459 "تاسیسات مکانیکی فاز 2" {
                priority 500
                maxstart 2018-05-11
                minstart 2018-05-04
                maxend 2018-05-11
                minend 2018-05-11
                start 2018-05-04
                end 2018-05-11
                charge 35518000.0 onend

                task task460 "نصب دمپر و فایر دمپر رستوران بلوک 11" {
                    milestone
                    priority 500
                    maxstart 2018-05-11
                    minstart 2018-05-07
                    maxend 2018-05-11
                    minend 2018-05-11
                    charge 16000000.0 onend
                }


                task task461 "نصب دریچه هوا رستوران بلوک 11" {
                    milestone
                    priority 500
                    maxstart 2018-05-11
                    minstart 2018-05-04
                    maxend 2018-05-11
                    minend 2018-05-11
                    charge 15600000.0 onend
                }


                task task462 "تست تاسیسات مکانیکی رستوران بلوک 11" {
                    milestone
                    priority 500
                    maxstart 2018-05-11
                    minstart 2018-05-11
                    maxend 2018-05-11
                    minend 2018-05-11
                    charge 3918000.0 onend
                }

            }

        }


        task task463 "آشپزخانه" {
            priority 500
            complete 48
            maxstart 2017-09-03
            minstart 2017-09-03
            maxend 2018-05-11
            minend 2018-05-11
            start 2017-09-03
            end 2018-05-11
            charge 1103742437.0 onend

            task task464 "سفتکاری" {
                priority 500
                complete 100
                maxstart 2017-09-03
                minstart 2017-09-03
                maxend 2017-11-24
                minend 2017-11-24
                start 2017-09-03
                end 2017-11-24
                charge 235929408.0 onend

                task task465 "نصب وال پست آشپزخانه بلوک 11" {
                    milestone
                    priority 500
                    complete 100
                    maxstart 2017-09-03
                    minstart 2017-09-03
                    maxend 2017-09-05
                    minend 2017-09-05
                    charge 102438336.0 onend
                }


                task task466 "دیوارچینی هبلکس آشپزخانه بلوک 11" {
                    milestone
                    priority 500
                    complete 100
                    maxstart 2017-09-05
                    minstart 2017-09-05
                    maxend 2017-09-08
                    minend 2017-09-08
                    charge 131706432.0 onend
                }


                task task467 "نصب پیش فریم آشپزخانه بلوک 11" {
                    milestone
                    priority 500
                    complete 100
                    maxstart 2017-11-22
                    minstart 2017-11-22
                    maxend 2017-11-24
                    minend 2017-11-24
                    charge 1784640.0 onend
                }

            }


            task task468 "تاسیسات مکانیکی فاز 1" {
                priority 500
                complete 99
                maxstart 2017-09-13
                minstart 2017-09-13
                maxend 2017-12-26
                minend 2017-12-26
                start 2017-09-13
                end 2017-12-26
                charge 283606120.0 onend

                task task469 "ساخت کانال آشپزخانه   بلوک 11" {
                    milestone
                    priority 500
                    complete 100
                    maxstart 2017-09-13
                    minstart 2017-09-13
                    maxend 2017-09-20
                    minend 2017-09-20
                    charge 26769600.0 onend
                }


                task task470 "ساپورت زنی و شاسی کشی آشپزخانه بلوک 11" {
                    milestone
                    priority 500
                    complete 100
                    maxstart 2017-10-10
                    minstart 2017-10-10
                    maxend 2017-10-14
                    minend 2017-10-14
                    charge 42757000.0 onend
                }


                task task471 "نصب کانال آشپزخانه بلوک 11" {
                    milestone
                    priority 500
                    complete 99
                    maxstart 2017-10-14
                    minstart 2017-10-14
                    maxend 2017-10-18
                    minend 2017-10-18
                    charge 26769600.0 onend
                }


                task task472 "عایق کانال آشپزخانه بلوک 11" {
                    milestone
                    priority 500
                    complete 100
                    maxstart 2017-10-18
                    minstart 2017-10-18
                    maxend 2017-10-21
                    minend 2017-10-21
                    charge 25800000.0 onend
                }


                task task473 "لوله سرد و گرم فن کوئل آشپزخانه بلوک 11" {
                    milestone
                    priority 500
                    complete 100
                    maxstart 2017-12-06
                    minstart 2017-12-06
                    maxend 2017-12-08
                    minend 2017-12-08
                    charge 17846400.0 onend
                }


                task task474 "لوله سرد و گرم مصرفی آشپزخانه بلوک 11" {
                    milestone
                    priority 500
                    complete 100
                    maxstart 2017-12-22
                    minstart 2017-12-22
                    maxend 2017-12-24
                    minend 2017-12-24
                    charge 22308000.0 onend
                }


                task task475 "لوله اطفاء حریق آشپزخانه بلوک 11" {
                    milestone
                    priority 500
                    complete 100
                    maxstart 2017-12-07
                    minstart 2017-12-07
                    maxend 2017-12-09
                    minend 2017-12-09
                    charge 52052000.0 onend
                }


                task task476 "عایق لوله آشپزخانه بلوک 11" {
                    milestone
                    priority 500
                    complete 100
                    maxstart 2017-12-24
                    minstart 2017-12-24
                    maxend 2017-12-26
                    minend 2017-12-26
                    charge 62239320.0 onend
                }


                task task477 "تست لوله ها آشپزخانه بلوک 11" {
                    milestone
                    priority 500
                    complete 100
                    maxstart 2017-12-24
                    minstart 2017-12-24
                    maxend 2017-12-26
                    minend 2017-12-26
                    charge 7064200.0 onend
                }

            }


            task task478 "تاسیسات برقی فاز 1" {
                priority 500
                complete 99
                maxstart 2018-01-07
                minstart 2018-01-07
                maxend 2018-01-24
                minend 2018-01-24
                start 2018-01-07
                end 2018-01-24
                charge 16779100.0 onend

                task task479 "سوراخکاری و شیارزنی آشپزخانه بلوک 11" {
                    milestone
                    priority 500
                    complete 100
                    maxstart 2018-01-07
                    minstart 2018-01-07
                    maxend 2018-01-10
                    minend 2018-01-10
                    charge 1900000.0 onend
                }


                task task480 "لوله گذاری صوت، روشنایی و اعلام حریق آشپزخانه بلوک 11" {
                    milestone
                    priority 500
                    complete 99
                    maxstart 2018-01-17
                    minstart 2018-01-17
                    maxend 2018-01-20
                    minend 2018-01-20
                    charge 11025100.0 onend
                }


                task task481 "کابل کشی ولتاژ ضعیف آشپزخانه بلوک 11" {
                    milestone
                    priority 500
                    complete 100
                    maxstart 2018-01-20
                    minstart 2018-01-20
                    maxend 2018-01-24
                    minend 2018-01-24
                    charge 3854000.0 onend
                }

            }


            task task482 "نازک کاری" {
                priority 500
                complete 26
                maxstart 2018-02-12
                minstart 2018-02-12
                maxend 2018-04-29
                minend 2018-04-09
                start 2018-02-12
                end 2018-04-09
                charge 524929809.0 onend

                task task483 "زیرسازی سقف کاذب آشپزخانه بلوک 11" {
                    milestone
                    priority 500
                    complete 18
                    maxstart 2018-03-19
                    minstart 2018-03-19
                    maxend 2018-03-29
                    minend 2018-03-29
                    charge 163026864.0 onend
                }


                task task484 "نصب پنل سقف کاذب آشپزخانه بلوک 11" {
                    milestone
                    priority 500
                    maxstart 2018-04-18
                    minstart 2018-03-29
                    maxend 2018-04-24
                    minend 2018-04-04
                    charge 152110017.0 onend
                }


                task task485 "نصب درب و پنجره آشپزخانه بلوک 11" {
                    milestone
                    priority 500
                    complete 100
                    maxstart 2018-02-12
                    minstart 2018-02-12
                    maxend 2018-02-17
                    minend 2018-02-17
                    charge 111540000.0 onend
                }


                task task486 "کفسازی آشپزخانه بلوک 11" {
                    milestone
                    priority 500
                    maxstart 2018-04-24
                    minstart 2018-04-04
                    maxend 2018-04-29
                    minend 2018-04-09
                    charge 98252928.0 onend
                }

            }


            task task487 "تاسیسات مکانیکی فاز 2" {
                priority 500
                maxstart 2018-04-29
                minstart 2018-04-25
                maxend 2018-05-11
                minend 2018-05-11
                start 2018-04-25
                end 2018-05-11
                charge 42498000.0 onend

                task task488 "نصب دمپر و فایر دمپر آشپزخانه بلوک 11" {
                    milestone
                    priority 500
                    maxstart 2018-05-11
                    minstart 2018-05-11
                    maxend 2018-05-11
                    minend 2018-05-11
                    charge 8000000.0 onend
                }


                task task489 "نصب جعبه و کپسول آتش نشانی آشپزخانه بلوک 11" {
                    milestone
                    priority 500
                    maxstart 2018-05-11
                    minstart 2018-05-10
                    maxend 2018-05-11
                    minend 2018-05-11
                    charge 14980000.0 onend
                }


                task task490 "نصب دریچه هوا آشپزخانه بلوک 11" {
                    milestone
                    priority 500
                    maxstart 2018-04-29
                    minstart 2018-04-25
                    maxend 2018-05-09
                    minend 2018-05-05
                    charge 15600000.0 onend
                }


                task task491 "تست تاسیسات مکانیکی آشپزخانه بلوک 11" {
                    milestone
                    priority 500
                    maxstart 2018-05-11
                    minstart 2018-05-11
                    maxend 2018-05-11
                    minend 2018-05-11
                    charge 3918000.0 onend
                }

            }

        }


        task task492 "اتاق هوارسان" {
            priority 500
            complete 28
            maxstart 2017-12-14
            minstart 2017-12-14
            maxend 2018-05-11
            minend 2018-04-30
            start 2017-12-14
            end 2018-04-30
            charge 629507596.0 onend

            task task493 "سفتکاری" {
                priority 500
                complete 100
                maxstart 2018-01-03
                minstart 2018-01-03
                maxend 2018-01-06
                minend 2018-01-06
                start 2018-01-03
                end 2018-01-06
                charge 4275500.0 onend

                task task494 "فونداسیون هوارسان اتاق هوارسان بلوک 11" {
                    milestone
                    priority 500
                    complete 100
                    maxstart 2018-01-03
                    minstart 2018-01-03
                    maxend 2018-01-06
                    minend 2018-01-06
                    charge 4275500.0 onend
                }

            }


            task task495 "نازک کاری" {
                priority 500
                complete 21
                maxstart 2017-12-14
                minstart 2017-12-14
                maxend 2018-05-11
                minend 2018-04-30
                start 2017-12-14
                end 2018-04-30
                charge 625232096.0 onend

                task task496 "پوشش دیوارها اتاق هوارسان بلوک 11" {
                    milestone
                    priority 500
                    complete 99
                    maxstart 2017-12-14
                    minstart 2017-12-14
                    maxend 2017-12-21
                    minend 2017-12-21
                    charge 89259982.0 onend
                }


                task task497 "زیرسازی سقف کاذب اتاق هوارسان بلوک 11" {
                    milestone
                    priority 500
                    maxstart 2018-03-27
                    minstart 2018-03-27
                    maxend 2018-04-04
                    minend 2018-04-04
                    charge 66210144.0 onend
                }


                task task498 "نصب پنل سقف کاذب اتاق هوارسان بلوک 11" {
                    milestone
                    priority 500
                    maxstart 2018-04-04
                    minstart 2018-04-04
                    maxend 2018-04-08
                    minend 2018-04-08
                    charge 61776482.0 onend
                }


                task task499 "کفسازی اتاق هوارسان بلوک 11" {
                    milestone
                    priority 500
                    maxstart 2018-04-08
                    minstart 2018-04-08
                    maxend 2018-04-13
                    minend 2018-04-13
                    charge 39903488.0 onend
                }


                task task500 "رنگ آمیزی اتاق هوارسان بلوک 11" {
                    milestone
                    priority 500
                    maxstart 2018-05-11
                    minstart 2018-04-21
                    maxend 2018-05-11
                    minend 2018-04-30
                    charge 368082000.0 onend
                }

            }

        }


        task task501 "زباله دان" {
            priority 500
            complete 56
            maxstart 2017-09-08
            minstart 2017-09-08
            maxend 2018-05-11
            minend 2018-05-11
            start 2017-09-08
            end 2018-05-11
            charge 138394013.0 onend

            task task502 "سفتکاری" {
                priority 500
                complete 100
                maxstart 2017-09-08
                minstart 2017-09-08
                maxend 2017-11-25
                minend 2017-11-25
                start 2017-09-08
                end 2017-11-25
                charge 76085152.0 onend

                task task503 "نصب وال پست زباله دان بلوک 11" {
                    milestone
                    priority 500
                    complete 100
                    maxstart 2017-09-08
                    minstart 2017-09-08
                    maxend 2017-09-10
                    minend 2017-09-10
                    charge 32896864.0 onend
                }


                task task504 "دیوارچینی هبلکس زباله دان بلوک 11" {
                    milestone
                    priority 500
                    complete 100
                    maxstart 2017-09-10
                    minstart 2017-09-10
                    maxend 2017-09-14
                    minend 2017-09-14
                    charge 42295968.0 onend
                }


                task task505 "نصب پیش فریم زباله دان بلوک 11" {
                    milestone
                    priority 500
                    complete 100
                    maxstart 2017-11-24
                    minstart 2017-11-24
                    maxend 2017-11-25
                    minend 2017-11-25
                    charge 892320.0 onend
                }

            }


            task task506 "تاسیسات برقی فاز 1" {
                priority 500
                complete 100
                maxstart 2018-01-10
                minstart 2018-01-10
                maxend 2018-01-26
                minend 2018-01-26
                start 2018-01-10
                end 2018-01-26
                charge 13332540.0 onend

                task task507 "سوراخکاری و شیارزنی زباله دان بلوک 11" {
                    milestone
                    priority 500
                    complete 100
                    maxstart 2018-01-10
                    minstart 2018-01-10
                    maxend 2018-01-11
                    minend 2018-01-11
                    charge 950000.0 onend
                }


                task task508 "لوله گذاری صوت، روشنایی و اعلام حریق زباله دان بلوک 11" {
                    milestone
                    priority 500
                    complete 100
                    maxstart 2018-01-20
                    minstart 2018-01-20
                    maxend 2018-01-21
                    minend 2018-01-21
                    charge 3528032.0 onend
                }


                task task509 "کابل کشی جریان ضعیف(تلفن) زباله دان بلوک 11" {
                    milestone
                    priority 500
                    complete 100
                    maxstart 2018-01-18
                    minstart 2018-01-18
                    maxend 2018-01-20
                    minend 2018-01-20
                    charge 300508.0 onend
                }


                task task510 "کابل کشی ولتاژ ضعیف زباله دان بلوک 11" {
                    milestone
                    priority 500
                    complete 100
                    maxstart 2018-01-24
                    minstart 2018-01-24
                    maxend 2018-01-26
                    minend 2018-01-26
                    charge 8554000.0 onend
                }

            }


            task task511 "نازک کاری" {
                priority 500
                complete 100
                maxstart 2018-01-26
                minstart 2018-01-26
                maxend 2018-02-09
                minend 2018-02-09
                start 2018-01-26
                end 2018-02-09
                charge 46698090.0 onend

                task task512 "زیرسازی سقف کاذب زباله دان بلوک 11" {
                    milestone
                    priority 500
                    complete 100
                    maxstart 2018-01-26
                    minstart 2018-01-26
                    maxend 2018-01-29
                    minend 2018-01-29
                    charge 6246240.0 onend
                }


                task task513 "نصب پنل سقف کاذب زباله دان بلوک 11" {
                    milestone
                    priority 500
                    complete 100
                    maxstart 2018-01-29
                    minstart 2018-01-29
                    maxend 2018-02-01
                    minend 2018-02-01
                    charge 5827970.0 onend
                }


                task task514 "نصب درب و پنجره زباله دان بلوک 11" {
                    milestone
                    priority 500
                    complete 100
                    maxstart 2018-02-01
                    minstart 2018-02-01
                    maxend 2018-02-04
                    minend 2018-02-04
                    charge 18590000.0 onend
                }


                task task515 "کفسازی زباله دان بلوک 11" {
                    milestone
                    priority 500
                    complete 100
                    maxstart 2018-02-01
                    minstart 2018-02-01
                    maxend 2018-02-05
                    minend 2018-02-05
                    charge 3764480.0 onend
                }


                task task516 "رنگ آمیزی زباله دان بلوک 11" {
                    milestone
                    priority 500
                    complete 100
                    maxstart 2018-02-05
                    minstart 2018-02-05
                    maxend 2018-02-09
                    minend 2018-02-09
                    charge 12269400.0 onend
                }

            }


            task task517 "تاسیسات برقی فاز 2" {
                priority 500
                maxstart 2018-05-09
                minstart 2018-05-05
                maxend 2018-05-11
                minend 2018-05-11
                start 2018-05-05
                end 2018-05-11
                charge 2278231.0 onend

                task task518 "نصب کلید و پریز زباله دان بلوک 11" {
                    milestone
                    priority 500
                    maxstart 2018-05-09
                    minstart 2018-05-05
                    maxend 2018-05-11
                    minend 2018-05-11
                    charge 294306.0 onend
                }


                task task519 "نصب تجهیزات روشنایی زباله دان بلوک 11" {
                    milestone
                    priority 500
                    maxstart 2018-05-11
                    minstart 2018-05-11
                    maxend 2018-05-11
                    minend 2018-05-11
                    charge 1983925.0 onend
                }

            }

        }


        task task520 "اتاق برق" {
            priority 500
            complete 28
            maxstart 2017-11-04
            minstart 2017-11-04
            maxend 2018-05-11
            minend 2018-05-11
            start 2017-11-04
            end 2018-05-11
            charge 153932784.0 onend

            task task521 "سفتکاری" {
                priority 500
                complete 100
                maxstart 2017-11-25
                minstart 2017-11-25
                maxend 2017-11-26
                minend 2017-11-26
                start 2017-11-25
                end 2017-11-26
                charge 892320.0 onend

                task task522 "نصب پیش فریم اتاق برق بلوک 11" {
                    milestone
                    priority 500
                    complete 100
                    maxstart 2017-11-25
                    minstart 2017-11-25
                    maxend 2017-11-26
                    minend 2017-11-26
                    charge 892320.0 onend
                }

            }


            task task523 "تاسیسات برقی فاز 1" {
                priority 500
                complete 100
                maxstart 2017-11-04
                minstart 2017-11-04
                maxend 2018-01-28
                minend 2018-01-28
                start 2017-11-04
                end 2018-01-28
                charge 25871936.0 onend

                task task524 "سوراخکاری و شیارزنی اتاق برق بلوک 11" {
                    milestone
                    priority 500
                    complete 100
                    maxstart 2018-01-11
                    minstart 2018-01-11
                    maxend 2018-01-12
                    minend 2018-01-12
                    charge 380000.0 onend
                }


                task task525 "ساپورت زنی اتاق برق بلوک 11" {
                    milestone
                    priority 500
                    complete 100
                    maxstart 2017-11-04
                    minstart 2017-11-04
                    maxend 2017-11-05
                    minend 2017-11-05
                    charge 2807000.0 onend
                }


                task task526 "سینی کابل اتاق برق بلوک 11" {
                    milestone
                    priority 500
                    complete 100
                    maxstart 2017-11-05
                    minstart 2017-11-05
                    maxend 2017-11-06
                    minend 2017-11-06
                    charge 11007900.0 onend
                }


                task task527 "لوله گذاری صوت، روشنایی و اعلام حریق اتاق برق بلوک 11" {
                    milestone
                    priority 500
                    complete 100
                    maxstart 2018-01-21
                    minstart 2018-01-21
                    maxend 2018-01-22
                    minend 2018-01-22
                    charge 3969036.0 onend
                }


                task task528 "کابل کشی ولتاژ ضعیف اتاق برق بلوک 11" {
                    milestone
                    priority 500
                    complete 100
                    maxstart 2018-01-26
                    minstart 2018-01-26
                    maxend 2018-01-28
                    minend 2018-01-28
                    charge 7708000.0 onend
                }

            }


            task task529 "نازک کاری" {
                priority 500
                complete 100
                maxstart 2018-01-29
                minstart 2018-01-29
                maxend 2018-02-07
                minend 2018-02-07
                start 2018-01-29
                end 2018-02-07
                charge 123125299.0 onend

                task task530 "زیرسازی سقف کاذب اتاق برق بلوک 11" {
                    milestone
                    priority 500
                    complete 100
                    maxstart 2018-01-29
                    minstart 2018-01-29
                    maxend 2018-02-01
                    minend 2018-02-01
                    charge 6870864.0 onend
                }


                task task531 "نصب پنل سقف کاذب اتاق برق بلوک 11" {
                    milestone
                    priority 500
                    complete 100
                    maxstart 2018-02-01
                    minstart 2018-02-01
                    maxend 2018-02-02
                    minend 2018-02-02
                    charge 6410767.0 onend
                }


                task task532 "نصب درب و پنجره اتاق برق بلوک 11" {
                    milestone
                    priority 500
                    complete 100
                    maxstart 2018-02-02
                    minstart 2018-02-02
                    maxend 2018-02-03
                    minend 2018-02-03
                    charge 18590000.0 onend
                }


                task task533 "کفسازی اتاق برق بلوک 11" {
                    milestone
                    priority 500
                    complete 100
                    maxstart 2018-02-02
                    minstart 2018-02-02
                    maxend 2018-02-04
                    minend 2018-02-04
                    charge 4140928.0 onend
                }


                task task534 "رنگ آمیزی اتاق برق بلوک 11" {
                    milestone
                    priority 500
                    complete 100
                    maxstart 2018-02-04
                    minstart 2018-02-04
                    maxend 2018-02-07
                    minend 2018-02-07
                    charge 87112740.0 onend
                }

            }


            task task535 "تاسیسات برقی فاز 2" {
                priority 500
                maxstart 2018-05-11
                minstart 2018-05-05
                maxend 2018-05-11
                minend 2018-05-11
                start 2018-05-05
                end 2018-05-11
                charge 4043229.0 onend

                task task536 "نصب کلید و پریز اتاق برق بلوک 11" {
                    milestone
                    priority 500
                    maxstart 2018-05-11
                    minstart 2018-05-11
                    maxend 2018-05-11
                    minend 2018-05-11
                    charge 588612.0 onend
                }


                task task537 "نصب تجهیزات روشنایی اتاق برق بلوک 11" {
                    milestone
                    priority 500
                    maxstart 2018-05-11
                    minstart 2018-05-11
                    maxend 2018-05-11
                    minend 2018-05-11
                    charge 1190355.0 onend
                }


                task task538 "سرسیم بندی تابلو اتاق برق بلوک 11" {
                    milestone
                    priority 500
                    maxstart 2018-05-11
                    minstart 2018-05-05
                    maxend 2018-05-11
                    minend 2018-05-11
                    charge 2264262.0 onend
                }

            }

        }

    }


    task task539 "بلوک 7" {
        priority 500
        complete 66
        maxstart 2017-07-27
        minstart 2017-07-27
        maxend 2018-05-11
        minend 2018-05-11
        start 2017-07-27
        end 2018-05-11
        charge 9508189715.0 onend

        task task540 "راهرو" {
            priority 500
            complete 56
            maxstart 2017-08-03
            minstart 2017-08-03
            maxend 2018-05-11
            minend 2018-05-11
            start 2017-08-03
            end 2018-05-11
            charge 3405637331.0 onend

            task task541 "سفتکاری" {
                priority 500
                complete 100
                maxstart 2017-08-03
                minstart 2017-08-03
                maxend 2017-08-19
                minend 2017-08-19
                start 2017-08-03
                end 2017-08-19
                charge 60231600.0 onend

                task task542 "آهن کشی ودیوارچینی درزژوئن راهرو بلوک 7" {
                    milestone
                    priority 500
                    complete 100
                    maxstart 2017-08-03
                    minstart 2017-08-03
                    maxend 2017-08-19
                    minend 2017-08-19
                    charge 60231600.0 onend
                }

            }


            task task543 "تاسیسات مکانیکی فاز 1" {
                priority 500
                complete 100
                maxstart 2017-12-10
                minstart 2017-12-10
                maxend 2018-01-28
                minend 2018-01-28
                start 2017-12-10
                end 2018-01-28
                charge 1453738000.0 onend

                task task544 "لوله سرد و گرم فن کوئل راهرو بلوک 7" {
                    milestone
                    priority 500
                    complete 100
                    maxstart 2017-12-20
                    minstart 2017-12-20
                    maxend 2017-12-23
                    minend 2017-12-23
                    charge 446160000.0 onend
                }


                task task545 "لوله اطفاء حریق راهرو بلوک 7" {
                    milestone
                    priority 500
                    complete 100
                    maxstart 2017-12-10
                    minstart 2017-12-10
                    maxend 2017-12-14
                    minend 2017-12-14
                    charge 260260000.0 onend
                }


                task task546 "عایق لوله راهرو بلوک 7" {
                    milestone
                    priority 500
                    complete 100
                    maxstart 2018-01-21
                    minstart 2018-01-21
                    maxend 2018-01-28
                    minend 2018-01-28
                    charge 691548000.0 onend
                }


                task task547 "تست لوله ها راهرو بلوک 7" {
                    milestone
                    priority 500
                    complete 100
                    maxstart 2017-12-23
                    minstart 2017-12-23
                    maxend 2017-12-26
                    minend 2017-12-26
                    charge 55770000.0 onend
                }

            }


            task task548 "تاسیسات برقی فاز 1" {
                priority 500
                complete 100
                maxstart 2017-11-05
                minstart 2017-11-05
                maxend 2018-02-03
                minend 2018-02-03
                start 2017-11-05
                end 2018-02-03
                charge 1005459170.0 onend

                task task549 "سوراخکاری و شیارزنی راهرو بلوک 7" {
                    milestone
                    priority 500
                    complete 100
                    maxstart 2018-01-06
                    minstart 2018-01-06
                    maxend 2018-01-18
                    minend 2018-01-18
                    charge 190000.0 onend
                }


                task task550 "ساپورت زنی راهرو بلوک 7" {
                    milestone
                    priority 500
                    complete 100
                    maxstart 2017-11-05
                    minstart 2017-11-05
                    maxend 2017-11-23
                    minend 2017-11-23
                    charge 24060000.0 onend
                }


                task task551 "سینی کابل راهرو بلوک 7" {
                    milestone
                    priority 500
                    complete 100
                    maxstart 2017-11-23
                    minstart 2017-11-23
                    maxend 2017-12-13
                    minend 2017-12-13
                    charge 264189600.0 onend
                }


                task task552 "لوله گذاری صوت، روشنایی و اعلام حریق راهرو بلوک 7" {
                    milestone
                    priority 500
                    complete 100
                    maxstart 2018-01-22
                    minstart 2018-01-22
                    maxend 2018-02-03
                    minend 2018-02-03
                    charge 228219570.0 onend
                }


                task task553 "کابل کشی ولتاژ ضعیف راهرو بلوک 7" {
                    milestone
                    priority 500
                    complete 100
                    maxstart 2017-12-10
                    minstart 2017-12-10
                    maxend 2017-12-21
                    minend 2017-12-21
                    charge 488800000.0 onend
                }

            }


            task task554 "نازک کاری" {
                priority 500
                complete 71
                maxstart 2018-02-01
                minstart 2018-02-01
                maxend 2018-04-25
                minend 2018-04-25
                start 2018-02-01
                end 2018-04-25
                charge 479081632.0 onend

                task task555 "زیرسازی سقف کاذب راهرو بلوک 7" {
                    milestone
                    priority 500
                    complete 100
                    maxstart 2018-02-01
                    minstart 2018-02-01
                    maxend 2018-03-01
                    minend 2018-03-01
                    charge 19987968.0 onend
                }


                task task556 "نصب پنل سقف کاذب راهرو بلوک 7" {
                    milestone
                    priority 500
                    complete 99
                    maxstart 2018-03-01
                    minstart 2018-03-01
                    maxend 2018-03-12
                    minend 2018-03-12
                    charge 18649504.0 onend
                }


                task task557 "کفسازی راهرو بلوک 7" {
                    milestone
                    priority 500
                    maxstart 2018-04-09
                    minstart 2018-04-09
                    maxend 2018-04-25
                    minend 2018-04-25
                    charge 440444160.0 onend
                }

            }


            task task558 "تاسیسات مکانیکی فاز 2" {
                priority 500
                maxstart 2018-05-11
                minstart 2018-05-11
                maxend 2018-05-11
                minend 2018-05-11
                start 2018-05-11
                end 2018-05-11
                charge 122974400.0 onend

                task task559 "نصب جعبه و کپسول آتش نشانی راهرو بلوک 7" {
                    milestone
                    priority 500
                    maxstart 2018-05-11
                    minstart 2018-05-11
                    maxend 2018-05-11
                    minend 2018-05-11
                    charge 119840000.0 onend
                }


                task task560 "تست تاسیسات مکانیکی راهرو بلوک 7" {
                    milestone
                    priority 500
                    maxstart 2018-05-11
                    minstart 2018-05-11
                    maxend 2018-05-11
                    minend 2018-05-11
                    charge 3134400.0 onend
                }

            }


            task task561 "تاسیسات برقی فاز 2" {
                priority 500
                maxstart 2018-05-11
                minstart 2018-05-11
                maxend 2018-05-11
                minend 2018-05-11
                start 2018-05-11
                end 2018-05-11
                charge 284152529.0 onend

                task task562 "نصب کلید و پریز راهرو بلوک 7" {
                    milestone
                    priority 500
                    maxstart 2018-05-11
                    minstart 2018-05-11
                    maxend 2018-05-11
                    minend 2018-05-11
                    charge 441459.0 onend
                }


                task task563 "نصب تجهیزات صوت راهرو بلوک 7" {
                    milestone
                    priority 500
                    maxstart 2018-05-11
                    minstart 2018-05-11
                    maxend 2018-05-11
                    minend 2018-05-11
                    charge 203560500.0 onend
                }


                task task564 "نصب تجهیزات روشنایی راهرو بلوک 7" {
                    milestone
                    priority 500
                    maxstart 2018-05-11
                    minstart 2018-05-11
                    maxend 2018-05-11
                    minend 2018-05-11
                    charge 80150570.0 onend
                }

            }

        }


        task task565 "راهرو پله" {
            priority 500
            complete 94
            maxstart 2018-03-01
            minstart 2018-03-01
            maxend 2018-05-11
            minend 2018-03-22
            start 2018-03-01
            end 2018-03-22
            charge 317301588.0 onend

            task task566 "نازک کاری" {
                priority 500
                complete 94
                maxstart 2018-03-01
                minstart 2018-03-01
                maxend 2018-05-11
                minend 2018-03-22
                start 2018-03-01
                end 2018-03-22
                charge 317301588.0 onend

                task task567 "زیرسازی سقف کاذب راهرو پله بلوک 7" {
                    milestone
                    priority 500
                    complete 100
                    maxstart 2018-03-01
                    minstart 2018-03-01
                    maxend 2018-03-04
                    minend 2018-03-04
                    charge 19987968.0 onend
                }


                task task568 "نصب پنل سقف کاذب راهرو پله بلوک 7" {
                    milestone
                    priority 500
                    complete 100
                    maxstart 2018-03-04
                    minstart 2018-03-04
                    maxend 2018-03-07
                    minend 2018-03-07
                    charge 18649504.0 onend
                }


                task task569 "کفسازی راهرو پله بلوک 7" {
                    milestone
                    priority 500
                    complete 100
                    maxstart 2018-03-07
                    minstart 2018-03-07
                    maxend 2018-03-11
                    minend 2018-03-11
                    charge 12046336.0 onend
                }


                task task570 "نصب درب و پنجره راهرو پله بلوک 7" {
                    milestone
                    priority 500
                    complete 100
                    maxstart 2018-03-11
                    minstart 2018-03-11
                    maxend 2018-03-15
                    minend 2018-03-15
                    charge 37180000.0 onend
                }


                task task571 "رنگ آمیزی راهرو پله بلوک 7" {
                    milestone
                    priority 500
                    complete 83
                    maxstart 2018-03-15
                    minstart 2018-03-15
                    maxend 2018-05-11
                    minend 2018-03-22
                    charge 229437780.0 onend
                }

            }

        }


        task task572 "دفتر تجاری" {
            priority 500
            complete 89
            maxstart 2017-08-02
            minstart 2017-08-02
            maxend 2018-05-11
            minend 2018-05-11
            start 2017-08-02
            end 2018-05-11
            charge 5265467575.0 onend

            task task573 "سفتکاری" {
                priority 500
                complete 99
                maxstart 2017-08-19
                minstart 2017-08-19
                maxend 2017-09-03
                minend 2017-09-03
                start 2017-08-19
                end 2017-09-03
                charge 397855744.0 onend

                task task574 "نصب وال پست دفتر تجاری بلوک 7" {
                    milestone
                    priority 500
                    complete 99
                    maxstart 2017-08-19
                    minstart 2017-08-19
                    maxend 2017-08-26
                    minend 2017-08-26
                    charge 174061888.0 onend
                }


                task task575 "دیوارچینی هبلکس دفتر تجاری بلوک 7" {
                    milestone
                    priority 500
                    complete 100
                    maxstart 2017-08-26
                    minstart 2017-08-26
                    maxend 2017-09-03
                    minend 2017-09-03
                    charge 223793856.0 onend
                }

            }


            task task576 "تاسیسات مکانیکی فاز 1" {
                priority 500
                complete 100
                maxstart 2017-08-07
                minstart 2017-08-07
                maxend 2017-12-28
                minend 2017-12-28
                start 2017-08-07
                end 2017-12-28
                charge 2208860100.0 onend

                task task577 "ساخت کانال دفتر تجاری   بلوک 7" {
                    milestone
                    priority 500
                    complete 100
                    maxstart 2017-08-07
                    minstart 2017-08-07
                    maxend 2017-08-22
                    minend 2017-08-22
                    charge 321235200.0 onend
                }


                task task578 "ساپورت زنی و شاسی کشی دفتر تجاری بلوک 7" {
                    milestone
                    priority 500
                    complete 100
                    maxstart 2017-08-08
                    minstart 2017-08-08
                    maxend 2017-08-22
                    minend 2017-08-22
                    charge 513084000.0 onend
                }


                task task579 "نصب کانال دفتر تجاری بلوک 7" {
                    milestone
                    priority 500
                    complete 100
                    maxstart 2017-09-26
                    minstart 2017-09-26
                    maxend 2017-10-10
                    minend 2017-10-10
                    charge 321235200.0 onend
                }


                task task580 "عایق کانال دفتر تجاری بلوک 7" {
                    milestone
                    priority 500
                    complete 100
                    maxstart 2017-10-10
                    minstart 2017-10-10
                    maxend 2017-10-14
                    minend 2017-10-14
                    charge 361200000.0 onend
                }


                task task581 "لوله اطفاء حریق دفتر تجاری بلوک 7" {
                    milestone
                    priority 500
                    complete 100
                    maxstart 2017-09-25
                    minstart 2017-09-25
                    maxend 2017-10-05
                    minend 2017-10-05
                    charge 645965320.0 onend
                }


                task task582 "تست لوله ها دفتر تجاری بلوک 7" {
                    milestone
                    priority 500
                    complete 100
                    maxstart 2017-12-25
                    minstart 2017-12-25
                    maxend 2017-12-28
                    minend 2017-12-28
                    charge 46140380.0 onend
                }

            }


            task task583 "تاسیسات برقی فاز 1" {
                priority 500
                complete 100
                maxstart 2017-09-30
                minstart 2017-09-30
                maxend 2017-12-10
                minend 2017-12-10
                start 2017-09-30
                end 2017-12-10
                charge 211998035.0 onend

                task task584 "سوراخکاری و شیارزنی دفتر تجاری بلوک 7" {
                    milestone
                    priority 500
                    complete 100
                    maxstart 2017-11-30
                    minstart 2017-11-30
                    maxend 2017-12-10
                    minend 2017-12-10
                    charge 15200000.0 onend
                }


                task task585 "لوله گذاری اعلام حریق دفتر تجاری بلوک 7" {
                    milestone
                    priority 500
                    complete 100
                    maxstart 2017-09-30
                    minstart 2017-09-30
                    maxend 2017-10-20
                    minend 2017-10-20
                    charge 196798035.0 onend
                }

            }


            task task586 "نازک کاری" {
                priority 500
                complete 100
                maxstart 2017-08-02
                minstart 2017-08-02
                maxend 2017-08-27
                minend 2017-08-27
                start 2017-08-02
                end 2017-08-27
                charge 734826496.0 onend

                task task587 "سرامیک دفتر تجاری بلوک 7" {
                    milestone
                    priority 500
                    complete 100
                    maxstart 2017-08-02
                    minstart 2017-08-02
                    maxend 2017-08-27
                    minend 2017-08-27
                    charge 734826496.0 onend
                }

            }


            task task588 "تاسیسات مکانیکی فاز 2" {
                priority 500
                maxstart 2018-04-28
                minstart 2018-04-21
                maxend 2018-05-11
                minend 2018-05-11
                start 2018-04-21
                end 2018-05-11
                charge 1711927200.0 onend

                task task589 "نصب دمپر و فایر دمپر دفتر تجاری بلوک 7" {
                    milestone
                    priority 500
                    maxstart 2018-04-28
                    minstart 2018-04-21
                    maxend 2018-05-07
                    minend 2018-04-30
                    charge 1632000000.0 onend
                }


                task task590 "تست تاسیسات مکانیکی دفتر تجاری بلوک 7" {
                    milestone
                    priority 500
                    maxstart 2018-05-11
                    minstart 2018-05-11
                    maxend 2018-05-11
                    minend 2018-05-11
                    charge 79927200.0 onend
                }

            }

        }


        task task591 "کافی شاپ" {
            priority 500
            complete 48
            maxstart 2017-07-27
            minstart 2017-07-27
            maxend 2018-05-11
            minend 2018-05-11
            start 2017-07-27
            end 2018-05-11
            charge 519783221.0 onend

            task task592 "سفتکاری" {
                priority 500
                complete 100
                maxstart 2017-07-27
                minstart 2017-07-27
                maxend 2017-08-31
                minend 2017-08-31
                start 2017-07-27
                end 2017-08-31
                charge 391787968.0 onend

                task task593 "نصب وال پست کافی شاپ بلوک 7" {
                    milestone
                    priority 500
                    complete 100
                    maxstart 2017-08-26
                    minstart 2017-08-26
                    maxend 2017-08-28
                    minend 2017-08-28
                    charge 19155136.0 onend
                }


                task task594 "دیوارچینی هبلکس کافی شاپ بلوک 7" {
                    milestone
                    priority 500
                    complete 100
                    maxstart 2017-08-28
                    minstart 2017-08-28
                    maxend 2017-08-31
                    minend 2017-08-31
                    charge 24628032.0 onend
                }


                task task595 "آهن کشی ودیوارچینی درزژوئن کافی شاپ بلوک 7" {
                    milestone
                    priority 500
                    complete 100
                    maxstart 2017-07-27
                    minstart 2017-07-27
                    maxend 2017-07-31
                    minend 2017-07-31
                    charge 348004800.0 onend
                }

            }


            task task596 "تاسیسات مکانیکی فاز 1" {
                priority 500
                complete 100
                maxstart 2017-10-05
                minstart 2017-10-05
                maxend 2017-12-29
                minend 2017-12-29
                start 2017-10-05
                end 2017-12-29
                charge 59290070.0 onend

                task task597 "ساخت کانال کافی شاپ   بلوک 7" {
                    milestone
                    priority 500
                    complete 100
                    maxstart 2017-10-05
                    minstart 2017-10-05
                    maxend 2017-10-06
                    minend 2017-10-06
                    charge 9369360.0 onend
                }


                task task598 "ساپورت زنی و شاسی کشی کافی شاپ بلوک 7" {
                    milestone
                    priority 500
                    complete 100
                    maxstart 2017-10-28
                    minstart 2017-10-28
                    maxend 2017-10-30
                    minend 2017-10-30
                    charge 14964950.0 onend
                }


                task task599 "نصب کانال کافی شاپ بلوک 7" {
                    milestone
                    priority 500
                    complete 100
                    maxstart 2017-10-30
                    minstart 2017-10-30
                    maxend 2017-11-02
                    minend 2017-11-02
                    charge 9369360.0 onend
                }


                task task600 "عایق کانال کافی شاپ بلوک 7" {
                    milestone
                    priority 500
                    complete 100
                    maxstart 2017-11-02
                    minstart 2017-11-02
                    maxend 2017-11-05
                    minend 2017-11-05
                    charge 7740000.0 onend
                }


                task task601 "لوله اطفاء حریق کافی شاپ بلوک 7" {
                    milestone
                    priority 500
                    complete 100
                    maxstart 2017-12-26
                    minstart 2017-12-26
                    maxend 2017-12-28
                    minend 2017-12-28
                    charge 16656640.0 onend
                }


                task task602 "تست لوله ها کافی شاپ بلوک 7" {
                    milestone
                    priority 500
                    complete 100
                    maxstart 2017-12-28
                    minstart 2017-12-28
                    maxend 2017-12-29
                    minend 2017-12-29
                    charge 1189760.0 onend
                }

            }


            task task603 "تاسیسات برقی فاز 1" {
                priority 500
                complete 100
                maxstart 2017-11-22
                minstart 2017-11-22
                maxend 2017-12-02
                minend 2017-12-02
                start 2017-11-22
                end 2017-12-02
                charge 4465020.0 onend

                task task604 "سوراخکاری و شیارزنی کافی شاپ بلوک 7" {
                    milestone
                    priority 500
                    complete 100
                    maxstart 2017-11-22
                    minstart 2017-11-22
                    maxend 2017-11-25
                    minend 2017-11-25
                    charge 380000.0 onend
                }


                task task605 "لوله گذاری صوت، روشنایی و اعلام حریق کافی شاپ بلوک 7" {
                    milestone
                    priority 500
                    complete 100
                    maxstart 2017-11-25
                    minstart 2017-11-25
                    maxend 2017-11-28
                    minend 2017-11-28
                    charge 2205020.0 onend
                }


                task task606 "کابل کشی ولتاژ ضعیف کافی شاپ بلوک 7" {
                    milestone
                    priority 500
                    complete 100
                    maxstart 2017-11-28
                    minstart 2017-11-28
                    maxend 2017-12-02
                    minend 2017-12-02
                    charge 1880000.0 onend
                }

            }


            task task607 "نازک کاری" {
                priority 500
                complete 100
                maxstart 2017-08-31
                minstart 2017-08-31
                maxend 2017-09-04
                minend 2017-09-04
                start 2017-08-31
                end 2017-09-04
                charge 30115840.0 onend

                task task608 "سرامیک کافی شاپ بلوک 7" {
                    milestone
                    priority 500
                    complete 100
                    maxstart 2017-08-31
                    minstart 2017-08-31
                    maxend 2017-09-04
                    minend 2017-09-04
                    charge 30115840.0 onend
                }

            }


            task task609 "تاسیسات مکانیکی فاز 2" {
                priority 500
                maxstart 2018-05-11
                minstart 2018-05-11
                maxend 2018-05-11
                minend 2018-05-11
                start 2018-05-11
                end 2018-05-11
                charge 33183600.0 onend

                task task610 "نصب فن کوئل کافی شاپ بلوک 7" {
                    milestone
                    priority 500
                    maxstart 2018-05-11
                    minstart 2018-05-11
                    maxend 2018-05-11
                    minend 2018-05-11
                    charge 32400000.0 onend
                }


                task task611 "تست تاسیسات مکانیکی کافی شاپ بلوک 7" {
                    milestone
                    priority 500
                    maxstart 2018-05-11
                    minstart 2018-05-11
                    maxend 2018-05-11
                    minend 2018-05-11
                    charge 783600.0 onend
                }

            }


            task task612 "تاسیسات برقی فاز 2" {
                priority 500
                maxstart 2018-05-09
                minstart 2018-05-05
                maxend 2018-05-11
                minend 2018-05-11
                start 2018-05-05
                end 2018-05-11
                charge 940723.0 onend

                task task613 "نصب کلید و پریز کافی شاپ بلوک 7" {
                    milestone
                    priority 500
                    maxstart 2018-05-09
                    minstart 2018-05-05
                    maxend 2018-05-11
                    minend 2018-05-11
                    charge 147153.0 onend
                }


                task task614 "نصب تجهیزات روشنایی کافی شاپ بلوک 7" {
                    milestone
                    priority 500
                    maxstart 2018-05-11
                    minstart 2018-05-11
                    maxend 2018-05-11
                    minend 2018-05-11
                    charge 793570.0 onend
                }

            }

        }

    }


    task task615 "بلوک 1" {
        priority 500
        complete 94
        maxstart 2017-07-04
        minstart 2017-07-04
        maxend 2018-05-11
        minend 2018-05-11
        start 2017-07-04
        end 2018-05-11
        charge 4100982979.0 onend

        task task616 "شیب بندی بام" {
            priority 500
            complete 99
            maxstart 2017-07-04
            minstart 2017-07-04
            maxend 2017-12-11
            minend 2017-12-11
            start 2017-07-04
            end 2017-12-11
            charge 3449298531.0 onend

            task task617 "سفتکاری" {
                priority 500
                complete 99
                maxstart 2017-07-04
                minstart 2017-07-04
                maxend 2017-12-11
                minend 2017-12-11
                start 2017-07-04
                end 2017-12-11
                charge 3449298531.0 onend

                task task618 "نصب وال پست شیب بندی بام بلوک 1" {
                    milestone
                    priority 500
                    complete 100
                    maxstart 2017-08-28
                    minstart 2017-08-28
                    maxend 2017-09-06
                    minend 2017-09-06
                    charge 35395360.0 onend
                }


                task task619 "دیوارچینی هبلکس شیب بندی بام بلوک 1" {
                    milestone
                    priority 500
                    complete 100
                    maxstart 2017-09-06
                    minstart 2017-09-06
                    maxend 2017-09-14
                    minend 2017-09-14
                    charge 45508320.0 onend
                }


                task task620 "آهن کشی ودیوارچینی درزژوئن شیب بندی بام بلوک 1" {
                    milestone
                    priority 500
                    complete 100
                    maxstart 2017-09-04
                    minstart 2017-09-04
                    maxend 2017-09-10
                    minend 2017-09-10
                    charge 468468000.0 onend
                }


                task task621 "عایق حرارتی شیب بندی بام بلوک 1" {
                    milestone
                    priority 500
                    complete 100
                    maxstart 2017-08-28
                    minstart 2017-08-28
                    maxend 2017-09-07
                    minend 2017-09-07
                    charge 530335520.0 onend
                }


                task task622 "کروم بندی و فوم بتن شیب بندی بام بلوک 1" {
                    milestone
                    priority 500
                    complete 100
                    maxstart 2017-07-04
                    minstart 2017-07-04
                    maxend 2017-07-24
                    minend 2017-07-24
                    charge 1113704592.0 onend
                }


                task task623 "عایق رطوبتی و لایه محافظ شیب بندی بام بلوک 1" {
                    milestone
                    priority 500
                    complete 99
                    maxstart 2017-10-03
                    minstart 2017-10-03
                    maxend 2017-10-25
                    minend 2017-10-25
                    charge 440193514.0 onend
                }


                task task624 "موزاییک شیب بندی بام بلوک 1" {
                    milestone
                    priority 500
                    complete 100
                    maxstart 2017-11-06
                    minstart 2017-11-06
                    maxend 2017-12-01
                    minend 2017-12-01
                    charge 802350000.0 onend
                }


                task task625 "گاترشیب بندی بام بلوک 1" {
                    milestone
                    priority 500
                    complete 100
                    maxstart 2017-11-16
                    minstart 2017-11-16
                    maxend 2017-12-11
                    minend 2017-12-11
                    charge 13343225.0 onend
                }

            }

        }


        task task626 "بام باغ" {
            priority 500
            complete 100
            maxstart 2017-09-10
            minstart 2017-09-10
            maxend 2017-11-16
            minend 2017-11-16
            start 2017-09-10
            end 2017-11-16
            charge 357665620.0 onend

            task task627 "سفتکاری" {
                priority 500
                complete 100
                maxstart 2017-09-10
                minstart 2017-09-10
                maxend 2017-11-16
                minend 2017-11-16
                start 2017-09-10
                end 2017-11-16
                charge 357665620.0 onend

                task task628 "کرسی چینی بام باغ بلوک 1" {
                    milestone
                    priority 500
                    complete 100
                    maxstart 2017-10-09
                    minstart 2017-10-09
                    maxend 2017-10-19
                    minend 2017-10-19
                    charge 99549450.0 onend
                }


                task task629 "عایق رطوبتی بام باغ بلوک 1" {
                    milestone
                    priority 500
                    complete 100
                    maxstart 2017-10-19
                    minstart 2017-10-19
                    maxend 2017-11-02
                    minend 2017-11-02
                    charge 68913518.0 onend
                }


                task task630 "کفسازی بام باغ بلوک 1" {
                    milestone
                    priority 500
                    complete 100
                    maxstart 2017-11-02
                    minstart 2017-11-02
                    maxend 2017-11-16
                    minend 2017-11-16
                    charge 48662252.0 onend
                }


                task task631 "آهن کشی ودیوارچینی درزژوئن بام باغ بلوک 1" {
                    milestone
                    priority 500
                    complete 100
                    maxstart 2017-09-10
                    minstart 2017-09-10
                    maxend 2017-09-13
                    minend 2017-09-13
                    charge 140540400.0 onend
                }

            }

        }


        task task632 "رستوران" {
            priority 500
            complete 75
            maxstart 2017-09-13
            minstart 2017-09-13
            maxend 2018-05-11
            minend 2018-05-11
            start 2017-09-13
            end 2018-05-11
            charge 294018828.0 onend

            task task633 "سفتکاری" {
                priority 500
                complete 100
                maxstart 2017-09-13
                minstart 2017-09-13
                maxend 2017-12-10
                minend 2017-12-10
                start 2017-09-13
                end 2017-12-10
                charge 230813440.0 onend

                task task634 "نصب وال پست رستوران(فریم) بلوک 1" {
                    milestone
                    priority 500
                    complete 100
                    maxstart 2017-11-26
                    minstart 2017-11-26
                    maxend 2017-12-03
                    minend 2017-12-03
                    charge 26026000.0 onend
                }


                task task635 "دیوارچینی هبلکس رستوران(شیشه) بلوک 1" {
                    milestone
                    priority 500
                    complete 100
                    maxstart 2017-12-03
                    minstart 2017-12-03
                    maxend 2017-12-10
                    minend 2017-12-10
                    charge 37477440.0 onend
                }


                task task636 "آهن کشی ودیوارچینی درزژوئن رستوران بلوک 1" {
                    milestone
                    priority 500
                    complete 100
                    maxstart 2017-09-13
                    minstart 2017-09-13
                    maxend 2017-09-23
                    minend 2017-09-23
                    charge 167310000.0 onend
                }

            }


            task task637 "تاسیسات برقی فاز 1" {
                priority 500
                complete 100
                maxstart 2017-11-28
                minstart 2017-11-28
                maxend 2017-12-06
                minend 2017-12-06
                start 2017-11-28
                end 2017-12-06
                charge 7094299.0 onend

                task task638 "لوله گذاری صوت، روشنایی و اعلام حریق رستوران بلوک 1" {
                    milestone
                    priority 500
                    complete 100
                    maxstart 2017-11-28
                    minstart 2017-11-28
                    maxend 2017-12-02
                    minend 2017-12-02
                    charge 5402299.0 onend
                }


                task task639 "کابل کشی ولتاژ ضعیف رستوران بلوک 1" {
                    milestone
                    priority 500
                    complete 100
                    maxstart 2017-12-02
                    minstart 2017-12-02
                    maxend 2017-12-06
                    minend 2017-12-06
                    charge 1692000.0 onend
                }

            }


            task task640 "نازک کاری" {
                priority 500
                complete 98
                maxstart 2018-03-11
                minstart 2018-03-11
                maxend 2018-05-11
                minend 2018-03-21
                start 2018-03-11
                end 2018-03-21
                charge 55714304.0 onend

                task task641 "کفسازی رستوران بلوک 1" {
                    milestone
                    priority 500
                    complete 98
                    maxstart 2018-03-11
                    minstart 2018-03-11
                    maxend 2018-05-11
                    minend 2018-03-21
                    charge 55714304.0 onend
                }

            }


            task task642 "تاسیسات برقی فاز 2" {
                priority 500
                maxstart 2018-05-11
                minstart 2018-05-11
                maxend 2018-05-11
                minend 2018-05-11
                start 2018-05-11
                end 2018-05-11
                charge 396785.0 onend

                task task643 "نصب تجهیزات روشنایی رستوران بلوک 1" {
                    milestone
                    priority 500
                    maxstart 2018-05-11
                    minstart 2018-05-11
                    maxend 2018-05-11
                    minend 2018-05-11
                    charge 396785.0 onend
                }

            }

        }

    }


    task task644 "بلوک 4" {
        priority 500
        complete 50
        maxstart 2017-09-23
        minstart 2017-09-23
        maxend 2018-05-11
        minend 2018-05-11
        start 2017-09-23
        end 2018-05-11
        charge 1505849767.0 onend

        task task645 "فودکورت" {
            priority 500
            complete 50
            maxstart 2017-09-23
            minstart 2017-09-23
            maxend 2018-05-11
            minend 2018-05-11
            start 2017-09-23
            end 2018-05-11
            charge 1505849767.0 onend

            task task646 "سفتکاری" {
                priority 500
                complete 100
                maxstart 2017-09-23
                minstart 2017-09-23
                maxend 2018-01-20
                minend 2018-01-20
                start 2017-09-23
                end 2018-01-20
                charge 556123568.0 onend

                task task647 "نصب وال پست فودکورت بلوک 4" {
                    milestone
                    priority 500
                    complete 100
                    maxstart 2017-12-03
                    minstart 2017-12-03
                    maxend 2018-01-02
                    minend 2018-01-02
                    charge 216952736.0 onend
                }


                task task648 "دیوارچینی هبلکس فودکورت بلوک 4" {
                    milestone
                    priority 500
                    complete 100
                    maxstart 2017-12-21
                    minstart 2017-12-21
                    maxend 2018-01-20
                    minend 2018-01-20
                    charge 278939232.0 onend
                }


                task task649 "آهن کشی ودیوارچینی درزژوئن فودکورت بلوک 4" {
                    milestone
                    priority 500
                    complete 100
                    maxstart 2017-09-23
                    minstart 2017-09-23
                    maxend 2017-09-25
                    minend 2017-09-25
                    charge 60231600.0 onend
                }

            }


            task task650 "نازک کاری" {
                priority 500
                complete 23
                maxstart 2018-03-04
                minstart 2018-03-04
                maxend 2018-05-11
                minend 2018-05-04
                start 2018-03-04
                end 2018-05-04
                charge 947153662.0 onend

                task task651 "زیرسازی سقف کاذب فودکورت بلوک 4" {
                    milestone
                    priority 500
                    complete 56
                    maxstart 2018-03-04
                    minstart 2018-03-04
                    maxend 2018-04-18
                    minend 2018-04-03
                    charge 373525152.0 onend
                }


                task task652 "نصب پنل سقف کاذب فودکورت بلوک 4" {
                    milestone
                    priority 500
                    maxstart 2018-04-05
                    minstart 2018-03-21
                    maxend 2018-05-05
                    minend 2018-04-20
                    charge 348512606.0 onend
                }


                task task653 "کفسازی فودکورت بلوک 4" {
                    milestone
                    priority 500
                    maxstart 2018-05-05
                    minstart 2018-04-20
                    maxend 2018-05-11
                    minend 2018-05-04
                    charge 225115904.0 onend
                }

            }


            task task654 "تاسیسات برقی فاز 2" {
                priority 500
                maxstart 2018-05-11
                minstart 2018-05-11
                maxend 2018-05-11
                minend 2018-05-11
                start 2018-05-11
                end 2018-05-11
                charge 2572537.0 onend

                task task655 "نصب کلید و پریز فودکورت بلوک 4" {
                    milestone
                    priority 500
                    maxstart 2018-05-11
                    minstart 2018-05-11
                    maxend 2018-05-11
                    minend 2018-05-11
                    charge 588612.0 onend
                }


                task task656 "نصب تجهیزات روشنایی فودکورت بلوک 4" {
                    milestone
                    priority 500
                    maxstart 2018-05-11
                    minstart 2018-05-11
                    maxend 2018-05-11
                    minend 2018-05-11
                    charge 1983925.0 onend
                }

            }

        }

    }


    task task657 "بلوک 12" {
        priority 500
        complete 73
        maxstart 2017-07-17
        minstart 2017-07-17
        maxend 2018-05-11
        minend 2018-05-11
        start 2017-07-17
        end 2018-05-11
        charge 5244772142.5 onend

        task task658 "شیب بندی بام" {
            priority 500
            complete 100
            maxstart 2017-07-17
            minstart 2017-07-17
            maxend 2018-01-20
            minend 2018-01-20
            start 2017-07-17
            end 2018-01-20
            charge 2133522315.5 onend

            task task659 "سفتکاری" {
                priority 500
                complete 100
                maxstart 2017-07-17
                minstart 2017-07-17
                maxend 2018-01-20
                minend 2018-01-20
                start 2017-07-17
                end 2018-01-20
                charge 2133522315.5 onend

                task task660 "دیوارچینی هبلکس شیب بندی بام بلوک 12" {
                    milestone
                    priority 500
                    complete 100
                    maxstart 2018-01-16
                    minstart 2018-01-16
                    maxend 2018-01-20
                    minend 2018-01-20
                    charge 36406656.0 onend
                }


                task task661 "آهن کشی ودیوارچینی درزژوئن شیب بندی بام بلوک 12" {
                    milestone
                    priority 500
                    complete 100
                    maxstart 2017-10-31
                    minstart 2017-10-31
                    maxend 2017-11-03
                    minend 2017-11-03
                    charge 140540400.0 onend
                }


                task task662 "عایق حرارتی شیب بندی بام بلوک 12" {
                    milestone
                    priority 500
                    complete 100
                    maxstart 2017-09-21
                    minstart 2017-09-21
                    maxend 2017-09-25
                    minend 2017-09-25
                    charge 357820320.0 onend
                }


                task task663 "کروم بندی و فوم بتن شیب بندی بام بلوک 12" {
                    milestone
                    priority 500
                    complete 100
                    maxstart 2017-07-17
                    minstart 2017-07-17
                    maxend 2017-07-21
                    minend 2017-07-21
                    charge 751422672.0 onend
                }


                task task664 "عایق رطوبتی و لایه محافظ شیب بندی بام بلوک 12" {
                    milestone
                    priority 500
                    complete 100
                    maxstart 2017-11-20
                    minstart 2017-11-20
                    maxend 2017-11-24
                    minend 2017-11-24
                    charge 296979102.0 onend
                }


                task task665 "موزاییک شیب بندی بام بلوک 12" {
                    milestone
                    priority 500
                    complete 100
                    maxstart 2017-12-19
                    minstart 2017-12-19
                    maxend 2017-12-24
                    minend 2017-12-24
                    charge 541350000.0 onend
                }


                task task666 "گاترشیب بندی بام بلوک 12" {
                    milestone
                    priority 500
                    complete 100
                    maxstart 2017-12-24
                    minstart 2017-12-24
                    maxend 2017-12-29
                    minend 2017-12-29
                    charge 9003165.5 onend
                }

            }

        }


        task task667 "راهرو" {
            priority 500
            complete 58
            maxstart 2017-09-06
            minstart 2017-09-06
            maxend 2018-05-11
            minend 2018-05-11
            start 2017-09-06
            end 2018-05-11
            charge 971768035.0 onend

            task task668 "سفتکاری" {
                priority 500
                complete 100
                maxstart 2017-09-06
                minstart 2017-09-06
                maxend 2017-10-03
                minend 2017-10-03
                start 2017-09-06
                end 2017-10-03
                charge 552137872.0 onend

                task task669 "نصب وال پست راهرو بلوک 12" {
                    milestone
                    priority 500
                    complete 100
                    maxstart 2017-09-06
                    minstart 2017-09-06
                    maxend 2017-09-11
                    minend 2017-09-11
                    charge 232776544.0 onend
                }


                task task670 "دیوارچینی هبلکس راهرو بلوک 12" {
                    milestone
                    priority 500
                    complete 100
                    maxstart 2017-09-11
                    minstart 2017-09-11
                    maxend 2017-09-17
                    minend 2017-09-17
                    charge 299284128.0 onend
                }


                task task671 "آهن کشی ودیوارچینی درزژوئن راهرو بلوک 12" {
                    milestone
                    priority 500
                    complete 100
                    maxstart 2017-09-28
                    minstart 2017-09-28
                    maxend 2017-10-03
                    minend 2017-10-03
                    charge 20077200.0 onend
                }

            }


            task task672 "تاسیسات مکانیکی فاز 1" {
                priority 500
                complete 100
                maxstart 2017-12-23
                minstart 2017-12-23
                maxend 2018-01-31
                minend 2018-01-31
                start 2017-12-23
                end 2018-01-31
                charge 166454860.0 onend

                task task673 "لوله سرد و گرم فن کوئل راهرو بلوک 12" {
                    milestone
                    priority 500
                    complete 100
                    maxstart 2017-12-23
                    minstart 2017-12-23
                    maxend 2017-12-26
                    minend 2017-12-26
                    charge 446160.0 onend
                }


                task task674 "عایق لوله راهرو بلوک 12" {
                    milestone
                    priority 500
                    complete 100
                    maxstart 2018-01-28
                    minstart 2018-01-28
                    maxend 2018-01-31
                    minend 2018-01-31
                    charge 165971520.0 onend
                }


                task task675 "تست لوله ها راهرو بلوک 12" {
                    milestone
                    priority 500
                    complete 100
                    maxstart 2017-12-26
                    minstart 2017-12-26
                    maxend 2017-12-28
                    minend 2017-12-28
                    charge 37180.0 onend
                }

            }


            task task676 "تاسیسات برقی فاز 1" {
                priority 500
                complete 100
                maxstart 2017-11-25
                minstart 2017-11-25
                maxend 2017-11-30
                minend 2017-11-30
                start 2017-11-25
                end 2017-11-30
                charge 76000.0 onend

                task task677 "سوراخکاری و شیارزنی راهرو بلوک 12" {
                    milestone
                    priority 500
                    complete 100
                    maxstart 2017-11-25
                    minstart 2017-11-25
                    maxend 2017-11-30
                    minend 2017-11-30
                    charge 76000.0 onend
                }

            }


            task task678 "نازک کاری" {
                priority 500
                complete 100
                maxstart 2018-01-21
                minstart 2018-01-21
                maxend 2018-02-06
                minend 2018-02-06
                start 2018-01-21
                end 2018-02-06
                charge 237580350.0 onend

                task task679 "زیرسازی سقف کاذب راهرو بلوک 12" {
                    milestone
                    priority 500
                    complete 100
                    maxstart 2018-01-21
                    minstart 2018-01-21
                    maxend 2018-01-27
                    minend 2018-01-27
                    charge 93693600.0 onend
                }


                task task680 "نصب پنل سقف کاذب راهرو بلوک 12" {
                    milestone
                    priority 500
                    complete 100
                    maxstart 2018-01-27
                    minstart 2018-01-27
                    maxend 2018-02-01
                    minend 2018-02-01
                    charge 87419550.0 onend
                }


                task task681 "کفسازی راهرو بلوک 12" {
                    milestone
                    priority 500
                    complete 100
                    maxstart 2018-02-01
                    minstart 2018-02-01
                    maxend 2018-02-06
                    minend 2018-02-06
                    charge 56467200.0 onend
                }

            }


            task task682 "تاسیسات مکانیکی فاز 2" {
                priority 500
                maxstart 2018-05-11
                minstart 2018-05-11
                maxend 2018-05-11
                minend 2018-05-11
                start 2018-05-11
                end 2018-05-11
                charge 15371800.0 onend

                task task683 "نصب جعبه و کپسول آتش نشانی راهرو بلوک 12" {
                    milestone
                    priority 500
                    maxstart 2018-05-11
                    minstart 2018-05-11
                    maxend 2018-05-11
                    minend 2018-05-11
                    charge 14980000.0 onend
                }


                task task684 "تست تاسیسات مکانیکی راهرو بلوک 12" {
                    milestone
                    priority 500
                    maxstart 2018-05-11
                    minstart 2018-05-11
                    maxend 2018-05-11
                    minend 2018-05-11
                    charge 391800.0 onend
                }

            }


            task task685 "تاسیسات برقی فاز 2" {
                priority 500
                maxstart 2018-05-11
                minstart 2018-05-11
                maxend 2018-05-11
                minend 2018-05-11
                start 2018-05-11
                end 2018-05-11
                charge 147153.0 onend

                task task686 "نصب کلید و پریز راهرو بلوک 12" {
                    milestone
                    priority 500
                    maxstart 2018-05-11
                    minstart 2018-05-11
                    maxend 2018-05-11
                    minend 2018-05-11
                    charge 147153.0 onend
                }

            }

        }


        task task687 "دفتر تجاری" {
            priority 500
            complete 79
            maxstart 2017-09-04
            minstart 2017-09-04
            maxend 2018-05-11
            minend 2018-05-11
            start 2017-09-04
            end 2018-05-11
            charge 2139481792.0 onend

            task task688 "سفتکاری" {
                priority 500
                complete 100
                maxstart 2017-09-11
                minstart 2017-09-11
                maxend 2017-09-26
                minend 2017-09-26
                start 2017-09-11
                end 2017-09-26
                charge 798566912.0 onend

                task task689 "نصب وال پست دفتر تجاری بلوک 12" {
                    milestone
                    priority 500
                    complete 100
                    maxstart 2017-09-11
                    minstart 2017-09-11
                    maxend 2017-09-18
                    minend 2017-09-18
                    charge 349373024.0 onend
                }


                task task690 "دیوارچینی هبلکس دفتر تجاری بلوک 12" {
                    milestone
                    priority 500
                    complete 100
                    maxstart 2017-09-18
                    minstart 2017-09-18
                    maxend 2017-09-26
                    minend 2017-09-26
                    charge 449193888.0 onend
                }

            }


            task task691 "تاسیسات مکانیکی فاز 1" {
                priority 500
                complete 99
                maxstart 2017-10-06
                minstart 2017-10-06
                maxend 2018-01-05
                minend 2018-01-05
                start 2017-10-06
                end 2018-01-05
                charge 250457600.0 onend

                task task692 "ساخت کانال دفتر تجاری   بلوک 12" {
                    milestone
                    priority 500
                    complete 100
                    maxstart 2017-10-06
                    minstart 2017-10-06
                    maxend 2017-10-09
                    minend 2017-10-09
                    charge 13384800.0 onend
                }


                task task693 "ساپورت زنی و شاسی کشی دفتر تجاری بلوک 12" {
                    milestone
                    priority 500
                    complete 100
                    maxstart 2017-10-30
                    minstart 2017-10-30
                    maxend 2017-11-03
                    minend 2017-11-03
                    charge 21378500.0 onend
                }


                task task694 "نصب کانال دفتر تجاری بلوک 12" {
                    milestone
                    priority 500
                    complete 100
                    maxstart 2017-11-03
                    minstart 2017-11-03
                    maxend 2017-11-07
                    minend 2017-11-07
                    charge 13384800.0 onend
                }


                task task695 "عایق کانال دفتر تجاری بلوک 12" {
                    milestone
                    priority 500
                    complete 99
                    maxstart 2017-11-07
                    minstart 2017-11-07
                    maxend 2017-11-11
                    minend 2017-11-11
                    charge 15480000.0 onend
                }


                task task696 "لوله اطفاء حریق دفتر تجاری بلوک 12" {
                    milestone
                    priority 500
                    complete 100
                    maxstart 2017-12-29
                    minstart 2017-12-29
                    maxend 2018-01-02
                    minend 2018-01-02
                    charge 174374200.0 onend
                }


                task task697 "تست لوله ها دفتر تجاری بلوک 12" {
                    milestone
                    priority 500
                    complete 100
                    maxstart 2018-01-02
                    minstart 2018-01-02
                    maxend 2018-01-05
                    minend 2018-01-05
                    charge 12455300.0 onend
                }

            }


            task task698 "نازک کاری" {
                priority 500
                complete 100
                maxstart 2017-09-04
                minstart 2017-09-04
                maxend 2017-09-19
                minend 2017-09-19
                start 2017-09-04
                end 2017-09-19
                charge 351978880.0 onend

                task task699 "سرامیک دفتر تجاری بلوک 12" {
                    milestone
                    priority 500
                    complete 100
                    maxstart 2017-09-04
                    minstart 2017-09-04
                    maxend 2017-09-19
                    minend 2017-09-19
                    charge 351978880.0 onend
                }

            }


            task task700 "تاسیسات مکانیکی فاز 2" {
                priority 500
                maxstart 2018-05-11
                minstart 2018-05-11
                maxend 2018-05-11
                minend 2018-05-11
                start 2018-05-11
                end 2018-05-11
                charge 738478400.0 onend

                task task701 "نصب دمپر و فایر دمپر دفتر تجاری بلوک 12" {
                    milestone
                    priority 500
                    maxstart 2018-05-11
                    minstart 2018-05-11
                    maxend 2018-05-11
                    minend 2018-05-11
                    charge 704000000.0 onend
                }


                task task702 "تست تاسیسات مکانیکی دفتر تجاری بلوک 12" {
                    milestone
                    priority 500
                    maxstart 2018-05-11
                    minstart 2018-05-11
                    maxend 2018-05-11
                    minend 2018-05-11
                    charge 34478400.0 onend
                }

            }

        }

    }


    task task703 "بلوک 13" {
        priority 500
        complete 54
        maxstart 2017-09-16
        minstart 2017-09-16
        maxend 2018-05-11
        minend 2018-05-11
        start 2017-09-16
        end 2018-05-11
        charge 12447703336.5 onend

        task task704 "شیب بندی بام" {
            priority 500
            complete 100
            maxstart 2017-09-16
            minstart 2017-09-16
            maxend 2017-10-05
            minend 2017-10-05
            start 2017-09-16
            end 2017-10-05
            charge 527111812.5 onend

            task task705 "سفتکاری" {
                priority 500
                complete 100
                maxstart 2017-09-16
                minstart 2017-09-16
                maxend 2017-10-05
                minend 2017-10-05
                start 2017-09-16
                end 2017-10-05
                charge 527111812.5 onend

                task task706 "عایق حرارتی شیب بندی بام بلوک 13" {
                    milestone
                    priority 500
                    complete 100
                    maxstart 2017-09-16
                    minstart 2017-09-16
                    maxend 2017-09-19
                    minend 2017-09-19
                    charge 96370560.0 onend
                }


                task task707 "کروم بندی و فوم بتن شیب بندی بام بلوک 13" {
                    milestone
                    priority 500
                    complete 100
                    maxstart 2017-09-19
                    minstart 2017-09-19
                    maxend 2017-09-22
                    minend 2017-09-22
                    charge 202378176.0 onend
                }


                task task708 "عایق رطوبتی و لایه محافظ شیب بندی بام بلوک 13" {
                    milestone
                    priority 500
                    complete 100
                    maxstart 2017-09-22
                    minstart 2017-09-22
                    maxend 2017-09-25
                    minend 2017-09-25
                    charge 80137218.0 onend
                }


                task task709 "موزاییک شیب بندی بام بلوک 13" {
                    milestone
                    priority 500
                    complete 100
                    maxstart 2017-09-25
                    minstart 2017-09-25
                    maxend 2017-09-30
                    minend 2017-09-30
                    charge 145800000.0 onend
                }


                task task710 "گاترشیب بندی بام بلوک 13" {
                    milestone
                    priority 500
                    complete 100
                    maxstart 2017-09-30
                    minstart 2017-09-30
                    maxend 2017-10-05
                    minend 2017-10-05
                    charge 2425858.5 onend
                }

            }

        }


        task task711 "راهرو" {
            priority 500
            complete 66
            maxstart 2017-09-23
            minstart 2017-09-23
            maxend 2018-05-11
            minend 2018-05-11
            start 2017-09-23
            end 2018-05-11
            charge 5764485375.0 onend

            task task712 "سفتکاری" {
                priority 500
                complete 100
                maxstart 2017-12-03
                minstart 2017-12-03
                maxend 2017-12-04
                minend 2017-12-04
                start 2017-12-03
                end 2017-12-04
                charge 892320.0 onend

                task task713 "نصب پیش فریم راهرو بلوک 13" {
                    milestone
                    priority 500
                    complete 100
                    maxstart 2017-12-03
                    minstart 2017-12-03
                    maxend 2017-12-04
                    minend 2017-12-04
                    charge 892320.0 onend
                }

            }


            task task714 "تاسیسات مکانیکی فاز 1" {
                priority 500
                complete 100
                maxstart 2017-10-09
                minstart 2017-10-09
                maxend 2018-01-07
                minend 2018-01-07
                start 2017-10-09
                end 2018-01-07
                charge 1926307050.0 onend

                task task715 "ساخت کانال راهرو   بلوک 13" {
                    milestone
                    priority 500
                    complete 100
                    maxstart 2017-10-09
                    minstart 2017-10-09
                    maxend 2017-10-14
                    minend 2017-10-14
                    charge 169986960.0 onend
                }


                task task716 "ساپورت زنی و شاسی کشی راهرو بلوک 13" {
                    milestone
                    priority 500
                    complete 100
                    maxstart 2017-10-14
                    minstart 2017-10-14
                    maxend 2017-10-19
                    minend 2017-10-19
                    charge 271506950.0 onend
                }


                task task717 "نصب کانال راهرو بلوک 13" {
                    milestone
                    priority 500
                    complete 100
                    maxstart 2017-10-19
                    minstart 2017-10-19
                    maxend 2017-10-24
                    minend 2017-10-24
                    charge 169986960.0 onend
                }


                task task718 "عایق کانال راهرو بلوک 13" {
                    milestone
                    priority 500
                    complete 100
                    maxstart 2017-10-24
                    minstart 2017-10-24
                    maxend 2017-10-29
                    minend 2017-10-29
                    charge 327660000.0 onend
                }


                task task719 "لوله سرد و گرم فن کوئل راهرو بلوک 13" {
                    milestone
                    priority 500
                    complete 100
                    maxstart 2017-12-26
                    minstart 2017-12-26
                    maxend 2017-12-30
                    minend 2017-12-30
                    charge 217726080.0 onend
                }


                task task720 "لوله سرد و گرم مصرفی راهرو بلوک 13" {
                    milestone
                    priority 500
                    complete 100
                    maxstart 2017-12-24
                    minstart 2017-12-24
                    maxend 2017-12-26
                    minend 2017-12-26
                    charge 41046720.0 onend
                }


                task task721 "لوله اطفاء حریق راهرو بلوک 13" {
                    milestone
                    priority 500
                    complete 100
                    maxstart 2018-01-03
                    minstart 2018-01-03
                    maxend 2018-01-07
                    minend 2018-01-07
                    charge 216015800.0 onend
                }


                task task722 "عایق لوله راهرو بلوک 13" {
                    milestone
                    priority 500
                    complete 100
                    maxstart 2017-12-30
                    minstart 2017-12-30
                    maxend 2018-01-02
                    minend 2018-01-02
                    charge 421844280.0 onend
                }


                task task723 "لوله فاضلاب و ونت راهرو بلوک 13" {
                    milestone
                    priority 500
                    complete 100
                    maxstart 2017-12-16
                    minstart 2017-12-16
                    maxend 2017-12-18
                    minend 2017-12-18
                    charge 18961800.0 onend
                }


                task task724 "تست لوله ها راهرو بلوک 13" {
                    milestone
                    priority 500
                    complete 100
                    maxstart 2017-12-30
                    minstart 2017-12-30
                    maxend 2018-01-02
                    minend 2018-01-02
                    charge 39968500.0 onend
                }


                task task725 "لوله آب باران راهرو بلوک 13" {
                    milestone
                    priority 500
                    complete 100
                    maxstart 2017-12-04
                    minstart 2017-12-04
                    maxend 2017-12-08
                    minend 2017-12-08
                    charge 31603000.0 onend
                }

            }


            task task726 "تاسیسات برقی فاز 1" {
                priority 500
                complete 100
                maxstart 2017-09-23
                minstart 2017-09-23
                maxend 2017-12-31
                minend 2017-12-31
                start 2017-09-23
                end 2017-12-31
                charge 1447905646.0 onend

                task task727 "سوراخکاری و شیارزنی راهرو بلوک 13" {
                    milestone
                    priority 500
                    complete 100
                    maxstart 2017-11-30
                    minstart 2017-11-30
                    maxend 2017-12-15
                    minend 2017-12-15
                    charge 1900000.0 onend
                }


                task task728 "ساپورت زنی راهرو بلوک 13" {
                    milestone
                    priority 500
                    complete 100
                    maxstart 2017-11-16
                    minstart 2017-11-16
                    maxend 2017-12-04
                    minend 2017-12-04
                    charge 208520000.0 onend
                }


                task task729 "سینی کابل راهرو بلوک 13" {
                    milestone
                    priority 500
                    complete 100
                    maxstart 2017-09-23
                    minstart 2017-09-23
                    maxend 2017-10-13
                    minend 2017-10-13
                    charge 286205400.0 onend
                }


                task task730 "لوله گذاری صوت، روشنایی و اعلام حریق راهرو بلوک 13" {
                    milestone
                    priority 500
                    complete 100
                    maxstart 2017-12-02
                    minstart 2017-12-02
                    maxend 2017-12-19
                    minend 2017-12-19
                    charge 220502000.0 onend
                }


                task task731 "کابل کشی جریان ضعیف(تلفن) راهرو بلوک 13" {
                    milestone
                    priority 500
                    complete 100
                    maxstart 2017-12-19
                    minstart 2017-12-19
                    maxend 2017-12-26
                    minend 2017-12-26
                    charge 112540246.0 onend
                }


                task task732 "کابل کشی ولتاژ ضعیف راهرو بلوک 13" {
                    milestone
                    priority 500
                    complete 100
                    maxstart 2017-12-17
                    minstart 2017-12-17
                    maxend 2017-12-31
                    minend 2017-12-31
                    charge 618238000.0 onend
                }

            }


            task task733 "نازک کاری" {
                priority 500
                complete 99
                maxstart 2018-01-27
                minstart 2018-01-27
                maxend 2018-03-19
                minend 2018-03-19
                start 2018-01-27
                end 2018-03-19
                charge 1915648634.0 onend

                task task734 "زیرسازی سقف کاذب راهرو بلوک 13" {
                    milestone
                    priority 500
                    complete 100
                    maxstart 2018-01-27
                    minstart 2018-01-27
                    maxend 2018-02-24
                    minend 2018-02-24
                    charge 740804064.0 onend
                }


                task task735 "نصب پنل سقف کاذب راهرو بلوک 13" {
                    milestone
                    priority 500
                    complete 99
                    maxstart 2018-02-09
                    minstart 2018-02-09
                    maxend 2018-02-27
                    minend 2018-02-27
                    charge 691197242.0 onend
                }


                task task736 "نصب درب و پنجره راهرو بلوک 13" {
                    milestone
                    priority 500
                    complete 100
                    maxstart 2018-02-27
                    minstart 2018-02-27
                    maxend 2018-03-09
                    minend 2018-03-09
                    charge 37180000.0 onend
                }


                task task737 "کفسازی راهرو بلوک 13" {
                    milestone
                    priority 500
                    complete 100
                    maxstart 2018-02-27
                    minstart 2018-02-27
                    maxend 2018-03-19
                    minend 2018-03-19
                    charge 446467328.0 onend
                }

            }


            task task738 "تاسیسات مکانیکی فاز 2" {
                priority 500
                maxstart 2018-05-05
                minstart 2018-05-01
                maxend 2018-05-11
                minend 2018-05-11
                start 2018-05-01
                end 2018-05-11
                charge 100504000.0 onend

                task task739 "نصب دمپر و فایر دمپر راهرو بلوک 13" {
                    milestone
                    priority 500
                    maxstart 2018-05-11
                    minstart 2018-05-11
                    maxend 2018-05-11
                    minend 2018-05-11
                    charge 40000000.0 onend
                }


                task task740 "نصب دریچه هوا راهرو بلوک 13" {
                    milestone
                    priority 500
                    maxstart 2018-05-05
                    minstart 2018-05-01
                    maxend 2018-05-11
                    minend 2018-05-11
                    charge 48750000.0 onend
                }


                task task741 "تست تاسیسات مکانیکی راهرو بلوک 13" {
                    milestone
                    priority 500
                    maxstart 2018-05-11
                    minstart 2018-05-11
                    maxend 2018-05-11
                    minend 2018-05-11
                    charge 11754000.0 onend
                }

            }


            task task742 "تاسیسات برقی فاز 2" {
                priority 500
                maxstart 2018-05-11
                minstart 2018-05-11
                maxend 2018-05-11
                minend 2018-05-11
                start 2018-05-11
                end 2018-05-11
                charge 373227725.0 onend

                task task743 "نصب تجهیزات صوت راهرو بلوک 13" {
                    milestone
                    priority 500
                    maxstart 2018-05-11
                    minstart 2018-05-11
                    maxend 2018-05-11
                    minend 2018-05-11
                    charge 244272600.0 onend
                }


                task task744 "نصب تجهیزات روشنایی راهرو بلوک 13" {
                    milestone
                    priority 500
                    maxstart 2018-05-11
                    minstart 2018-05-11
                    maxend 2018-05-11
                    minend 2018-05-11
                    charge 128955125.0 onend
                }

            }

        }


        task task745 "لابی آسانسور" {
            priority 500
            complete 80
            maxstart 2017-12-15
            minstart 2017-12-15
            maxend 2018-05-11
            minend 2018-05-11
            start 2017-12-15
            end 2018-05-11
            charge 96928702.0 onend

            task task746 "تاسیسات برقی فاز 1" {
                priority 500
                complete 100
                maxstart 2017-12-15
                minstart 2017-12-15
                maxend 2018-01-13
                minend 2018-01-13
                start 2017-12-15
                end 2018-01-13
                charge 15354542.0 onend

                task task747 "سوراخکاری و شیارزنی لابی آسانسور بلوک 13" {
                    milestone
                    priority 500
                    complete 100
                    maxstart 2017-12-15
                    minstart 2017-12-15
                    maxend 2017-12-20
                    minend 2017-12-20
                    charge 760000.0 onend
                }


                task task748 "لوله گذاری صوت، روشنایی و اعلام حریق لابی آسانسور بلوک 13" {
                    milestone
                    priority 500
                    complete 100
                    maxstart 2017-12-20
                    minstart 2017-12-20
                    maxend 2017-12-25
                    minend 2017-12-25
                    charge 4630542.0 onend
                }


                task task749 "کابل کشی ولتاژ ضعیف لابی آسانسور بلوک 13" {
                    milestone
                    priority 500
                    complete 100
                    maxstart 2018-01-07
                    minstart 2018-01-07
                    maxend 2018-01-13
                    minend 2018-01-13
                    charge 9964000.0 onend
                }

            }


            task task750 "نازک کاری" {
                priority 500
                complete 99
                maxstart 2018-02-24
                minstart 2018-02-24
                maxend 2018-03-19
                minend 2018-03-19
                start 2018-02-24
                end 2018-03-19
                charge 79193450.0 onend

                task task751 "زیرسازی سقف کاذب لابی آسانسور بلوک 13" {
                    milestone
                    priority 500
                    complete 100
                    maxstart 2018-02-24
                    minstart 2018-02-24
                    maxend 2018-02-28
                    minend 2018-02-28
                    charge 31231200.0 onend
                }


                task task752 "نصب پنل سقف کاذب لابی آسانسور بلوک 13" {
                    milestone
                    priority 500
                    complete 99
                    maxstart 2018-02-28
                    minstart 2018-02-28
                    maxend 2018-03-09
                    minend 2018-03-09
                    charge 29139850.0 onend
                }


                task task753 "کفسازی لابی آسانسور بلوک 13" {
                    milestone
                    priority 500
                    complete 100
                    maxstart 2018-03-09
                    minstart 2018-03-09
                    maxend 2018-03-19
                    minend 2018-03-19
                    charge 18822400.0 onend
                }

            }


            task task754 "تاسیسات برقی فاز 2" {
                priority 500
                maxstart 2018-05-11
                minstart 2018-05-11
                maxend 2018-05-11
                minend 2018-05-11
                start 2018-05-11
                end 2018-05-11
                charge 2380710.0 onend

                task task755 "نصب تجهیزات روشنایی لابی آسانسور بلوک 13" {
                    milestone
                    priority 500
                    maxstart 2018-05-11
                    minstart 2018-05-11
                    maxend 2018-05-11
                    minend 2018-05-11
                    charge 2380710.0 onend
                }

            }

        }


        task task756 "لابی سرویس" {
            priority 500
            complete 67
            maxstart 2017-09-18
            minstart 2017-09-18
            maxend 2018-05-11
            minend 2018-05-11
            start 2017-09-18
            end 2018-05-11
            charge 630241733.0 onend

            task task757 "سفتکاری" {
                priority 500
                complete 100
                maxstart 2017-09-18
                minstart 2017-09-18
                maxend 2017-12-05
                minend 2017-12-05
                start 2017-09-18
                end 2017-12-05
                charge 144555840.0 onend

                task task758 "نصب وال پست لابی سرویس بلوک 13" {
                    milestone
                    priority 500
                    complete 100
                    maxstart 2017-09-18
                    minstart 2017-09-18
                    maxend 2017-09-23
                    minend 2017-09-23
                    charge 62462400.0 onend
                }


                task task759 "دیوارچینی هبلکس لابی سرویس بلوک 13" {
                    milestone
                    priority 500
                    complete 100
                    maxstart 2017-09-23
                    minstart 2017-09-23
                    maxend 2017-09-29
                    minend 2017-09-29
                    charge 80308800.0 onend
                }


                task task760 "نصب پیش فریم لابی سرویس بلوک 13" {
                    milestone
                    priority 500
                    complete 100
                    maxstart 2017-12-04
                    minstart 2017-12-04
                    maxend 2017-12-05
                    minend 2017-12-05
                    charge 1784640.0 onend
                }

            }


            task task761 "تاسیسات برقی فاز 1" {
                priority 500
                complete 100
                maxstart 2017-12-11
                minstart 2017-12-11
                maxend 2018-01-17
                minend 2018-01-17
                start 2017-12-11
                end 2018-01-17
                charge 40521376.0 onend

                task task762 "سوراخکاری و شیارزنی لابی سرویس بلوک 13" {
                    milestone
                    priority 500
                    complete 100
                    maxstart 2017-12-20
                    minstart 2017-12-20
                    maxend 2017-12-24
                    minend 2017-12-24
                    charge 190000.0 onend
                }


                task task763 "ساپورت زنی لابی سرویس بلوک 13" {
                    milestone
                    priority 500
                    complete 100
                    maxstart 2017-12-11
                    minstart 2017-12-11
                    maxend 2017-12-18
                    minend 2017-12-18
                    charge 4010000.0 onend
                }


                task task764 "سینی کابل لابی سرویس بلوک 13" {
                    milestone
                    priority 500
                    complete 100
                    maxstart 2017-12-18
                    minstart 2017-12-18
                    maxend 2017-12-21
                    minend 2017-12-21
                    charge 5503950.0 onend
                }


                task task765 "لوله گذاری صوت، روشنایی و اعلام حریق لابی سرویس بلوک 13" {
                    milestone
                    priority 500
                    complete 100
                    maxstart 2017-12-25
                    minstart 2017-12-25
                    maxend 2017-12-28
                    minend 2017-12-28
                    charge 11907108.0 onend
                }


                task task766 "کابل کشی جریان ضعیف(تلفن) لابی سرویس بلوک 13" {
                    milestone
                    priority 500
                    complete 100
                    maxstart 2017-12-28
                    minstart 2017-12-28
                    maxend 2018-01-01
                    minend 2018-01-01
                    charge 2554318.0 onend
                }


                task task767 "کابل کشی ولتاژ ضعیف لابی سرویس بلوک 13" {
                    milestone
                    priority 500
                    complete 100
                    maxstart 2018-01-13
                    minstart 2018-01-13
                    maxend 2018-01-17
                    minend 2018-01-17
                    charge 16356000.0 onend
                }

            }


            task task768 "نازک کاری" {
                priority 500
                complete 86
                maxstart 2018-02-28
                minstart 2018-02-28
                maxend 2018-05-05
                minend 2018-03-25
                start 2018-02-28
                end 2018-03-25
                charge 424848472.0 onend

                task task769 "زیرسازی سقف کاذب لابی سرویس بلوک 13" {
                    milestone
                    priority 500
                    complete 99
                    maxstart 2018-02-28
                    minstart 2018-02-28
                    maxend 2018-03-04
                    minend 2018-03-04
                    charge 29981952.0 onend
                }


                task task770 "نصب پنل سقف کاذب لابی سرویس بلوک 13" {
                    milestone
                    priority 500
                    complete 100
                    maxstart 2018-03-04
                    minstart 2018-03-04
                    maxend 2018-03-09
                    minend 2018-03-09
                    charge 27974256.0 onend
                }


                task task771 "نصب درب و پنجره لابی سرویس بلوک 13" {
                    milestone
                    priority 500
                    complete 100
                    maxstart 2018-03-09
                    minstart 2018-03-09
                    maxend 2018-03-15
                    minend 2018-03-15
                    charge 37180000.0 onend
                }


                task task772 "کفسازی لابی سرویس بلوک 13" {
                    milestone
                    priority 500
                    complete 100
                    maxstart 2018-03-09
                    minstart 2018-03-09
                    maxend 2018-03-15
                    minend 2018-03-15
                    charge 18069504.0 onend
                }


                task task773 "رنگ آمیزی لابی سرویس بلوک 13" {
                    milestone
                    priority 500
                    complete 58
                    maxstart 2018-03-15
                    minstart 2018-03-15
                    maxend 2018-05-05
                    minend 2018-03-25
                    charge 311642760.0 onend
                }

            }


            task task774 "تاسیسات برقی فاز 2" {
                priority 500
                maxstart 2018-05-05
                minstart 2018-05-01
                maxend 2018-05-11
                minend 2018-05-11
                start 2018-05-01
                end 2018-05-11
                charge 20316045.0 onend

                task task775 "نصب تجهیزات صوت لابی سرویس بلوک 13" {
                    milestone
                    priority 500
                    maxstart 2018-05-05
                    minstart 2018-05-01
                    maxend 2018-05-11
                    minend 2018-05-08
                    charge 13570700.0 onend
                }


                task task776 "نصب تجهیزات روشنایی لابی سرویس بلوک 13" {
                    milestone
                    priority 500
                    maxstart 2018-05-11
                    minstart 2018-05-11
                    maxend 2018-05-11
                    minend 2018-05-11
                    charge 6745345.0 onend
                }

            }

        }


        task task777 "راهرو پله" {
            priority 500
            complete 63
            maxstart 2017-12-05
            minstart 2017-12-05
            maxend 2018-05-11
            minend 2018-04-02
            start 2017-12-05
            end 2018-04-02
            charge 258921545.0 onend

            task task778 "سفتکاری" {
                priority 500
                complete 100
                maxstart 2017-12-05
                minstart 2017-12-05
                maxend 2017-12-07
                minend 2017-12-07
                start 2017-12-05
                end 2017-12-07
                charge 1784640.0 onend

                task task779 "نصب پیش فریم راهرو پله بلوک 13" {
                    milestone
                    priority 500
                    complete 100
                    maxstart 2017-12-05
                    minstart 2017-12-05
                    maxend 2017-12-07
                    minend 2017-12-07
                    charge 1784640.0 onend
                }

            }


            task task780 "نازک کاری" {
                priority 500
                complete 61
                maxstart 2018-03-04
                minstart 2018-03-04
                maxend 2018-05-11
                minend 2018-04-02
                start 2018-03-04
                end 2018-04-02
                charge 257136905.0 onend

                task task781 "زیرسازی سقف کاذب راهرو پله بلوک 13" {
                    milestone
                    priority 500
                    complete 100
                    maxstart 2018-03-04
                    minstart 2018-03-04
                    maxend 2018-03-07
                    minend 2018-03-07
                    charge 15615600.0 onend
                }


                task task782 "نصب پنل سقف کاذب راهرو پله بلوک 13" {
                    milestone
                    priority 500
                    complete 100
                    maxstart 2018-03-07
                    minstart 2018-03-07
                    maxend 2018-03-15
                    minend 2018-03-15
                    charge 14569925.0 onend
                }


                task task783 "نصب درب و پنجره راهرو پله بلوک 13" {
                    milestone
                    priority 500
                    complete 73
                    maxstart 2018-03-15
                    minstart 2018-03-15
                    maxend 2018-05-11
                    minend 2018-03-23
                    charge 37180000.0 onend
                }


                task task784 "کفسازی راهرو پله بلوک 13" {
                    milestone
                    priority 500
                    complete 73
                    maxstart 2018-03-15
                    minstart 2018-03-15
                    maxend 2018-05-11
                    minend 2018-03-23
                    charge 9411200.0 onend
                }


                task task785 "رنگ آمیزی راهرو پله بلوک 13" {
                    milestone
                    priority 500
                    maxstart 2018-05-11
                    minstart 2018-03-23
                    maxend 2018-05-11
                    minend 2018-04-02
                    charge 180360180.0 onend
                }

            }

        }


        task task786 "سرویس های بهداشتی" {
            priority 500
            complete 42
            maxstart 2017-10-14
            minstart 2017-10-14
            maxend 2018-05-11
            minend 2018-05-11
            start 2017-10-14
            end 2018-05-11
            charge 1201411120.0 onend

            task task787 "سفتکاری" {
                priority 500
                complete 100
                maxstart 2017-12-26
                minstart 2017-12-26
                maxend 2018-01-03
                minend 2018-01-03
                start 2017-12-26
                end 2018-01-03
                charge 73559206.0 onend

                task task788 "شیب بندی سرویس بهداشتی بلوک 13" {
                    milestone
                    priority 500
                    complete 100
                    maxstart 2017-12-26
                    minstart 2017-12-26
                    maxend 2017-12-30
                    minend 2017-12-30
                    charge 46846800.0 onend
                }


                task task789 "عایق رطوبتی سرویس بهداشتی بلوک 13" {
                    milestone
                    priority 500
                    complete 100
                    maxstart 2017-12-30
                    minstart 2017-12-30
                    maxend 2018-01-03
                    minend 2018-01-03
                    charge 26712406.0 onend
                }

            }


            task task790 "تاسیسات مکانیکی فاز 1" {
                priority 500
                complete 100
                maxstart 2017-10-14
                minstart 2017-10-14
                maxend 2018-01-01
                minend 2018-01-01
                start 2017-10-14
                end 2018-01-01
                charge 322298548.0 onend

                task task791 "ساخت کانال سرویس بهداشتی   بلوک 13" {
                    milestone
                    priority 500
                    complete 100
                    maxstart 2017-10-14
                    minstart 2017-10-14
                    maxend 2017-10-15
                    minend 2017-10-15
                    charge 10707840.0 onend
                }


                task task792 "ساپورت زنی و شاسی کشی سرویس بهداشتی بلوک 13" {
                    milestone
                    priority 500
                    complete 100
                    maxstart 2017-11-08
                    minstart 2017-11-08
                    maxend 2017-11-10
                    minend 2017-11-10
                    charge 17102800.0 onend
                }


                task task793 "نصب کانال سرویس بهداشتی بلوک 13" {
                    milestone
                    priority 500
                    complete 100
                    maxstart 2017-11-10
                    minstart 2017-11-10
                    maxend 2017-11-12
                    minend 2017-11-12
                    charge 10707840.0 onend
                }


                task task794 "لوله سرد و گرم مصرفی سرویس بهداشتی بلوک 13" {
                    milestone
                    priority 500
                    complete 100
                    maxstart 2017-12-26
                    minstart 2017-12-26
                    maxend 2017-12-29
                    minend 2017-12-29
                    charge 89678160.0 onend
                }


                task task795 "عایق لوله سرویس بهداشتی بلوک 13" {
                    milestone
                    priority 500
                    complete 100
                    maxstart 2017-12-29
                    minstart 2017-12-29
                    maxend 2018-01-01
                    minend 2018-01-01
                    charge 163205328.0 onend
                }


                task task796 "لوله فاضلاب و ونت سرویس بهداشتی بلوک 13" {
                    milestone
                    priority 500
                    complete 100
                    maxstart 2017-12-18
                    minstart 2017-12-18
                    maxend 2017-12-21
                    minend 2017-12-21
                    charge 22122100.0 onend
                }


                task task797 "تست لوله ها سرویس بهداشتی بلوک 13" {
                    milestone
                    priority 500
                    complete 100
                    maxstart 2017-12-29
                    minstart 2017-12-29
                    maxend 2017-12-31
                    minend 2017-12-31
                    charge 8774480.0 onend
                }

            }


            task task798 "تاسیسات برقی فاز 1" {
                priority 500
                complete 100
                maxstart 2017-12-24
                minstart 2017-12-24
                maxend 2018-01-20
                minend 2018-01-20
                start 2017-12-24
                end 2018-01-20
                charge 52539626.0 onend

                task task799 "سوراخکاری و شیارزنی سرویس بهداشتی بلوک 13" {
                    milestone
                    priority 500
                    complete 100
                    maxstart 2017-12-24
                    minstart 2017-12-24
                    maxend 2017-12-26
                    minend 2017-12-26
                    charge 1330000.0 onend
                }


                task task800 "لوله گذاری صوت، روشنایی و اعلام حریق سرویس بهداشتی بلوک 13" {
                    milestone
                    priority 500
                    complete 100
                    maxstart 2017-12-28
                    minstart 2017-12-28
                    maxend 2017-12-30
                    minend 2017-12-30
                    charge 13891626.0 onend
                }


                task task801 "کابل کشی ولتاژ ضعیف سرویس بهداشتی بلوک 13" {
                    milestone
                    priority 500
                    complete 100
                    maxstart 2018-01-17
                    minstart 2018-01-17
                    maxend 2018-01-20
                    minend 2018-01-20
                    charge 37318000.0 onend
                }

            }


            task task802 "نازک کاری" {
                priority 500
                complete 97
                maxstart 2017-12-25
                minstart 2017-12-25
                maxend 2018-05-07
                minend 2018-03-22
                start 2017-12-25
                end 2018-03-22
                charge 446676122.0 onend

                task task803 "پوشش دیوارها سرویس بهداشتی بلوک 13" {
                    milestone
                    priority 500
                    complete 100
                    maxstart 2017-12-25
                    minstart 2017-12-25
                    maxend 2018-01-04
                    minend 2018-01-04
                    charge 160575947.0 onend
                }


                task task804 "زیرسازی سقف کاذب سرویس بهداشتی بلوک 13" {
                    milestone
                    priority 500
                    complete 100
                    maxstart 2018-03-07
                    minstart 2018-03-07
                    maxend 2018-03-12
                    minend 2018-03-12
                    charge 46846800.0 onend
                }


                task task805 "نصب پنل سقف کاذب سرویس بهداشتی بلوک 13" {
                    milestone
                    priority 500
                    complete 100
                    maxstart 2018-03-12
                    minstart 2018-03-12
                    maxend 2018-03-17
                    minend 2018-03-17
                    charge 43709775.0 onend
                }


                task task806 "نصب درب و پنجره سرویس بهداشتی بلوک 13" {
                    milestone
                    priority 500
                    complete 100
                    maxstart 2018-03-10
                    minstart 2018-03-10
                    maxend 2018-03-20
                    minend 2018-03-20
                    charge 167310000.0 onend
                }


                task task807 "کفسازی سرویس بهداشتی بلوک 13" {
                    milestone
                    priority 500
                    complete 76
                    maxstart 2018-03-17
                    minstart 2018-03-17
                    maxend 2018-05-07
                    minend 2018-03-22
                    charge 28233600.0 onend
                }

            }


            task task808 "تاسیسات مکانیکی فاز 2" {
                priority 500
                maxstart 2018-05-07
                minstart 2018-04-30
                maxend 2018-05-11
                minend 2018-05-11
                start 2018-04-30
                end 2018-05-11
                charge 281113000.0 onend

                task task809 "نصب شیرآلات و تجهیزات بهداشتی سرویس بهداشتی بلوک 13" {
                    milestone
                    priority 500
                    maxstart 2018-05-11
                    minstart 2018-05-09
                    maxend 2018-05-11
                    minend 2018-05-11
                    charge 220000000.0 onend
                }


                task task810 "نصب دمپر و فایر دمپر سرویس بهداشتی بلوک 13" {
                    milestone
                    priority 500
                    maxstart 2018-05-07
                    minstart 2018-04-30
                    maxend 2018-05-11
                    minend 2018-05-05
                    charge 24000000.0 onend
                }


                task task811 "نصب دریچه هوا سرویس بهداشتی بلوک 13" {
                    milestone
                    priority 500
                    maxstart 2018-05-11
                    minstart 2018-05-11
                    maxend 2018-05-11
                    minend 2018-05-11
                    charge 23400000.0 onend
                }


                task task812 "تست تاسیسات مکانیکی  سرویس بهداشتی بلوک 13" {
                    milestone
                    priority 500
                    maxstart 2018-05-11
                    minstart 2018-05-11
                    maxend 2018-05-11
                    minend 2018-05-11
                    charge 13713000.0 onend
                }

            }


            task task813 "تاسیسات برقی فاز 2" {
                priority 500
                maxstart 2018-05-11
                minstart 2018-05-08
                maxend 2018-05-11
                minend 2018-05-11
                start 2018-05-08
                end 2018-05-11
                charge 25224618.0 onend

                task task814 "نصب کلید و پریز سرویس بهداشتی بلوک 13" {
                    milestone
                    priority 500
                    maxstart 2018-05-11
                    minstart 2018-05-11
                    maxend 2018-05-11
                    minend 2018-05-11
                    charge 147153.0 onend
                }


                task task815 "نصب تجهیزات صوت سرویس بهداشتی بلوک 13" {
                    milestone
                    priority 500
                    maxstart 2018-05-11
                    minstart 2018-05-08
                    maxend 2018-05-11
                    minend 2018-05-11
                    charge 13570700.0 onend
                }


                task task816 "نصب تجهیزات روشنایی سرویس بهداشتی بلوک 13" {
                    milestone
                    priority 500
                    maxstart 2018-05-11
                    minstart 2018-05-11
                    maxend 2018-05-11
                    minend 2018-05-11
                    charge 11506765.0 onend
                }

            }

        }


        task task817 "دفتر تجاری" {
            priority 500
            complete 100
            maxstart 2017-09-23
            minstart 2017-09-23
            maxend 2018-01-12
            minend 2018-01-12
            start 2017-09-23
            end 2018-01-12
            charge 1534149804.0 onend

            task task818 "سفتکاری" {
                priority 500
                complete 100
                maxstart 2017-09-23
                minstart 2017-09-23
                maxend 2017-10-08
                minend 2017-10-08
                start 2017-09-23
                end 2017-10-08
                charge 333132800.0 onend

                task task819 "نصب وال پست دفتر تجاری بلوک 13" {
                    milestone
                    priority 500
                    complete 100
                    maxstart 2017-09-23
                    minstart 2017-09-23
                    maxend 2017-09-30
                    minend 2017-09-30
                    charge 145745600.0 onend
                }


                task task820 "دیوارچینی هبلکس دفتر تجاری بلوک 13" {
                    milestone
                    priority 500
                    complete 100
                    maxstart 2017-09-30
                    minstart 2017-09-30
                    maxend 2017-10-08
                    minend 2017-10-08
                    charge 187387200.0 onend
                }

            }


            task task821 "تاسیسات مکانیکی فاز 1" {
                priority 500
                complete 100
                maxstart 2017-10-15
                minstart 2017-10-15
                maxend 2018-01-12
                minend 2018-01-12
                start 2017-10-15
                end 2018-01-12
                charge 861162030.0 onend

                task task822 "ساخت کانال دفتر تجاری   بلوک 13" {
                    milestone
                    priority 500
                    complete 100
                    maxstart 2017-10-15
                    minstart 2017-10-15
                    maxend 2017-10-19
                    minend 2017-10-19
                    charge 124478640.0 onend
                }


                task task823 "ساپورت زنی و شاسی کشی دفتر تجاری بلوک 13" {
                    milestone
                    priority 500
                    complete 100
                    maxstart 2017-10-17
                    minstart 2017-10-17
                    maxend 2017-10-22
                    minend 2017-10-22
                    charge 198820050.0 onend
                }


                task task824 "نصب کانال دفتر تجاری بلوک 13" {
                    milestone
                    priority 500
                    complete 100
                    maxstart 2017-10-22
                    minstart 2017-10-22
                    maxend 2017-10-27
                    minend 2017-10-27
                    charge 124478640.0 onend
                }


                task task825 "عایق کانال دفتر تجاری بلوک 13" {
                    milestone
                    priority 500
                    complete 100
                    maxstart 2017-10-27
                    minstart 2017-10-27
                    maxend 2017-11-01
                    minend 2017-11-01
                    charge 239940000.0 onend
                }


                task task826 "لوله اطفاء حریق دفتر تجاری بلوک 13" {
                    milestone
                    priority 500
                    complete 100
                    maxstart 2018-01-07
                    minstart 2018-01-07
                    maxend 2018-01-10
                    minend 2018-01-10
                    charge 161881720.0 onend
                }


                task task827 "تست لوله ها دفتر تجاری بلوک 13" {
                    milestone
                    priority 500
                    complete 100
                    maxstart 2018-01-10
                    minstart 2018-01-10
                    maxend 2018-01-12
                    minend 2018-01-12
                    charge 11562980.0 onend
                }

            }


            task task828 "تاسیسات برقی فاز 1" {
                priority 500
                complete 100
                maxstart 2017-12-26
                minstart 2017-12-26
                maxend 2018-01-03
                minend 2018-01-03
                start 2017-12-26
                end 2018-01-03
                charge 74459134.0 onend

                task task829 "سوراخکاری و شیارزنی دفتر تجاری بلوک 13" {
                    milestone
                    priority 500
                    complete 100
                    maxstart 2017-12-26
                    minstart 2017-12-26
                    maxend 2017-12-30
                    minend 2017-12-30
                    charge 4560000.0 onend
                }


                task task830 "لوله گذاری اعلام حریق دفتر تجاری بلوک 13" {
                    milestone
                    priority 500
                    complete 100
                    maxstart 2017-12-30
                    minstart 2017-12-30
                    maxend 2018-01-03
                    minend 2018-01-03
                    charge 69899134.0 onend
                }

            }


            task task831 "نازک کاری" {
                priority 500
                complete 100
                maxstart 2017-10-08
                minstart 2017-10-08
                maxend 2017-10-23
                minend 2017-10-23
                start 2017-10-08
                end 2017-10-23
                charge 265395840.0 onend

                task task832 "سرامیک دفتر تجاری بلوک 13" {
                    milestone
                    priority 500
                    complete 100
                    maxstart 2017-10-08
                    minstart 2017-10-08
                    maxend 2017-10-23
                    minend 2017-10-23
                    charge 265395840.0 onend
                }

            }

        }


        task task833 "سرگرمی خانواده" {
            priority 500
            complete 27
            maxstart 2017-10-19
            minstart 2017-10-19
            maxend 2018-05-11
            minend 2018-05-11
            start 2017-10-19
            end 2018-05-11
            charge 878004249.0 onend

            task task834 "تاسیسات مکانیکی فاز 1" {
                priority 500
                complete 100
                maxstart 2017-10-19
                minstart 2017-10-19
                maxend 2018-01-14
                minend 2018-01-14
                start 2017-10-19
                end 2018-01-14
                charge 234880340.0 onend

                task task835 "ساخت کانال سرگرمی و خانواده   بلوک 13" {
                    milestone
                    priority 500
                    complete 100
                    maxstart 2017-10-19
                    minstart 2017-10-19
                    maxend 2017-10-20
                    minend 2017-10-20
                    charge 29981952.0 onend
                }


                task task836 "ساپورت زنی و شاسی کشی سرگرمی و خانواده بلوک 13" {
                    milestone
                    priority 500
                    complete 100
                    maxstart 2017-11-15
                    minstart 2017-11-15
                    maxend 2017-11-17
                    minend 2017-11-17
                    charge 47887840.0 onend
                }


                task task837 "نصب کانال سرگرمی و خانواده بلوک 13" {
                    milestone
                    priority 500
                    complete 100
                    maxstart 2017-11-17
                    minstart 2017-11-17
                    maxend 2017-11-19
                    minend 2017-11-19
                    charge 29981952.0 onend
                }


                task task838 "عایق کانال سرگرمی و خانواده بلوک 13" {
                    milestone
                    priority 500
                    complete 100
                    maxstart 2017-11-19
                    minstart 2017-11-19
                    maxend 2017-11-21
                    minend 2017-11-21
                    charge 57792000.0 onend
                }


                task task839 "لوله سرد و گرم فن کوئل سرگرمی و خانواده بلوک 13" {
                    milestone
                    priority 500
                    complete 100
                    maxstart 2017-12-30
                    minstart 2017-12-30
                    maxend 2018-01-01
                    minend 2018-01-01
                    charge 16507920.0 onend
                }


                task task840 "لوله اطفاء حریق سرگرمی و خانواده بلوک 13" {
                    milestone
                    priority 500
                    complete 100
                    maxstart 2018-01-11
                    minstart 2018-01-11
                    maxend 2018-01-13
                    minend 2018-01-13
                    charge 17697680.0 onend
                }


                task task841 "لوله فاضلاب و ونت سرگرمی و خانواده بلوک 13" {
                    milestone
                    priority 500
                    complete 100
                    maxstart 2017-12-21
                    minstart 2017-12-21
                    maxend 2017-12-22
                    minend 2017-12-22
                    charge 3160300.0 onend
                }


                task task842 "عایق لوله سرگرمی و خانواده بلوک 13" {
                    milestone
                    priority 500
                    complete 100
                    maxstart 2018-01-01
                    minstart 2018-01-01
                    maxend 2018-01-03
                    minend 2018-01-03
                    charge 29045016.0 onend
                }


                task task843 "تست لوله ها سرگرمی و خانواده بلوک 13" {
                    milestone
                    priority 500
                    complete 100
                    maxstart 2018-01-13
                    minstart 2018-01-13
                    maxend 2018-01-14
                    minend 2018-01-14
                    charge 2825680.0 onend
                }

            }


            task task844 "تاسیسات برقی فاز 1" {
                priority 500
                complete 100
                maxstart 2017-12-30
                minstart 2017-12-30
                maxend 2018-01-23
                minend 2018-01-23
                start 2017-12-30
                end 2018-01-23
                charge 46791909.0 onend

                task task845 "سوراخکاری و شیارزنی سرگرمی و خانواده بلوک 13" {
                    milestone
                    priority 500
                    complete 100
                    maxstart 2017-12-30
                    minstart 2017-12-30
                    maxend 2018-01-01
                    minend 2018-01-01
                    charge 2660000.0 onend
                }


                task task846 "لوله گذاری صوت، روشنایی و اعلام حریق سرگرمی و خانواده بلوک 13" {
                    milestone
                    priority 500
                    complete 100
                    maxstart 2018-01-03
                    minstart 2018-01-03
                    maxend 2018-01-05
                    minend 2018-01-05
                    charge 17529909.0 onend
                }


                task task847 "کابل کشی ولتاژ ضعیف سرگرمی و خانواده بلوک 13" {
                    milestone
                    priority 500
                    complete 100
                    maxstart 2018-01-20
                    minstart 2018-01-20
                    maxend 2018-01-23
                    minend 2018-01-23
                    charge 26602000.0 onend
                }

            }


            task task848 "نازک کاری" {
                priority 500
                complete 29
                maxstart 2018-03-12
                minstart 2018-03-12
                maxend 2018-05-09
                minend 2018-04-11
                start 2018-03-12
                end 2018-04-11
                charge 532179984.0 onend

                task task849 "زیرسازی سقف کاذب سرگرمی و خانواده بلوک 13" {
                    milestone
                    priority 500
                    complete 88
                    maxstart 2018-03-12
                    minstart 2018-03-12
                    maxend 2018-04-19
                    minend 2018-03-22
                    charge 209873664.0 onend
                }


                task task850 "نصب پنل سقف کاذب سرگرمی و خانواده بلوک 13" {
                    milestone
                    priority 500
                    maxstart 2018-04-19
                    minstart 2018-03-22
                    maxend 2018-04-29
                    minend 2018-04-01
                    charge 195819792.0 onend
                }


                task task851 "کفسازی سرگرمی و خانواده بلوک 13" {
                    milestone
                    priority 500
                    maxstart 2018-04-29
                    minstart 2018-04-01
                    maxend 2018-05-09
                    minend 2018-04-11
                    charge 126486528.0 onend
                }

            }


            task task852 "تاسیسات مکانیکی فاز 2" {
                priority 500
                maxstart 2018-05-11
                minstart 2018-04-25
                maxend 2018-05-11
                minend 2018-05-11
                start 2018-04-25
                end 2018-05-11
                charge 61477000.0 onend

                task task853 "نصب دمپر و فایر دمپر سرگرمی و خانواده بلوک 13" {
                    milestone
                    priority 500
                    maxstart 2018-05-11
                    minstart 2018-05-05
                    maxend 2018-05-11
                    minend 2018-05-10
                    charge 16000000.0 onend
                }


                task task854 "نصب فن کوئلها و اسپلیتها سرگرمی و خانواده بلوک 13" {
                    milestone
                    priority 500
                    maxstart 2018-05-11
                    minstart 2018-05-11
                    maxend 2018-05-11
                    minend 2018-05-11
                    charge 16200000.0 onend
                }


                task task855 "نصب دریچه هوا سرگرمی و خانواده بلوک 13" {
                    milestone
                    priority 500
                    maxstart 2018-05-11
                    minstart 2018-04-25
                    maxend 2018-05-11
                    minend 2018-05-10
                    charge 23400000.0 onend
                }


                task task856 "تست تاسیسات مکانیکی سرگرمی و خانواده بلوک 13" {
                    milestone
                    priority 500
                    maxstart 2018-05-11
                    minstart 2018-05-11
                    maxend 2018-05-11
                    minend 2018-05-11
                    charge 5877000.0 onend
                }

            }


            task task857 "تاسیسات برقی فاز 2" {
                priority 500
                maxstart 2018-05-09
                minstart 2018-05-05
                maxend 2018-05-11
                minend 2018-05-11
                start 2018-05-05
                end 2018-05-11
                charge 2675016.0 onend

                task task858 "نصب کلید و پریز سرگرمی و خانواده بلوک 13" {
                    milestone
                    priority 500
                    maxstart 2018-05-09
                    minstart 2018-05-05
                    maxend 2018-05-11
                    minend 2018-05-11
                    charge 294306.0 onend
                }


                task task859 "نصب تجهیزات روشنایی سرگرمی و خانواده بلوک 13" {
                    milestone
                    priority 500
                    maxstart 2018-05-11
                    minstart 2018-05-11
                    maxend 2018-05-11
                    minend 2018-05-11
                    charge 2380710.0 onend
                }

            }

        }


        task task860 "اتاق هوارسان" {
            priority 500
            complete 55
            maxstart 2017-09-30
            minstart 2017-09-30
            maxend 2018-05-11
            minend 2018-04-11
            start 2017-09-30
            end 2018-04-11
            charge 786993754.0 onend

            task task861 "سفتکاری" {
                priority 500
                complete 100
                maxstart 2017-09-30
                minstart 2017-09-30
                maxend 2017-12-27
                minend 2017-12-27
                start 2017-09-30
                end 2017-12-27
                charge 171249080.0 onend

                task task862 "نصب وال پست اتاق هوارسان بلوک 13" {
                    milestone
                    priority 500
                    complete 100
                    maxstart 2017-09-30
                    minstart 2017-09-30
                    maxend 2017-10-07
                    minend 2017-10-07
                    charge 56216160.0 onend
                }


                task task863 "دیوارچینی اتاق هوارسان بلوک 13" {
                    milestone
                    priority 500
                    complete 100
                    maxstart 2017-10-07
                    minstart 2017-10-07
                    maxend 2017-10-15
                    minend 2017-10-15
                    charge 72277920.0 onend
                }


                task task864 "فونداسیون هواساز اتاق هوارسان بلوک 13" {
                    milestone
                    priority 500
                    complete 100
                    maxstart 2017-12-22
                    minstart 2017-12-22
                    maxend 2017-12-27
                    minend 2017-12-27
                    charge 42755000.0 onend
                }

            }


            task task865 "نازک کاری" {
                priority 500
                complete 26
                maxstart 2017-12-10
                minstart 2017-12-10
                maxend 2018-05-11
                minend 2018-04-11
                start 2017-12-10
                end 2018-04-11
                charge 615744674.0 onend

                task task866 "پوشش دیوارها اتاق هوارسان بلوک 13" {
                    milestone
                    priority 500
                    complete 100
                    maxstart 2017-12-10
                    minstart 2017-12-10
                    maxend 2017-12-18
                    minend 2017-12-18
                    charge 114565647.0 onend
                }


                task task867 "زیرسازی سقف کاذب اتاق هوارسان بلوک 13" {
                    milestone
                    priority 500
                    maxstart 2018-05-10
                    minstart 2018-03-22
                    maxend 2018-05-11
                    minend 2018-03-25
                    charge 39351312.0 onend
                }


                task task868 "نصب پنل سقف کاذب اتاق هوارسان بلوک 13" {
                    milestone
                    priority 500
                    maxstart 2018-05-11
                    minstart 2018-03-25
                    maxend 2018-05-11
                    minend 2018-03-28
                    charge 36716211.0 onend
                }


                task task869 "کفسازی اتاق هوارسان بلوک 13" {
                    milestone
                    priority 500
                    maxstart 2018-05-11
                    minstart 2018-03-28
                    maxend 2018-05-11
                    minend 2018-04-01
                    charge 23716224.0 onend
                }


                task task870 "نصب درب و پنجره اتاق هوارسان بلوک 13" {
                    milestone
                    priority 500
                    maxstart 2018-05-11
                    minstart 2018-04-01
                    maxend 2018-05-11
                    minend 2018-04-04
                    charge 18590000.0 onend
                }


                task task871 "رنگ آمیزی اتاق هوارسان بلوک 13" {
                    milestone
                    priority 500
                    maxstart 2018-05-11
                    minstart 2018-04-01
                    maxend 2018-05-11
                    minend 2018-04-11
                    charge 382805280.0 onend
                }

            }

        }


        task task872 "زباله دان" {
            priority 500
            complete 26
            maxstart 2017-10-07
            minstart 2017-10-07
            maxend 2018-05-11
            minend 2018-05-11
            start 2017-10-07
            end 2018-05-11
            charge 168451362.0 onend

            task task873 "سفتکاری" {
                priority 500
                complete 100
                maxstart 2017-10-07
                minstart 2017-10-07
                maxend 2017-12-09
                minend 2017-12-09
                start 2017-10-07
                end 2017-12-09
                charge 53182272.0 onend

                task task874 "نصب وال پست زباله دان بلوک 13" {
                    milestone
                    priority 500
                    complete 100
                    maxstart 2017-10-07
                    minstart 2017-10-07
                    maxend 2017-10-09
                    minend 2017-10-09
                    charge 22486464.0 onend
                }


                task task875 "دیوارچینی هبلکس زباله دان بلوک 13" {
                    milestone
                    priority 500
                    complete 100
                    maxstart 2017-10-09
                    minstart 2017-10-09
                    maxend 2017-10-11
                    minend 2017-10-11
                    charge 28911168.0 onend
                }


                task task876 "نصب پیش فریم زباله دان بلوک 13" {
                    milestone
                    priority 500
                    complete 100
                    maxstart 2017-12-07
                    minstart 2017-12-07
                    maxend 2017-12-09
                    minend 2017-12-09
                    charge 1784640.0 onend
                }

            }


            task task877 "تاسیسات برقی فاز 1" {
                priority 500
                complete 100
                maxstart 2018-01-01
                minstart 2018-01-01
                maxend 2018-01-25
                minend 2018-01-25
                start 2018-01-01
                end 2018-01-25
                charge 17905060.0 onend

                task task878 "سوراخکاری و شیارزنی زباله دان بلوک 13" {
                    milestone
                    priority 500
                    complete 100
                    maxstart 2018-01-01
                    minstart 2018-01-01
                    maxend 2018-01-02
                    minend 2018-01-02
                    charge 950000.0 onend
                }


                task task879 "لوله گذاری صوت، روشنایی و اعلام حریق زباله دان بلوک 13" {
                    milestone
                    priority 500
                    complete 100
                    maxstart 2018-01-05
                    minstart 2018-01-05
                    maxend 2018-01-06
                    minend 2018-01-06
                    charge 6615060.0 onend
                }


                task task880 "کابل کشی ولتاژ ضعیف زباله دان بلوک 13" {
                    milestone
                    priority 500
                    complete 100
                    maxstart 2018-01-23
                    minstart 2018-01-23
                    maxend 2018-01-25
                    minend 2018-01-25
                    charge 10340000.0 onend
                }

            }


            task task881 "نازک کاری" {
                priority 500
                maxstart 2018-05-11
                minstart 2018-03-25
                maxend 2018-05-11
                minend 2018-04-01
                start 2018-03-25
                end 2018-04-01
                charge 93396180.0 onend

                task task882 "زیرسازی سقف کاذب زباله دان بلوک 13" {
                    milestone
                    priority 500
                    maxstart 2018-05-11
                    minstart 2018-03-25
                    maxend 2018-05-11
                    minend 2018-03-27
                    charge 12492480.0 onend
                }


                task task883 "نصب پنل سقف کاذب زباله دان بلوک 13" {
                    milestone
                    priority 500
                    maxstart 2018-05-11
                    minstart 2018-03-27
                    maxend 2018-05-11
                    minend 2018-03-28
                    charge 11655940.0 onend
                }


                task task884 "نصب درب و پنجره زباله دان بلوک 13" {
                    milestone
                    priority 500
                    maxstart 2018-05-11
                    minstart 2018-03-28
                    maxend 2018-05-11
                    minend 2018-03-30
                    charge 37180000.0 onend
                }


                task task885 "کفسازی زباله دان بلوک 13" {
                    milestone
                    priority 500
                    maxstart 2018-05-11
                    minstart 2018-03-28
                    maxend 2018-05-11
                    minend 2018-03-30
                    charge 7528960.0 onend
                }


                task task886 "رنگ آمیزی زباله دان بلوک 13" {
                    milestone
                    priority 500
                    maxstart 2018-05-11
                    minstart 2018-03-30
                    maxend 2018-05-11
                    minend 2018-04-01
                    charge 24538800.0 onend
                }

            }


            task task887 "تاسیسات برقی فاز 2" {
                priority 500
                maxstart 2018-05-11
                minstart 2018-05-11
                maxend 2018-05-11
                minend 2018-05-11
                start 2018-05-11
                end 2018-05-11
                charge 3967850.0 onend

                task task888 "نصب تجهیزات روشنایی زباله دان بلوک 13" {
                    milestone
                    priority 500
                    maxstart 2018-05-11
                    minstart 2018-05-11
                    maxend 2018-05-11
                    minend 2018-05-11
                    charge 3967850.0 onend
                }

            }

        }


        task task889 "اتاق برق" {
            priority 500
            complete 20
            maxstart 2017-10-09
            minstart 2017-10-09
            maxend 2018-05-11
            minend 2018-05-11
            start 2017-10-09
            end 2018-05-11
            charge 399493350.0 onend

            task task890 "سفتکاری" {
                priority 500
                complete 100
                maxstart 2017-10-09
                minstart 2017-10-09
                maxend 2017-12-11
                minend 2017-12-11
                start 2017-10-09
                end 2017-12-11
                charge 111242560.0 onend

                task task891 "نصب وال پست اتاق برق بلوک 13" {
                    milestone
                    priority 500
                    complete 100
                    maxstart 2017-10-09
                    minstart 2017-10-09
                    maxend 2017-10-13
                    minend 2017-10-13
                    charge 47887840.0 onend
                }


                task task892 "دیوارچینی هبلکس اتاق برق بلوک 13" {
                    milestone
                    priority 500
                    complete 100
                    maxstart 2017-10-13
                    minstart 2017-10-13
                    maxend 2017-10-16
                    minend 2017-10-16
                    charge 61570080.0 onend
                }


                task task893 "نصب پیش فریم اتاق برق بلوک 13" {
                    milestone
                    priority 500
                    complete 100
                    maxstart 2017-12-09
                    minstart 2017-12-09
                    maxend 2017-12-11
                    minend 2017-12-11
                    charge 1784640.0 onend
                }

            }


            task task894 "تاسیسات برقی فاز 1" {
                priority 500
                complete 100
                maxstart 2017-12-18
                minstart 2017-12-18
                maxend 2018-01-27
                minend 2018-01-27
                start 2017-12-18
                end 2018-01-27
                charge 39800498.0 onend

                task task895 "سوراخکاری و شیارزنی اتاق برق بلوک 13" {
                    milestone
                    priority 500
                    complete 100
                    maxstart 2018-01-02
                    minstart 2018-01-02
                    maxend 2018-01-03
                    minend 2018-01-03
                    charge 380000.0 onend
                }


                task task896 "ساپورت زنی اتاق برق بلوک 13" {
                    milestone
                    priority 500
                    complete 100
                    maxstart 2017-12-18
                    minstart 2017-12-18
                    maxend 2017-12-20
                    minend 2017-12-20
                    charge 8020000.0 onend
                }


                task task897 "سینی کابل اتاق برق بلوک 13" {
                    milestone
                    priority 500
                    complete 100
                    maxstart 2017-12-20
                    minstart 2017-12-20
                    maxend 2017-12-22
                    minend 2017-12-22
                    charge 11007900.0 onend
                }


                task task898 "لوله گذاری صوت، روشنایی و اعلام حریق اتاق برق بلوک 13" {
                    milestone
                    priority 500
                    complete 100
                    maxstart 2018-01-06
                    minstart 2018-01-06
                    maxend 2018-01-07
                    minend 2018-01-07
                    charge 10804598.0 onend
                }


                task task899 "کابل کشی ولتاژ ضعیف اتاق برق بلوک 13" {
                    milestone
                    priority 500
                    complete 100
                    maxstart 2018-01-25
                    minstart 2018-01-25
                    maxend 2018-01-27
                    minend 2018-01-27
                    charge 9588000.0 onend
                }

            }


            task task900 "نازک کاری" {
                priority 500
                maxstart 2018-05-11
                minstart 2018-03-27
                maxend 2018-05-11
                minend 2018-04-05
                start 2018-03-27
                end 2018-04-05
                charge 240628980.0 onend

                task task901 "زیرسازی سقف کاذب اتاق برق بلوک 13" {
                    milestone
                    priority 500
                    maxstart 2018-05-11
                    minstart 2018-03-27
                    maxend 2018-05-11
                    minend 2018-03-29
                    charge 12492480.0 onend
                }


                task task902 "نصب پنل سقف کاذب اتاق برق بلوک 13" {
                    milestone
                    priority 500
                    maxstart 2018-05-11
                    minstart 2018-03-29
                    maxend 2018-05-11
                    minend 2018-03-30
                    charge 11655940.0 onend
                }


                task task903 "نصب درب و پنجره اتاق برق بلوک 13" {
                    milestone
                    priority 500
                    maxstart 2018-05-11
                    minstart 2018-03-30
                    maxend 2018-05-11
                    minend 2018-04-01
                    charge 37180000.0 onend
                }


                task task904 "کفسازی اتاق برق بلوک 13" {
                    milestone
                    priority 500
                    maxstart 2018-05-11
                    minstart 2018-03-30
                    maxend 2018-05-11
                    minend 2018-04-01
                    charge 7528960.0 onend
                }


                task task905 "رنگ آمیزی اتاق برق بلوک 13" {
                    milestone
                    priority 500
                    maxstart 2018-05-11
                    minstart 2018-04-01
                    maxend 2018-05-11
                    minend 2018-04-05
                    charge 171771600.0 onend
                }

            }


            task task906 "تاسیسات برقی فاز 2" {
                priority 500
                maxstart 2018-05-11
                minstart 2018-05-11
                maxend 2018-05-11
                minend 2018-05-11
                start 2018-05-11
                end 2018-05-11
                charge 7821312.0 onend

                task task907 "نصب کلید و پریز اتاق برق بلوک 13" {
                    milestone
                    priority 500
                    maxstart 2018-05-11
                    minstart 2018-05-11
                    maxend 2018-05-11
                    minend 2018-05-11
                    charge 588612.0 onend
                }


                task task908 "نصب تجهیزات روشنایی اتاق برق بلوک 13" {
                    milestone
                    priority 500
                    maxstart 2018-05-11
                    minstart 2018-05-11
                    maxend 2018-05-11
                    minend 2018-05-11
                    charge 2380710.0 onend
                }


                task task909 "سرسیم بندی تابلو اتاق برق بلوک 13" {
                    milestone
                    priority 500
                    maxstart 2018-05-11
                    minstart 2018-05-11
                    maxend 2018-05-11
                    minend 2018-05-11
                    charge 4851990.0 onend
                }

            }

        }


        task task910 "اتاق استراحت" {
            priority 500
            complete 20
            maxstart 2017-10-13
            minstart 2017-10-13
            maxend 2018-05-11
            minend 2018-05-11
            start 2017-10-13
            end 2018-05-11
            charge 101875558.0 onend

            task task911 "سفتکاری" {
                priority 500
                complete 100
                maxstart 2017-10-13
                minstart 2017-10-13
                maxend 2017-12-12
                minend 2017-12-12
                start 2017-10-13
                end 2017-12-12
                charge 35157408.0 onend

                task task912 "نصب وال پست اتاق استراحت بلوک 13" {
                    milestone
                    priority 500
                    complete 100
                    maxstart 2017-10-13
                    minstart 2017-10-13
                    maxend 2017-10-15
                    minend 2017-10-15
                    charge 14990976.0 onend
                }


                task task913 "دیوارچینی هبلکس اتاق استراحت بلوک 13" {
                    milestone
                    priority 500
                    complete 100
                    maxstart 2017-10-15
                    minstart 2017-10-15
                    maxend 2017-10-17
                    minend 2017-10-17
                    charge 19274112.0 onend
                }


                task task914 "نصب پیش فریم اتاق استراحت بلوک 13" {
                    milestone
                    priority 500
                    complete 100
                    maxstart 2017-12-11
                    minstart 2017-12-11
                    maxend 2017-12-12
                    minend 2017-12-12
                    charge 892320.0 onend
                }

            }


            task task915 "تاسیسات برقی فاز 1" {
                priority 500
                complete 100
                maxstart 2018-01-03
                minstart 2018-01-03
                maxend 2018-01-29
                minend 2018-01-29
                start 2018-01-03
                end 2018-01-29
                charge 16399554.0 onend

                task task916 "سوراخکاری و شیارزنی اتاق استراحت بلوک 13" {
                    milestone
                    priority 500
                    complete 100
                    maxstart 2018-01-03
                    minstart 2018-01-03
                    maxend 2018-01-04
                    minend 2018-01-04
                    charge 1140000.0 onend
                }


                task task917 "لوله گذاری صوت، روشنایی و اعلام حریق اتاق استراحت بلوک 13" {
                    milestone
                    priority 500
                    complete 100
                    maxstart 2018-01-07
                    minstart 2018-01-07
                    maxend 2018-01-08
                    minend 2018-01-08
                    charge 5953554.0 onend
                }


                task task918 "کابل کشی ولتاژ ضعیف اتاق استراحت بلوک 13" {
                    milestone
                    priority 500
                    complete 100
                    maxstart 2018-01-27
                    minstart 2018-01-27
                    maxend 2018-01-29
                    minend 2018-01-29
                    charge 9306000.0 onend
                }

            }


            task task919 "نازک کاری" {
                priority 500
                maxstart 2018-05-11
                minstart 2018-03-29
                maxend 2018-05-11
                minend 2018-04-03
                start 2018-03-29
                end 2018-04-03
                charge 47099642.0 onend

                task task920 "زیرسازی سقف کاذب اتاق استراحت بلوک 13" {
                    milestone
                    priority 500
                    maxstart 2018-05-11
                    minstart 2018-03-29
                    maxend 2018-05-11
                    minend 2018-03-31
                    charge 11243232.0 onend
                }


                task task921 "نصب پنل سقف کاذب اتاق استراحت بلوک 13" {
                    milestone
                    priority 500
                    maxstart 2018-05-11
                    minstart 2018-03-31
                    maxend 2018-05-11
                    minend 2018-04-01
                    charge 10490346.0 onend
                }


                task task922 "نصب درب و پنجره اتاق استراحت بلوک 13" {
                    milestone
                    priority 500
                    maxstart 2018-05-11
                    minstart 2018-04-01
                    maxend 2018-05-11
                    minend 2018-04-02
                    charge 18590000.0 onend
                }


                task task923 "کفسازی اتاق استراحت بلوک 13" {
                    milestone
                    priority 500
                    maxstart 2018-05-11
                    minstart 2018-04-01
                    maxend 2018-05-11
                    minend 2018-04-03
                    charge 6776064.0 onend
                }

            }


            task task924 "تاسیسات برقی فاز 2" {
                priority 500
                maxstart 2018-05-11
                minstart 2018-05-11
                maxend 2018-05-11
                minend 2018-05-11
                start 2018-05-11
                end 2018-05-11
                charge 3218954.0 onend

                task task925 "نصب کلید و پریز اتاق استراحت بلوک 13" {
                    milestone
                    priority 500
                    maxstart 2018-05-11
                    minstart 2018-05-11
                    maxend 2018-05-11
                    minend 2018-05-11
                    charge 441459.0 onend
                }


                task task926 "نصب تجهیزات روشنایی اتاق استراحت بلوک 13" {
                    milestone
                    priority 500
                    maxstart 2018-05-11
                    minstart 2018-05-11
                    maxend 2018-05-11
                    minend 2018-05-11
                    charge 2777495.0 onend
                }

            }

        }


        task task927 "انبار" {
            priority 500
            complete 13
            maxstart 2017-12-12
            minstart 2017-12-12
            maxend 2018-05-11
            minend 2018-04-06
            start 2017-12-12
            end 2018-04-06
            charge 99634972.0 onend

            task task928 "سفتکاری" {
                priority 500
                complete 100
                maxstart 2017-12-12
                minstart 2017-12-12
                maxend 2017-12-13
                minend 2017-12-13
                start 2017-12-12
                end 2017-12-13
                charge 892320.0 onend

                task task929 "نصب پیش فریم انبار بلوک 13" {
                    milestone
                    priority 500
                    complete 100
                    maxstart 2017-12-12
                    minstart 2017-12-12
                    maxend 2017-12-13
                    minend 2017-12-13
                    charge 892320.0 onend
                }

            }


            task task930 "نازک کاری" {
                priority 500
                maxstart 2018-05-11
                minstart 2018-03-31
                maxend 2018-05-11
                minend 2018-04-06
                start 2018-03-31
                end 2018-04-06
                charge 98742652.0 onend

                task task931 "زیرسازی سقف کاذب انبار بلوک 13" {
                    milestone
                    priority 500
                    maxstart 2018-05-11
                    minstart 2018-03-31
                    maxend 2018-05-11
                    minend 2018-04-01
                    charge 4996992.0 onend
                }


                task task932 "نصب پنل سقف کاذب انبار بلوک 13" {
                    milestone
                    priority 500
                    maxstart 2018-05-11
                    minstart 2018-04-01
                    maxend 2018-05-11
                    minend 2018-04-02
                    charge 4662376.0 onend
                }


                task task933 "نصب درب و پنجره انبار بلوک 13" {
                    milestone
                    priority 500
                    maxstart 2018-05-11
                    minstart 2018-04-02
                    maxend 2018-05-11
                    minend 2018-04-03
                    charge 18590000.0 onend
                }


                task task934 "کفسازی انبار بلوک 13" {
                    milestone
                    priority 500
                    maxstart 2018-05-11
                    minstart 2018-04-02
                    maxend 2018-05-11
                    minend 2018-04-04
                    charge 3011584.0 onend
                }


                task task935 "رنگ آمیزی انبار بلوک 13" {
                    milestone
                    priority 500
                    maxstart 2018-05-11
                    minstart 2018-04-04
                    maxend 2018-05-11
                    minend 2018-04-06
                    charge 67481700.0 onend
                }

            }

        }

    }


    task task936 "بلوک 3" {
        priority 500
        complete 61
        maxstart 2017-06-25
        minstart 2017-06-25
        maxend 2018-05-11
        minend 2018-05-11
        start 2017-06-25
        end 2018-05-11
        charge 11990539784.5 onend

        task task937 "شیب بندی بام" {
            priority 500
            complete 100
            maxstart 2017-09-19
            minstart 2017-09-19
            maxend 2017-11-21
            minend 2017-11-21
            start 2017-09-19
            end 2017-11-21
            charge 653661428.5 onend

            task task938 "سفتکاری" {
                priority 500
                complete 100
                maxstart 2017-09-19
                minstart 2017-09-19
                maxend 2017-11-21
                minend 2017-11-21
                start 2017-09-19
                end 2017-11-21
                charge 653661428.5 onend

                task task939 "عایق حرارتی شیب بندی بام بلوک 3" {
                    milestone
                    priority 500
                    complete 100
                    maxstart 2017-09-19
                    minstart 2017-09-19
                    maxend 2017-10-03
                    minend 2017-10-03
                    charge 99939840.0 onend
                }


                task task940 "کروم بندی و فوم بتن شیب بندی بام بلوک 3" {
                    milestone
                    priority 500
                    complete 100
                    maxstart 2017-10-03
                    minstart 2017-10-03
                    maxend 2017-10-17
                    minend 2017-10-17
                    charge 209873664.0 onend
                }


                task task941 "عایق رطوبتی و لایه محافظ شیب بندی بام بلوک 3" {
                    milestone
                    priority 500
                    complete 100
                    maxstart 2017-10-17
                    minstart 2017-10-17
                    maxend 2017-10-31
                    minend 2017-10-31
                    charge 83055380.0 onend
                }


                task task942 "موزاییک شیب بندی بام بلوک 3" {
                    milestone
                    priority 500
                    complete 100
                    maxstart 2017-10-31
                    minstart 2017-10-31
                    maxend 2017-11-14
                    minend 2017-11-14
                    charge 151200000.0 onend
                }


                task task943 "گاترشیب بندی بام بلوک 3" {
                    milestone
                    priority 500
                    complete 100
                    maxstart 2017-11-07
                    minstart 2017-11-07
                    maxend 2017-11-21
                    minend 2017-11-21
                    charge 2514144.5 onend
                }


                task task944 "آهن کشی ودیوارچینی درزژوئن شیب بندی بام بلوک 3" {
                    milestone
                    priority 500
                    complete 100
                    maxstart 2017-10-03
                    minstart 2017-10-03
                    maxend 2017-10-05
                    minend 2017-10-05
                    charge 107078400.0 onend
                }

            }

        }


        task task945 "راهروها" {
            priority 500
            complete 65
            maxstart 2017-06-25
            minstart 2017-06-25
            maxend 2018-05-11
            minend 2018-05-11
            start 2017-06-25
            end 2018-05-11
            charge 6328891206.0 onend

            task task946 "سفتکاری" {
                priority 500
                complete 100
                maxstart 2017-09-16
                minstart 2017-09-16
                maxend 2017-12-16
                minend 2017-12-16
                start 2017-09-16
                end 2017-12-16
                charge 498955600.0 onend

                task task947 "نصب وال پست راهرو بلوک 3" {
                    milestone
                    priority 500
                    complete 100
                    maxstart 2017-09-16
                    minstart 2017-09-16
                    maxend 2017-09-28
                    minend 2017-09-28
                    charge 191551360.0 onend
                }


                task task948 "دیوارچینی هبلکس راهرو بلوک 3" {
                    milestone
                    priority 500
                    complete 100
                    maxstart 2017-09-28
                    minstart 2017-09-28
                    maxend 2017-10-10
                    minend 2017-10-10
                    charge 246280320.0 onend
                }


                task task949 "نصب پیش فریم راهرو بلوک 3" {
                    milestone
                    priority 500
                    complete 100
                    maxstart 2017-12-13
                    minstart 2017-12-13
                    maxend 2017-12-16
                    minend 2017-12-16
                    charge 892320.0 onend
                }


                task task950 "آهن کشی ودیوارچینی درزژوئن راهرو بلوک 3" {
                    milestone
                    priority 500
                    complete 100
                    maxstart 2017-10-05
                    minstart 2017-10-05
                    maxend 2017-10-25
                    minend 2017-10-25
                    charge 60231600.0 onend
                }

            }


            task task951 "تاسیسات مکانیکی فاز 1" {
                priority 500
                complete 99
                maxstart 2017-06-25
                minstart 2017-06-25
                maxend 2018-01-23
                minend 2018-01-23
                start 2017-06-25
                end 2018-01-23
                charge 1748812564.0 onend

                task task952 "ساخت کانال راهرو بلوک 3" {
                    milestone
                    priority 500
                    complete 100
                    maxstart 2017-10-17
                    minstart 2017-10-17
                    maxend 2017-10-22
                    minend 2017-10-22
                    charge 201307392.0 onend
                }


                task task953 "ساپورت زنی و شاسی کشی راهرو بلوک 3" {
                    milestone
                    priority 500
                    complete 100
                    maxstart 2017-06-25
                    minstart 2017-06-25
                    maxend 2017-07-03
                    minend 2017-07-03
                    charge 321532640.0 onend
                }


                task task954 "نصب کانال راهرو بلوک 3" {
                    milestone
                    priority 500
                    complete 100
                    maxstart 2017-11-25
                    minstart 2017-11-25
                    maxend 2017-12-03
                    minend 2017-12-03
                    charge 201307392.0 onend
                }


                task task955 "عایق کانال راهرو بلوک 3" {
                    milestone
                    priority 500
                    complete 99
                    maxstart 2017-12-03
                    minstart 2017-12-03
                    maxend 2017-12-07
                    minend 2017-12-07
                    charge 388032000.0 onend
                }


                task task956 "لوله سرد و گرم فن کوئل راهرو بلوک 3" {
                    milestone
                    priority 500
                    complete 100
                    maxstart 2018-01-01
                    minstart 2018-01-01
                    maxend 2018-01-04
                    minend 2018-01-04
                    charge 62462400.0 onend
                }


                task task957 "لوله سرد و گرم مصرفی راهرو بلوک 3" {
                    milestone
                    priority 500
                    complete 100
                    maxstart 2017-12-29
                    minstart 2017-12-29
                    maxend 2018-01-01
                    minend 2018-01-01
                    charge 60231600.0 onend
                }


                task task958 "لوله اطفاء حریق راهرو بلوک 3" {
                    milestone
                    priority 500
                    complete 99
                    maxstart 2018-01-13
                    minstart 2018-01-13
                    maxend 2018-01-20
                    minend 2018-01-20
                    charge 223303080.0 onend
                }


                task task959 "لوله فاضلاب و ونت راهرو بلوک 3" {
                    milestone
                    priority 500
                    complete 100
                    maxstart 2017-12-22
                    minstart 2017-12-22
                    maxend 2017-12-23
                    minend 2017-12-23
                    charge 18961800.0 onend
                }


                task task960 "لوله آب باران راهرو بلوک 3" {
                    milestone
                    priority 500
                    complete 100
                    maxstart 2017-10-10
                    minstart 2017-10-10
                    maxend 2017-10-17
                    minend 2017-10-17
                    charge 31603000.0 onend
                }


                task task961 "عایق لوله راهرو بلوک 3" {
                    milestone
                    priority 500
                    complete 99
                    maxstart 2018-01-04
                    minstart 2018-01-04
                    maxend 2018-01-08
                    minend 2018-01-08
                    charge 210922140.0 onend
                }


                task task962 "تست لوله ها راهرو بلوک 3" {
                    milestone
                    priority 500
                    complete 100
                    maxstart 2018-01-20
                    minstart 2018-01-20
                    maxend 2018-01-23
                    minend 2018-01-23
                    charge 29149120.0 onend
                }

            }


            task task963 "تاسیسات برقی فاز 1" {
                priority 500
                complete 100
                maxstart 2017-10-01
                minstart 2017-10-01
                maxend 2018-01-31
                minend 2018-01-31
                start 2017-10-01
                end 2018-01-31
                charge 1427384367.0 onend

                task task964 "سوراخکاری و شیارزنی راهرو بلوک 3" {
                    milestone
                    priority 500
                    complete 100
                    maxstart 2018-01-04
                    minstart 2018-01-04
                    maxend 2018-01-16
                    minend 2018-01-16
                    charge 3800000.0 onend
                }


                task task965 "لوله گذاری صوت، روشنایی و اعلام حریق راهرو بلوک 3" {
                    milestone
                    priority 500
                    complete 100
                    maxstart 2017-10-01
                    minstart 2017-10-01
                    maxend 2017-10-13
                    minend 2017-10-13
                    charge 377830177.0 onend
                }


                task task966 "کابل کشی ولتاژ ضعیف راهرو بلوک 3" {
                    milestone
                    priority 500
                    complete 100
                    maxstart 2018-01-16
                    minstart 2018-01-16
                    maxend 2018-01-31
                    minend 2018-01-31
                    charge 718348000.0 onend
                }


                task task967 "ساپورت زنی راهرو بلوک 3" {
                    milestone
                    priority 500
                    complete 100
                    maxstart 2017-12-20
                    minstart 2017-12-20
                    maxend 2018-01-01
                    minend 2018-01-01
                    charge 40100000.0 onend
                }


                task task968 "سینی کابل راهرو بلوک 3" {
                    milestone
                    priority 500
                    complete 100
                    maxstart 2018-01-01
                    minstart 2018-01-01
                    maxend 2018-01-16
                    minend 2018-01-16
                    charge 287306190.0 onend
                }

            }


            task task969 "نازک کاری" {
                priority 500
                complete 84
                maxstart 2018-01-31
                minstart 2018-01-31
                maxend 2018-05-11
                minend 2018-04-01
                start 2018-01-31
                end 2018-04-01
                charge 2109297080.0 onend

                task task970 "زیرسازی سقف کاذب راهرو بلوک 3" {
                    milestone
                    priority 500
                    complete 99
                    maxstart 2018-01-31
                    minstart 2018-01-31
                    maxend 2018-02-28
                    minend 2018-02-28
                    charge 824503680.0 onend
                }


                task task971 "نصب پنل سقف کاذب راهرو بلوک 3" {
                    milestone
                    priority 500
                    complete 99
                    maxstart 2018-02-16
                    minstart 2018-02-16
                    maxend 2018-03-02
                    minend 2018-03-02
                    charge 769292040.0 onend
                }


                task task972 "کفسازی راهرو بلوک 3" {
                    milestone
                    priority 500
                    complete 94
                    maxstart 2018-03-02
                    minstart 2018-03-02
                    maxend 2018-04-28
                    minend 2018-03-22
                    charge 496911360.0 onend
                }


                task task973 "نصب درب و پنجره راهرو بلوک 3" {
                    milestone
                    priority 500
                    maxstart 2018-05-11
                    minstart 2018-03-22
                    maxend 2018-05-11
                    minend 2018-04-01
                    charge 18590000.0 onend
                }

            }


            task task974 "تاسیسات مکانیکی فاز 2" {
                priority 500
                maxstart 2018-04-28
                minstart 2018-04-25
                maxend 2018-05-11
                minend 2018-05-11
                start 2018-04-25
                end 2018-05-11
                charge 125106800.0 onend

                task task975 "نصب دمپر و فایر دمپر راهرو بلوک 3" {
                    milestone
                    priority 500
                    maxstart 2018-05-11
                    minstart 2018-05-07
                    maxend 2018-05-11
                    minend 2018-05-11
                    charge 16000000.0 onend
                }


                task task976 "نصب جعبه و کپسول آتش نشانی راهرو بلوک 3" {
                    milestone
                    priority 500
                    maxstart 2018-05-11
                    minstart 2018-05-11
                    maxend 2018-05-11
                    minend 2018-05-11
                    charge 59920000.0 onend
                }


                task task977 "نصب دریچه هوا راهرو بلوک 3" {
                    milestone
                    priority 500
                    maxstart 2018-04-28
                    minstart 2018-04-25
                    maxend 2018-05-11
                    minend 2018-05-11
                    charge 39000000.0 onend
                }


                task task978 "تست تاسیسات مکانیکی راهرو بلوک 3" {
                    milestone
                    priority 500
                    maxstart 2018-05-11
                    minstart 2018-05-11
                    maxend 2018-05-11
                    minend 2018-05-11
                    charge 10186800.0 onend
                }

            }


            task task979 "تاسیسات برقی فاز 2" {
                priority 500
                maxstart 2018-05-11
                minstart 2018-05-10
                maxend 2018-05-11
                minend 2018-05-11
                start 2018-05-10
                end 2018-05-11
                charge 419334795.0 onend

                task task980 "نصب تجهیزات صوت راهرو بلوک 3" {
                    milestone
                    priority 500
                    maxstart 2018-05-11
                    minstart 2018-05-11
                    maxend 2018-05-11
                    minend 2018-05-11
                    charge 257843300.0 onend
                }


                task task981 "نصب تجهیزات روشنایی راهرو بلوک 3" {
                    milestone
                    priority 500
                    maxstart 2018-05-11
                    minstart 2018-05-10
                    maxend 2018-05-11
                    minend 2018-05-11
                    charge 161491495.0 onend
                }

            }

        }


        task task982 "لابی  آسانسور" {
            priority 500
            complete 68
            maxstart 2017-11-30
            minstart 2017-11-30
            maxend 2018-05-11
            minend 2018-05-11
            start 2017-11-30
            end 2018-05-11
            charge 142217034.0 onend

            task task983 "تاسیسات برقی فاز 1" {
                priority 500
                complete 100
                maxstart 2017-11-30
                minstart 2017-11-30
                maxend 2018-01-06
                minend 2018-01-06
                start 2017-11-30
                end 2018-01-06
                charge 16294542.0 onend

                task task984 "سوراخکاری و شیارزنی لابی آسانسور بلوک 3" {
                    milestone
                    priority 500
                    complete 100
                    maxstart 2017-11-30
                    minstart 2017-11-30
                    maxend 2017-12-08
                    minend 2017-12-08
                    charge 760000.0 onend
                }


                task task985 "لوله گذاری صوت، روشنایی و اعلام حریق لابی آسانسور بلوک 3" {
                    milestone
                    priority 500
                    complete 100
                    maxstart 2017-12-29
                    minstart 2017-12-29
                    maxend 2018-01-06
                    minend 2018-01-06
                    charge 4630542.0 onend
                }


                task task986 "کابل کشی ولتاژ ضعیف لابی آسانسور بلوک 3" {
                    milestone
                    priority 500
                    complete 100
                    maxstart 2017-12-03
                    minstart 2017-12-03
                    maxend 2017-12-17
                    minend 2017-12-17
                    charge 10904000.0 onend
                }

            }


            task task987 "نازک کاری" {
                priority 500
                complete 69
                maxstart 2018-02-28
                minstart 2018-02-28
                maxend 2018-05-11
                minend 2018-03-30
                start 2018-02-28
                end 2018-03-30
                charge 123541782.0 onend

                task task988 "زیرسازی سقف کاذب لابی آسانسور بلوک 3" {
                    milestone
                    priority 500
                    complete 100
                    maxstart 2018-02-28
                    minstart 2018-02-28
                    maxend 2018-03-10
                    minend 2018-03-10
                    charge 48720672.0 onend
                }


                task task989 "نصب پنل سقف کاذب لابی آسانسور بلوک 3" {
                    milestone
                    priority 500
                    complete 100
                    maxstart 2018-03-10
                    minstart 2018-03-10
                    maxend 2018-03-20
                    minend 2018-03-20
                    charge 45458166.0 onend
                }


                task task990 "کفسازی لابی آسانسور بلوک 3" {
                    milestone
                    priority 500
                    complete 8
                    maxstart 2018-03-20
                    minstart 2018-03-20
                    maxend 2018-05-11
                    minend 2018-03-30
                    charge 29362944.0 onend
                }

            }


            task task991 "تاسیسات برقی فاز 2" {
                priority 500
                maxstart 2018-05-11
                minstart 2018-05-11
                maxend 2018-05-11
                minend 2018-05-11
                start 2018-05-11
                end 2018-05-11
                charge 2380710.0 onend

                task task992 "نصب تجهیزات روشنایی لابی آسانسور بلوک 3" {
                    milestone
                    priority 500
                    maxstart 2018-05-11
                    minstart 2018-05-11
                    maxend 2018-05-11
                    minend 2018-05-11
                    charge 2380710.0 onend
                }

            }

        }


        task task993 "سرویس های بهداشتی" {
            priority 500
            complete 42
            maxstart 2017-09-28
            minstart 2017-09-28
            maxend 2018-05-11
            minend 2018-05-11
            start 2017-09-28
            end 2018-05-11
            charge 1387851475.0 onend

            task task994 "سفتکاری" {
                priority 500
                complete 100
                maxstart 2017-09-28
                minstart 2017-09-28
                maxend 2018-01-09
                minend 2018-01-09
                start 2017-09-28
                end 2018-01-09
                charge 375499344.0 onend

                task task995 "نصب وال پست سرویس بهداشتی بلوک 3" {
                    milestone
                    priority 500
                    complete 100
                    maxstart 2017-09-28
                    minstart 2017-09-28
                    maxend 2017-10-06
                    minend 2017-10-06
                    charge 118678560.0 onend
                }


                task task996 "دیوارچینی هبلکس سرویس بهداشتی بلوک 3" {
                    milestone
                    priority 500
                    complete 100
                    maxstart 2017-10-06
                    minstart 2017-10-06
                    maxend 2017-10-14
                    minend 2017-10-14
                    charge 152586720.0 onend
                }


                task task997 "شیب بندی سرویس بهداشتی بلوک 3" {
                    milestone
                    priority 500
                    complete 100
                    maxstart 2017-12-30
                    minstart 2017-12-30
                    maxend 2018-01-02
                    minend 2018-01-02
                    charge 44972928.0 onend
                }


                task task998 "عایق رطوبتی سرویس بهداشتی بلوک 3" {
                    milestone
                    priority 500
                    complete 100
                    maxstart 2018-01-02
                    minstart 2018-01-02
                    maxend 2018-01-09
                    minend 2018-01-09
                    charge 59261136.0 onend
                }

            }


            task task999 "تاسیسات مکانیکی فاز 1" {
                priority 500
                complete 100
                maxstart 2017-10-25
                minstart 2017-10-25
                maxend 2018-01-07
                minend 2018-01-07
                start 2017-10-25
                end 2018-01-07
                charge 296755888.0 onend

                task task1000 "ساخت کانال سرویس بهداشتی بلوک 3" {
                    milestone
                    priority 500
                    complete 100
                    maxstart 2017-10-25
                    minstart 2017-10-25
                    maxend 2017-10-26
                    minend 2017-10-26
                    charge 10707840.0 onend
                }


                task task1001 "ساپورت زنی و شاسی کشی سرویس بهداشتی بلوک 3" {
                    milestone
                    priority 500
                    complete 100
                    maxstart 2017-11-25
                    minstart 2017-11-25
                    maxend 2017-11-27
                    minend 2017-11-27
                    charge 17102800.0 onend
                }


                task task1002 "نصب کانال سرویس بهداشتی بلوک 3" {
                    milestone
                    priority 500
                    complete 100
                    maxstart 2017-11-27
                    minstart 2017-11-27
                    maxend 2017-11-29
                    minend 2017-11-29
                    charge 10707840.0 onend
                }


                task task1003 "لوله سرد و گرم مصرفی سرویس بهداشتی بلوک 3" {
                    milestone
                    priority 500
                    complete 100
                    maxstart 2018-01-01
                    minstart 2018-01-01
                    maxend 2018-01-04
                    minend 2018-01-04
                    charge 89678160.0 onend
                }


                task task1004 "لوله فاضلاب و ونت سرویس بهداشتی بلوک 3" {
                    milestone
                    priority 500
                    complete 100
                    maxstart 2017-12-23
                    minstart 2017-12-23
                    maxend 2017-12-26
                    minend 2017-12-26
                    charge 20857980.0 onend
                }


                task task1005 "عایق لوله سرویس بهداشتی بلوک 3" {
                    milestone
                    priority 500
                    complete 100
                    maxstart 2018-01-04
                    minstart 2018-01-04
                    maxend 2018-01-07
                    minend 2018-01-07
                    charge 139001148.0 onend
                }


                task task1006 "تست لوله ها سرویس بهداشتی بلوک 3" {
                    milestone
                    priority 500
                    complete 100
                    maxstart 2018-01-04
                    minstart 2018-01-04
                    maxend 2018-01-06
                    minend 2018-01-06
                    charge 8700120.0 onend
                }

            }


            task task1007 "تاسیسات برقی فاز 1" {
                priority 500
                complete 99
                maxstart 2017-09-30
                minstart 2017-09-30
                maxend 2017-12-24
                minend 2017-12-24
                start 2017-09-30
                end 2017-12-24
                charge 53813391.0 onend

                task task1008 "سوراخکاری و شیارزنی سرویس بهداشتی بلوک 3" {
                    milestone
                    priority 500
                    complete 100
                    maxstart 2017-12-08
                    minstart 2017-12-08
                    maxend 2017-12-11
                    minend 2017-12-11
                    charge 950000.0 onend
                }


                task task1009 "لوله گذاری صوت، روشنایی و اعلام حریق سرویس بهداشتی بلوک 3" {
                    milestone
                    priority 500
                    complete 100
                    maxstart 2017-09-30
                    minstart 2017-09-30
                    maxend 2017-10-04
                    minend 2017-10-04
                    charge 15545391.0 onend
                }


                task task1010 "کابل کشی ولتاژ ضعیف سرویس بهداشتی بلوک 3" {
                    milestone
                    priority 500
                    complete 99
                    maxstart 2017-12-17
                    minstart 2017-12-17
                    maxend 2017-12-24
                    minend 2017-12-24
                    charge 37318000.0 onend
                }

            }


            task task1011 "نازک کاری" {
                priority 500
                complete 48
                maxstart 2018-01-05
                minstart 2018-01-05
                maxend 2018-05-11
                minend 2018-04-07
                start 2018-01-05
                end 2018-04-07
                charge 355150928.0 onend

                task task1012 "پوشش دیوارها سرویس بهداشتی بلوک 3" {
                    milestone
                    priority 500
                    complete 100
                    maxstart 2018-01-05
                    minstart 2018-01-05
                    maxend 2018-01-10
                    minend 2018-01-10
                    charge 55212360.0 onend
                }


                task task1013 "زیرسازی سقف کاذب سرویس بهداشتی بلوک 3" {
                    milestone
                    priority 500
                    complete 100
                    maxstart 2018-03-10
                    minstart 2018-03-10
                    maxend 2018-03-16
                    minend 2018-03-16
                    charge 44972928.0 onend
                }


                task task1014 "نصب پنل سقف کاذب سرویس بهداشتی بلوک 3" {
                    milestone
                    priority 500
                    complete 48
                    maxstart 2018-03-16
                    minstart 2018-03-16
                    maxend 2018-05-04
                    minend 2018-03-26
                    charge 41961384.0 onend
                }


                task task1015 "کفسازی سرویس بهداشتی بلوک 3" {
                    milestone
                    priority 500
                    maxstart 2018-05-04
                    minstart 2018-03-26
                    maxend 2018-05-09
                    minend 2018-03-31
                    charge 27104256.0 onend
                }


                task task1016 "نصب درب و پنجره سرویس بهداشتی بلوک 3" {
                    milestone
                    priority 500
                    maxstart 2018-05-11
                    minstart 2018-03-31
                    maxend 2018-05-11
                    minend 2018-04-07
                    charge 185900000.0 onend
                }

            }


            task task1017 "تاسیسات مکانیکی فاز 2" {
                priority 500
                maxstart 2018-05-11
                minstart 2018-04-30
                maxend 2018-05-11
                minend 2018-05-11
                start 2018-04-30
                end 2018-05-11
                charge 281113000.0 onend

                task task1018 "نصب شیرآلات و تجهیزات بهداشتی سرویس بهداشتی بلوک 3" {
                    milestone
                    priority 500
                    maxstart 2018-05-11
                    minstart 2018-05-11
                    maxend 2018-05-11
                    minend 2018-05-11
                    charge 220000000.0 onend
                }


                task task1019 "نصب دمپر و فایر رمپر سرویس بهداشتی بلوک 3" {
                    milestone
                    priority 500
                    maxstart 2018-05-11
                    minstart 2018-04-30
                    maxend 2018-05-11
                    minend 2018-05-04
                    charge 24000000.0 onend
                }


                task task1020 "نصب دریچه هوا سرویس بهداشتی بلوک 3" {
                    milestone
                    priority 500
                    maxstart 2018-05-11
                    minstart 2018-05-10
                    maxend 2018-05-11
                    minend 2018-05-11
                    charge 23400000.0 onend
                }


                task task1021 "تست تاسیسات مکانیکی سرویس بهداشتی بلوک 3" {
                    milestone
                    priority 500
                    maxstart 2018-05-11
                    minstart 2018-05-11
                    maxend 2018-05-11
                    minend 2018-05-11
                    charge 13713000.0 onend
                }

            }


            task task1022 "تاسیسات برقی فاز 2" {
                priority 500
                maxstart 2018-05-09
                minstart 2018-05-05
                maxend 2018-05-11
                minend 2018-05-11
                start 2018-05-05
                end 2018-05-11
                charge 25518924.0 onend

                task task1023 "نصب کلید و پریز سرویس بهداشتی بلوک 3" {
                    milestone
                    priority 500
                    maxstart 2018-05-09
                    minstart 2018-05-05
                    maxend 2018-05-11
                    minend 2018-05-11
                    charge 441459.0 onend
                }


                task task1024 "نصب تجهیزات صوت سرویس بهداشتی بلوک 3" {
                    milestone
                    priority 500
                    maxstart 2018-05-11
                    minstart 2018-05-11
                    maxend 2018-05-11
                    minend 2018-05-11
                    charge 13570700.0 onend
                }


                task task1025 "نصب تجهیزات روشنایی سرویس بهداشتی بلوک 3" {
                    milestone
                    priority 500
                    maxstart 2018-05-11
                    minstart 2018-05-11
                    maxend 2018-05-11
                    minend 2018-05-11
                    charge 11506765.0 onend
                }

            }

        }


        task task1026 "دفتر تجاری" {
            priority 500
            complete 100
            maxstart 2017-10-06
            minstart 2017-10-06
            maxend 2018-01-26
            minend 2018-01-26
            start 2017-10-06
            end 2018-01-26
            charge 1979058794.0 onend

            task task1027 "سفتکاری" {
                priority 500
                complete 100
                maxstart 2017-10-06
                minstart 2017-10-06
                maxend 2017-10-30
                minend 2017-10-30
                start 2017-10-06
                end 2017-10-30
                charge 541534136.0 onend

                task task1028 "نصب وال پست دفتر تجاری بلوک 3" {
                    milestone
                    priority 500
                    complete 100
                    maxstart 2017-10-06
                    minstart 2017-10-06
                    maxend 2017-10-18
                    minend 2017-10-18
                    charge 238502264.0 onend
                }


                task task1029 "دیوارچینی هبلکس دفتر تجاری بلوک 3" {
                    milestone
                    priority 500
                    complete 100
                    maxstart 2017-10-18
                    minstart 2017-10-18
                    maxend 2017-10-30
                    minend 2017-10-30
                    charge 303031872.0 onend
                }

            }


            task task1030 "تاسیسات مکانیکی فاز 1" {
                priority 500
                complete 100
                maxstart 2017-10-20
                minstart 2017-10-20
                maxend 2018-01-26
                minend 2018-01-26
                start 2017-10-20
                end 2018-01-26
                charge 1133340466.0 onend

                task task1031 "ساخت کانال دفتر تجاری بلوک 3" {
                    milestone
                    priority 500
                    complete 100
                    maxstart 2017-10-20
                    minstart 2017-10-20
                    maxend 2017-10-24
                    minend 2017-10-24
                    charge 172128528.0 onend
                }


                task task1032 "ساپورت زنی و شاسی کشی دفتر تجاری بلوک 3" {
                    milestone
                    priority 500
                    complete 100
                    maxstart 2017-11-27
                    minstart 2017-11-27
                    maxend 2017-12-07
                    minend 2017-12-07
                    charge 274927510.0 onend
                }


                task task1033 "نصب کانال دفتر تجاری بلوک 3" {
                    milestone
                    priority 500
                    complete 100
                    maxstart 2017-12-07
                    minstart 2017-12-07
                    maxend 2017-12-17
                    minend 2017-12-17
                    charge 172128528.0 onend
                }


                task task1034 "عایق کانال دفتر تجاری بلوک 3" {
                    milestone
                    priority 500
                    complete 100
                    maxstart 2017-12-16
                    minstart 2017-12-16
                    maxend 2017-12-21
                    minend 2017-12-21
                    charge 331788000.0 onend
                }


                task task1035 "لوله اطفاء حریق دفتر تجاری بلوک 3" {
                    milestone
                    priority 500
                    complete 100
                    maxstart 2018-01-21
                    minstart 2018-01-21
                    maxend 2018-01-24
                    minend 2018-01-24
                    charge 170210040.0 onend
                }


                task task1036 "تست لوله ها دفتر تجاری بلوک 3" {
                    milestone
                    priority 500
                    complete 100
                    maxstart 2018-01-24
                    minstart 2018-01-24
                    maxend 2018-01-26
                    minend 2018-01-26
                    charge 12157860.0 onend
                }

            }


            task task1037 "تاسیسات برقی فاز 1" {
                priority 500
                complete 100
                maxstart 2017-12-11
                minstart 2017-12-11
                maxend 2017-12-18
                minend 2017-12-18
                start 2017-12-11
                end 2017-12-18
                charge 1520000.0 onend

                task task1038 "سوراخکاری و شیارزنی دفتر تجاری بلوک 3" {
                    milestone
                    priority 500
                    complete 100
                    maxstart 2017-12-11
                    minstart 2017-12-11
                    maxend 2017-12-18
                    minend 2017-12-18
                    charge 1520000.0 onend
                }

            }


            task task1039 "نازک کاری" {
                priority 500
                complete 100
                maxstart 2017-10-11
                minstart 2017-10-11
                maxend 2017-11-01
                minend 2017-11-01
                start 2017-10-11
                end 2017-11-01
                charge 302664192.0 onend

                task task1040 "سرامیک دفتر تجاری بلوک 3" {
                    milestone
                    priority 500
                    complete 100
                    maxstart 2017-10-11
                    minstart 2017-10-11
                    maxend 2017-11-01
                    minend 2017-11-01
                    charge 302664192.0 onend
                }

            }

        }


        task task1041 "اتاق استراحت" {
            priority 500
            complete 41
            maxstart 2017-10-18
            minstart 2017-10-18
            maxend 2018-05-11
            minend 2018-04-04
            start 2017-10-18
            end 2018-04-04
            charge 84160666.0 onend

            task task1042 "سفتکاری" {
                priority 500
                complete 100
                maxstart 2017-10-18
                minstart 2017-10-18
                maxend 2017-12-18
                minend 2017-12-18
                start 2017-10-18
                end 2017-12-18
                charge 37061024.0 onend

                task task1043 "نصب وال پست اتاق استراحت بلوک 3" {
                    milestone
                    priority 500
                    complete 100
                    maxstart 2017-10-18
                    minstart 2017-10-18
                    maxend 2017-10-20
                    minend 2017-10-20
                    charge 15823808.0 onend
                }


                task task1044 "دیوارچینی هبلکس اتاق استراحت بلوک 3" {
                    milestone
                    priority 500
                    complete 100
                    maxstart 2017-10-20
                    minstart 2017-10-20
                    maxend 2017-10-23
                    minend 2017-10-23
                    charge 20344896.0 onend
                }


                task task1045 "نصب پیش فریم اتاق استراحت بلوک 3" {
                    milestone
                    priority 500
                    complete 100
                    maxstart 2017-12-16
                    minstart 2017-12-16
                    maxend 2017-12-18
                    minend 2017-12-18
                    charge 892320.0 onend
                }

            }


            task task1046 "نازک کاری" {
                priority 500
                complete 22
                maxstart 2018-03-16
                minstart 2018-03-16
                maxend 2018-05-11
                minend 2018-04-04
                start 2018-03-16
                end 2018-04-04
                charge 47099642.0 onend

                task task1047 "زیرسازی سقف کاذب اتاق استراحت بلوک 3" {
                    milestone
                    priority 500
                    complete 96
                    maxstart 2018-03-16
                    minstart 2018-03-16
                    maxend 2018-04-30
                    minend 2018-03-21
                    charge 11243232.0 onend
                }


                task task1048 "نصب پنل سقف کاذب اتاق استراحت بلوک 3" {
                    milestone
                    priority 500
                    maxstart 2018-05-11
                    minstart 2018-03-21
                    maxend 2018-05-11
                    minend 2018-03-31
                    charge 10490346.0 onend
                }


                task task1049 "نصب درب و پنجره اتاق استراحت بلوک 3" {
                    milestone
                    priority 500
                    maxstart 2018-05-11
                    minstart 2018-03-31
                    maxend 2018-05-11
                    minend 2018-04-03
                    charge 18590000.0 onend
                }


                task task1050 "کفسازی اتاق استراحت بلوک 3" {
                    milestone
                    priority 500
                    maxstart 2018-05-11
                    minstart 2018-03-31
                    maxend 2018-05-11
                    minend 2018-04-04
                    charge 6776064.0 onend
                }

            }

        }


        task task1051 "زباله دان" {
            priority 500
            complete 35
            maxstart 2017-10-20
            minstart 2017-10-20
            maxend 2018-05-11
            minend 2018-05-11
            start 2017-10-20
            end 2018-05-11
            charge 338383900.0 onend

            task task1052 "سفتکاری" {
                priority 500
                complete 100
                maxstart 2017-10-20
                minstart 2017-10-20
                maxend 2017-12-20
                minend 2017-12-20
                start 2017-10-20
                end 2017-12-20
                charge 140495784.0 onend

                task task1053 "نصب وال پست زباله دان بلوک 3" {
                    milestone
                    priority 500
                    complete 100
                    maxstart 2017-10-20
                    minstart 2017-10-20
                    maxend 2017-10-24
                    minend 2017-10-24
                    charge 44972928.0 onend
                }


                task task1054 "دیوارچینی هبلکس زباله دان بلوک 3" {
                    milestone
                    priority 500
                    complete 100
                    maxstart 2017-10-24
                    minstart 2017-10-24
                    maxend 2017-10-27
                    minend 2017-10-27
                    charge 57822336.0 onend
                }


                task task1055 "نصب پیش فریم زباله دان بلوک 3" {
                    milestone
                    priority 500
                    complete 100
                    maxstart 2017-12-18
                    minstart 2017-12-18
                    maxend 2017-12-20
                    minend 2017-12-20
                    charge 892320.0 onend
                }


                task task1056 "آهن کشی ودیوارچینی درزژوئن زباله دان بلوک 3" {
                    milestone
                    priority 500
                    complete 100
                    maxstart 2017-10-25
                    minstart 2017-10-25
                    maxend 2017-10-31
                    minend 2017-10-31
                    charge 36808200.0 onend
                }

            }


            task task1057 "تاسیسات مکانیکی فاز 1" {
                priority 500
                complete 100
                maxstart 2017-10-30
                minstart 2017-10-30
                maxend 2018-01-26
                minend 2018-01-26
                start 2017-10-30
                end 2018-01-26
                charge 81550612.0 onend

                task task1058 "ساخت کانال زباله دان بلوک 3" {
                    milestone
                    priority 500
                    complete 100
                    maxstart 2017-10-30
                    minstart 2017-10-30
                    maxend 2017-10-31
                    minend 2017-10-31
                    charge 1606176.0 onend
                }


                task task1059 "ساپورت زنی و شاسی کشی زباله دان بلوک 3" {
                    milestone
                    priority 500
                    complete 100
                    maxstart 2017-12-07
                    minstart 2017-12-07
                    maxend 2017-12-08
                    minend 2017-12-08
                    charge 2565420.0 onend
                }


                task task1060 "نصب کانال زباله دان بلوک 3" {
                    milestone
                    priority 500
                    complete 100
                    maxstart 2017-12-08
                    minstart 2017-12-08
                    maxend 2017-12-09
                    minend 2017-12-09
                    charge 1606176.0 onend
                }


                task task1061 "لوله سرد و گرم مصرفی زباله دان بلوک 3" {
                    milestone
                    priority 500
                    complete 100
                    maxstart 2018-01-04
                    minstart 2018-01-04
                    maxend 2018-01-05
                    minend 2018-01-05
                    charge 11154000.0 onend
                }


                task task1062 "لوله اطفاء حریق زباله دان بلوک 3" {
                    milestone
                    priority 500
                    complete 100
                    maxstart 2018-01-24
                    minstart 2018-01-24
                    maxend 2018-01-25
                    minend 2018-01-25
                    charge 5205200.0 onend
                }


                task task1063 "لوله فاضلاب و ونت زباله دان بلوک 3" {
                    milestone
                    priority 500
                    complete 100
                    maxstart 2017-12-26
                    minstart 2017-12-26
                    maxend 2017-12-27
                    minend 2017-12-27
                    charge 18961800.0 onend
                }


                task task1064 "عایق لوله زباله دان بلوک 3" {
                    milestone
                    priority 500
                    complete 100
                    maxstart 2018-01-05
                    minstart 2018-01-05
                    maxend 2018-01-06
                    minend 2018-01-06
                    charge 38035140.0 onend
                }


                task task1065 "تست لوله ها زباله دان بلوک 3" {
                    milestone
                    priority 500
                    complete 100
                    maxstart 2018-01-25
                    minstart 2018-01-25
                    maxend 2018-01-26
                    minend 2018-01-26
                    charge 2416700.0 onend
                }

            }


            task task1066 "تاسیسات برقی فاز 1" {
                priority 500
                complete 100
                maxstart 2017-12-18
                minstart 2017-12-18
                maxend 2017-12-21
                minend 2017-12-21
                start 2017-12-18
                end 2017-12-21
                charge 950000.0 onend

                task task1067 "سوراخکاری و شیارزنی زباله دان بلوک 3" {
                    milestone
                    priority 500
                    complete 100
                    maxstart 2017-12-18
                    minstart 2017-12-18
                    maxend 2017-12-21
                    minend 2017-12-21
                    charge 950000.0 onend
                }

            }


            task task1068 "نازک کاری" {
                priority 500
                maxstart 2018-04-30
                minstart 2018-03-21
                maxend 2018-05-11
                minend 2018-04-07
                start 2018-03-21
                end 2018-04-07
                charge 99017798.0 onend

                task task1069 "زیرسازی سقف کاذب زباله دان بلوک 3" {
                    milestone
                    priority 500
                    maxstart 2018-04-30
                    minstart 2018-03-21
                    maxend 2018-05-05
                    minend 2018-03-26
                    charge 13741728.0 onend
                }


                task task1070 "نصب پنل سقف کاذب زباله دان بلوک 3" {
                    milestone
                    priority 500
                    maxstart 2018-05-11
                    minstart 2018-03-26
                    maxend 2018-05-11
                    minend 2018-03-30
                    charge 12821534.0 onend
                }


                task task1071 "نصب درب و پنجره زباله دان بلوک 3" {
                    milestone
                    priority 500
                    maxstart 2018-05-11
                    minstart 2018-03-30
                    maxend 2018-05-11
                    minend 2018-04-03
                    charge 37180000.0 onend
                }


                task task1072 "کفسازی زباله دان بلوک 3" {
                    milestone
                    priority 500
                    maxstart 2018-05-11
                    minstart 2018-03-30
                    maxend 2018-05-11
                    minend 2018-04-03
                    charge 8281856.0 onend
                }


                task task1073 "رنگ آمیزی زباله دان بلوک 3" {
                    milestone
                    priority 500
                    maxstart 2018-05-11
                    minstart 2018-04-03
                    maxend 2018-05-11
                    minend 2018-04-07
                    charge 26992680.0 onend
                }

            }


            task task1074 "تاسیسات مکانیکی فاز 2" {
                priority 500
                maxstart 2018-05-11
                minstart 2018-05-11
                maxend 2018-05-11
                minend 2018-05-11
                start 2018-05-11
                end 2018-05-11
                charge 16075400.0 onend

                task task1075 "نصب شیرآلات و تجهیزات بهداشتی زباله دان بلوک 3" {
                    milestone
                    priority 500
                    maxstart 2018-05-11
                    minstart 2018-05-11
                    maxend 2018-05-11
                    minend 2018-05-11
                    charge 11000000.0 onend
                }


                task task1076 "نصب دریچه هوا زباله دان بلوک 3" {
                    milestone
                    priority 500
                    maxstart 2018-05-11
                    minstart 2018-05-11
                    maxend 2018-05-11
                    minend 2018-05-11
                    charge 3900000.0 onend
                }


                task task1077 "تست تاسیسات مکانیکی زباله دان بلوک 3" {
                    milestone
                    priority 500
                    maxstart 2018-05-11
                    minstart 2018-05-11
                    maxend 2018-05-11
                    minend 2018-05-11
                    charge 1175400.0 onend
                }

            }


            task task1078 "تاسیسات برقی فاز 2" {
                priority 500
                maxstart 2018-05-11
                minstart 2018-05-11
                maxend 2018-05-11
                minend 2018-05-11
                start 2018-05-11
                end 2018-05-11
                charge 294306.0 onend

                task task1079 "نصب کلید و پریز زباله دان بلوک 3" {
                    milestone
                    priority 500
                    maxstart 2018-05-11
                    minstart 2018-05-11
                    maxend 2018-05-11
                    minend 2018-05-11
                    charge 294306.0 onend
                }

            }

        }


        task task1080 "اتاق برق" {
            priority 500
            complete 30
            maxstart 2017-10-04
            minstart 2017-10-04
            maxend 2018-05-11
            minend 2018-05-11
            start 2017-10-04
            end 2018-05-11
            charge 441686018.0 onend

            task task1081 "سفتکاری" {
                priority 500
                complete 100
                maxstart 2017-10-24
                minstart 2017-10-24
                maxend 2017-12-23
                minend 2017-12-23
                start 2017-10-24
                end 2017-12-23
                charge 136941376.0 onend

                task task1082 "نصب وال پست اتاق برق بلوک 3" {
                    milestone
                    priority 500
                    complete 100
                    maxstart 2017-10-24
                    minstart 2017-10-24
                    maxend 2017-10-29
                    minend 2017-10-29
                    charge 59131072.0 onend
                }


                task task1083 "دیوارچینی هبلکس اتاق برق بلوک 3" {
                    milestone
                    priority 500
                    complete 100
                    maxstart 2017-10-29
                    minstart 2017-10-29
                    maxend 2017-11-02
                    minend 2017-11-02
                    charge 76025664.0 onend
                }


                task task1084 "نصب پیش فریم اتاق برق بلوک 3" {
                    milestone
                    priority 500
                    complete 100
                    maxstart 2017-12-20
                    minstart 2017-12-20
                    maxend 2017-12-23
                    minend 2017-12-23
                    charge 1784640.0 onend
                }

            }


            task task1085 "تاسیسات برقی فاز 1" {
                priority 500
                complete 100
                maxstart 2017-10-04
                minstart 2017-10-04
                maxend 2018-01-13
                minend 2018-01-13
                start 2017-10-04
                end 2018-01-13
                charge 63327310.0 onend

                task task1086 "سوراخکاری و شیارزنی اتاق برق بلوک 3" {
                    milestone
                    priority 500
                    complete 100
                    maxstart 2017-12-21
                    minstart 2017-12-21
                    maxend 2017-12-25
                    minend 2017-12-25
                    charge 380000.0 onend
                }


                task task1087 "ساپورت زنی اتاق برق بلوک 3" {
                    milestone
                    priority 500
                    complete 100
                    maxstart 2018-01-01
                    minstart 2018-01-01
                    maxend 2018-01-04
                    minend 2018-01-04
                    charge 8020000.0 onend
                }


                task task1088 "سینی کابل اتاق برق بلوک 3" {
                    milestone
                    priority 500
                    complete 100
                    maxstart 2018-01-04
                    minstart 2018-01-04
                    maxend 2018-01-07
                    minend 2018-01-07
                    charge 33023700.0 onend
                }


                task task1089 "لوله گذاری صوت، روشنایی و اعلام حریق اتاق برق بلوک 3" {
                    milestone
                    priority 500
                    complete 100
                    maxstart 2017-10-04
                    minstart 2017-10-04
                    maxend 2017-10-07
                    minend 2017-10-07
                    charge 12127610.0 onend
                }


                task task1090 "کابل کشی ولتاژ ضعیف اتاق برق بلوک 3" {
                    milestone
                    priority 500
                    complete 100
                    maxstart 2018-01-07
                    minstart 2018-01-07
                    maxend 2018-01-13
                    minend 2018-01-13
                    charge 9776000.0 onend
                }

            }


            task task1091 "نازک کاری" {
                priority 500
                maxstart 2018-05-05
                minstart 2018-03-26
                maxend 2018-05-11
                minend 2018-04-15
                start 2018-03-26
                end 2018-04-15
                charge 235007362.0 onend

                task task1092 "زیرسازی سقف کاذب اتاق برق بلوک 3" {
                    milestone
                    priority 500
                    maxstart 2018-05-05
                    minstart 2018-03-26
                    maxend 2018-05-10
                    minend 2018-03-31
                    charge 11243232.0 onend
                }


                task task1093 "نصب پنل سقف کاذب اتاق برق بلوک 3" {
                    milestone
                    priority 500
                    maxstart 2018-05-10
                    minstart 2018-03-31
                    maxend 2018-05-11
                    minend 2018-04-03
                    charge 10490346.0 onend
                }


                task task1094 "کفسازی اتاق برق بلوک 3" {
                    milestone
                    priority 500
                    maxstart 2018-05-11
                    minstart 2018-04-03
                    maxend 2018-05-11
                    minend 2018-04-07
                    charge 6776064.0 onend
                }


                task task1095 "نصب درب و پنجره اتاق برق بلوک 3" {
                    milestone
                    priority 500
                    maxstart 2018-05-11
                    minstart 2018-04-07
                    maxend 2018-05-11
                    minend 2018-04-11
                    charge 37180000.0 onend
                }


                task task1096 "رنگ آمیزی اتاق برق بلوک 3" {
                    milestone
                    priority 500
                    maxstart 2018-05-11
                    minstart 2018-04-07
                    maxend 2018-05-11
                    minend 2018-04-15
                    charge 169317720.0 onend
                }

            }


            task task1097 "تاسیسات برقی فاز 2" {
                priority 500
                maxstart 2018-05-11
                minstart 2018-05-02
                maxend 2018-05-11
                minend 2018-05-11
                start 2018-05-02
                end 2018-05-11
                charge 6409970.0 onend

                task task1098 "نصب کلید و پریز اتاق برق بلوک 3" {
                    milestone
                    priority 500
                    maxstart 2018-05-11
                    minstart 2018-05-11
                    maxend 2018-05-11
                    minend 2018-05-11
                    charge 294306.0 onend
                }


                task task1099 "نصب تجهیزات روشنایی اتاق برق بلوک 3" {
                    milestone
                    priority 500
                    maxstart 2018-05-11
                    minstart 2018-05-11
                    maxend 2018-05-11
                    minend 2018-05-11
                    charge 1587140.0 onend
                }


                task task1100 "سرسیم بندی تابلو اتاق برق بلوک 3" {
                    milestone
                    priority 500
                    maxstart 2018-05-11
                    minstart 2018-05-02
                    maxend 2018-05-11
                    minend 2018-05-11
                    charge 4528524.0 onend
                }

            }

        }


        task task1101 "لابی سرویس" {
            priority 500
            complete 71
            maxstart 2017-10-07
            minstart 2017-10-07
            maxend 2018-05-11
            minend 2018-05-11
            start 2017-10-07
            end 2018-05-11
            charge 634629263.0 onend

            task task1102 "سفتکاری" {
                priority 500
                complete 100
                maxstart 2017-10-29
                minstart 2017-10-29
                maxend 2017-12-25
                minend 2017-12-25
                start 2017-10-29
                end 2017-12-25
                charge 111316920.0 onend

                task task1103 "نصب وال پست لابی سرویس بلوک 3" {
                    milestone
                    priority 500
                    complete 100
                    maxstart 2017-10-29
                    minstart 2017-10-29
                    maxend 2017-11-04
                    minend 2017-11-04
                    charge 7807800.0 onend
                }


                task task1104 "دیوارچینی هبلکس لابی سرویس بلوک 3 " {
                    milestone
                    priority 500
                    complete 100
                    maxstart 2017-11-01
                    minstart 2017-11-01
                    maxend 2017-11-07
                    minend 2017-11-07
                    charge 101724480.0 onend
                }


                task task1105 "نصب پیش فریم لابی سرویس بلوک 3" {
                    milestone
                    priority 500
                    complete 100
                    maxstart 2017-12-23
                    minstart 2017-12-23
                    maxend 2017-12-25
                    minend 2017-12-25
                    charge 1784640.0 onend
                }

            }


            task task1106 "تاسیسات برقی فاز 1" {
                priority 500
                complete 99
                maxstart 2017-10-07
                minstart 2017-10-07
                maxend 2018-01-17
                minend 2018-01-17
                start 2017-10-07
                end 2018-01-17
                charge 67531898.0 onend

                task task1107 "سوراخکاری و شیارزنی لابی سرویس بلوک 3" {
                    milestone
                    priority 500
                    complete 100
                    maxstart 2017-12-25
                    minstart 2017-12-25
                    maxend 2017-12-29
                    minend 2017-12-29
                    charge 760000.0 onend
                }


                task task1108 "ساپورت زنی لابی سرویس بلوک 3" {
                    milestone
                    priority 500
                    complete 100
                    maxstart 2018-01-04
                    minstart 2018-01-04
                    maxend 2018-01-09
                    minend 2018-01-09
                    charge 6015000.0 onend
                }


                task task1109 "سینی کابل لابی سرویس بلوک 3" {
                    milestone
                    priority 500
                    complete 100
                    maxstart 2018-01-09
                    minstart 2018-01-09
                    maxend 2018-01-13
                    minend 2018-01-13
                    charge 27519750.0 onend
                }


                task task1110 "لوله گذاری صوت، روشنایی و اعلام حریق لابی سرویس بلوک 3" {
                    milestone
                    priority 500
                    complete 100
                    maxstart 2017-10-07
                    minstart 2017-10-07
                    maxend 2017-10-11
                    minend 2017-10-11
                    charge 16317148.0 onend
                }


                task task1111 "کابل کشی ولتاژ ضعیف لابی سرویس بلوک 3" {
                    milestone
                    priority 500
                    complete 99
                    maxstart 2018-01-13
                    minstart 2018-01-13
                    maxend 2018-01-17
                    minend 2018-01-17
                    charge 16920000.0 onend
                }

            }


            task task1112 "نازک کاری" {
                priority 500
                complete 100
                maxstart 2018-01-21
                minstart 2018-01-21
                maxend 2018-02-14
                minend 2018-02-14
                start 2018-01-21
                end 2018-02-14
                charge 435861185.0 onend

                task task1113 "زیرسازی سقف کاذب لابی سرویس بلوک 3" {
                    milestone
                    priority 500
                    complete 100
                    maxstart 2018-01-21
                    minstart 2018-01-21
                    maxend 2018-01-28
                    minend 2018-01-28
                    charge 28108080.0 onend
                }


                task task1114 "نصب پنل سقف کاذب لابی سرویس بلوک 3" {
                    milestone
                    priority 500
                    complete 100
                    maxstart 2018-01-28
                    minstart 2018-01-28
                    maxend 2018-02-01
                    minend 2018-02-01
                    charge 26225865.0 onend
                }


                task task1115 "نصب درب و پنجره لابی سرویس بلوک 3" {
                    milestone
                    priority 500
                    complete 100
                    maxstart 2018-02-01
                    minstart 2018-02-01
                    maxend 2018-02-05
                    minend 2018-02-05
                    charge 18590000.0 onend
                }


                task task1116 "کفسازی لابی سرویس بلوک 3" {
                    milestone
                    priority 500
                    complete 100
                    maxstart 2018-02-01
                    minstart 2018-02-01
                    maxend 2018-02-06
                    minend 2018-02-06
                    charge 16940160.0 onend
                }


                task task1117 "رنگ آمیزی لابی سرویس بلوک 3" {
                    milestone
                    priority 500
                    complete 100
                    maxstart 2018-02-06
                    minstart 2018-02-06
                    maxend 2018-02-14
                    minend 2018-02-14
                    charge 345997080.0 onend
                }

            }


            task task1118 "تاسیسات برقی فاز 2" {
                priority 500
                maxstart 2018-05-11
                minstart 2018-05-01
                maxend 2018-05-11
                minend 2018-05-11
                start 2018-05-01
                end 2018-05-11
                charge 19919260.0 onend

                task task1119 "نصب تجهیزات صوت لابی سرویس بلوک 3" {
                    milestone
                    priority 500
                    maxstart 2018-05-11
                    minstart 2018-05-01
                    maxend 2018-05-11
                    minend 2018-05-07
                    charge 13570700.0 onend
                }


                task task1120 "نصب تجهیزات روشنایی لابی سرویس بلوک 3" {
                    milestone
                    priority 500
                    maxstart 2018-05-11
                    minstart 2018-05-11
                    maxend 2018-05-11
                    minend 2018-05-11
                    charge 6348560.0 onend
                }

            }

        }

    }


    task task1121 "بلوک 5" {
        priority 500
        complete 100
        maxstart 2017-10-05
        minstart 2017-10-05
        maxend 2017-12-07
        minend 2017-12-07
        start 2017-10-05
        end 2017-12-07
        charge 706140743.0 onend

        task task1122 "شیب بندی بام" {
            priority 500
            complete 100
            maxstart 2017-10-05
            minstart 2017-10-05
            maxend 2017-12-07
            minend 2017-12-07
            start 2017-10-05
            end 2017-12-07
            charge 706140743.0 onend

            task task1123 "سفتکاری" {
                priority 500
                complete 100
                maxstart 2017-10-05
                minstart 2017-10-05
                maxend 2017-12-07
                minend 2017-12-07
                start 2017-10-05
                end 2017-12-07
                charge 706140743.0 onend

                task task1124 "نصب وال پست شیب بندی بام بلوک 5" {
                    milestone
                    priority 500
                    complete 100
                    maxstart 2017-10-24
                    minstart 2017-10-24
                    maxend 2017-11-05
                    minend 2017-11-05
                    charge 34978944.0 onend
                }


                task task1125 "دیوارچینی هبلکس شیب بندی بام بلوک 5" {
                    milestone
                    priority 500
                    complete 100
                    maxstart 2017-11-05
                    minstart 2017-11-05
                    maxend 2017-11-15
                    minend 2017-11-15
                    charge 44972928.0 onend
                }


                task task1126 "آهن کشی ودیوارچینی درزژوئن شیب بندی بام بلوک 5" {
                    milestone
                    priority 500
                    complete 100
                    maxstart 2017-10-05
                    minstart 2017-10-05
                    maxend 2017-10-08
                    minend 2017-10-08
                    charge 234234000.0 onend
                }


                task task1127 "عایق حرارتی شیب بندی بام بلوک 5" {
                    milestone
                    priority 500
                    complete 100
                    maxstart 2017-10-08
                    minstart 2017-10-08
                    maxend 2017-10-20
                    minend 2017-10-20
                    charge 71683040.0 onend
                }


                task task1128 "کروم بندی و فوم بتن شیب بندی بام بلوک 5" {
                    milestone
                    priority 500
                    complete 100
                    maxstart 2017-10-20
                    minstart 2017-10-20
                    maxend 2017-11-01
                    minend 2017-11-01
                    charge 150534384.0 onend
                }


                task task1129 "عایق رطوبتی و لایه محافظ شیب بندی بام بلوک 5" {
                    milestone
                    priority 500
                    complete 100
                    maxstart 2017-11-01
                    minstart 2017-11-01
                    maxend 2017-11-13
                    minend 2017-11-13
                    charge 59485610.0 onend
                }


                task task1130 "موزاییک شیب بندی بام بلوک 5" {
                    milestone
                    priority 500
                    complete 100
                    maxstart 2017-11-13
                    minstart 2017-11-13
                    maxend 2017-11-25
                    minend 2017-11-25
                    charge 108450000.0 onend
                }


                task task1131 "گاترشیب بندی بام بلوک 5" {
                    milestone
                    priority 500
                    complete 100
                    maxstart 2017-11-25
                    minstart 2017-11-25
                    maxend 2017-12-07
                    minend 2017-12-07
                    charge 1801837.0 onend
                }

            }

        }

    }


    task task1132 "بلوک 8" {
        priority 500
        complete 63
        maxstart 2017-07-24
        minstart 2017-07-24
        maxend 2018-05-11
        minend 2018-05-11
        start 2017-07-24
        end 2018-05-11
        charge 17082361093.0 onend

        task task1133 "راهرو" {
            priority 500
            complete 96
            maxstart 2017-11-03
            minstart 2017-11-03
            maxend 2018-05-11
            minend 2018-03-24
            start 2017-11-03
            end 2018-03-24
            charge 2103283813.0 onend

            task task1134 "سفتکاری" {
                priority 500
                complete 100
                maxstart 2017-11-03
                minstart 2017-11-03
                maxend 2017-12-07
                minend 2017-12-07
                start 2017-11-03
                end 2017-12-07
                charge 40154400.0 onend

                task task1135 "آهن کشی ودیوارچینی درزژوئن راهرو بلوک 8" {
                    milestone
                    priority 500
                    complete 100
                    maxstart 2017-11-03
                    minstart 2017-11-03
                    maxend 2017-12-07
                    minend 2017-12-07
                    charge 40154400.0 onend
                }

            }


            task task1136 "نازک کاری" {
                priority 500
                complete 94
                maxstart 2018-01-28
                minstart 2018-01-28
                maxend 2018-05-11
                minend 2018-03-24
                start 2018-01-28
                end 2018-03-24
                charge 2063129413.0 onend

                task task1137 "زیرسازی سقف کاذب راهرو بلوک 8" {
                    milestone
                    priority 500
                    complete 100
                    maxstart 2018-01-28
                    minstart 2018-01-28
                    maxend 2018-02-09
                    minend 2018-02-09
                    charge 465344880.0 onend
                }


                task task1138 "نصب پنل سقف کاذب راهرو بلوک 8" {
                    milestone
                    priority 500
                    complete 100
                    maxstart 2018-02-09
                    minstart 2018-02-09
                    maxend 2018-02-19
                    minend 2018-02-19
                    charge 434183765.0 onend
                }


                task task1139 "کفسازی راهرو بلوک 8" {
                    milestone
                    priority 500
                    complete 91
                    maxstart 2018-02-18
                    minstart 2018-02-18
                    maxend 2018-05-11
                    minend 2018-03-24
                    charge 1163600768.0 onend
                }

            }

        }


        task task1140 "لابی آسانسور" {
            priority 500
            complete 99
            maxstart 2017-12-07
            minstart 2017-12-07
            maxend 2018-02-18
            minend 2018-02-18
            start 2017-12-07
            end 2018-02-18
            charge 1247222324.0 onend

            task task1141 "سفتکاری" {
                priority 500
                complete 100
                maxstart 2017-12-07
                minstart 2017-12-07
                maxend 2017-12-09
                minend 2017-12-09
                start 2017-12-07
                end 2017-12-09
                charge 40154400.0 onend

                task task1142 "آهن کشی ودیوارچینی درزژوئن لابی آسانسور بلوک 8" {
                    milestone
                    priority 500
                    complete 100
                    maxstart 2017-12-07
                    minstart 2017-12-07
                    maxend 2017-12-09
                    minend 2017-12-09
                    charge 40154400.0 onend
                }

            }


            task task1143 "نازک کاری" {
                priority 500
                complete 99
                maxstart 2018-02-09
                minstart 2018-02-09
                maxend 2018-02-18
                minend 2018-02-18
                start 2018-02-09
                end 2018-02-18
                charge 1207067924.0 onend

                task task1144 "زیرسازی سقف کاذب لابی آسانسور بلوک 8" {
                    milestone
                    priority 500
                    complete 100
                    maxstart 2018-02-09
                    minstart 2018-02-09
                    maxend 2018-02-11
                    minend 2018-02-11
                    charge 22486464.0 onend
                }


                task task1145 "نصب پنل سقف کاذب لابی آسانسور بلوک 8" {
                    milestone
                    priority 500
                    complete 100
                    maxstart 2018-02-11
                    minstart 2018-02-11
                    maxend 2018-02-14
                    minend 2018-02-14
                    charge 20980692.0 onend
                }


                task task1146 "کفسازی لابی آسانسور بلوک 8" {
                    milestone
                    priority 500
                    complete 99
                    maxstart 2018-02-14
                    minstart 2018-02-14
                    maxend 2018-02-18
                    minend 2018-02-18
                    charge 1163600768.0 onend
                }

            }

        }


        task task1147 "سرویس های بهداشتی" {
            priority 500
            complete 41
            maxstart 2017-10-11
            minstart 2017-10-11
            maxend 2018-05-11
            minend 2018-05-11
            start 2017-10-11
            end 2018-05-11
            charge 2226543235.0 onend

            task task1148 "سفتکاری" {
                priority 500
                complete 100
                maxstart 2017-12-03
                minstart 2017-12-03
                maxend 2017-12-11
                minend 2017-12-11
                start 2017-12-03
                end 2017-12-11
                charge 150866156.0 onend

                task task1149 "شیب بندی سرویس بهداشتی بلوک 8" {
                    milestone
                    priority 500
                    complete 100
                    maxstart 2017-12-03
                    minstart 2017-12-03
                    maxend 2017-12-07
                    minend 2017-12-07
                    charge 97441344.0 onend
                }


                task task1150 "عایق رطوبتی سرویس بهداشتی بلوک 8" {
                    milestone
                    priority 500
                    complete 100
                    maxstart 2017-12-07
                    minstart 2017-12-07
                    maxend 2017-12-11
                    minend 2017-12-11
                    charge 53424812.0 onend
                }

            }


            task task1151 "تاسیسات مکانیکی فاز 1" {
                priority 500
                complete 100
                maxstart 2017-10-31
                minstart 2017-10-31
                maxend 2018-01-09
                minend 2018-01-09
                start 2017-10-31
                end 2018-01-09
                charge 190316984.0 onend

                task task1152 "ساخت کانال سرویس بهداشتی بلوک 8" {
                    milestone
                    priority 500
                    complete 100
                    maxstart 2017-10-31
                    minstart 2017-10-31
                    maxend 2017-11-01
                    minend 2017-11-01
                    charge 21415680.0 onend
                }


                task task1153 "ساپورت زنی و شاسی کشی سرویس بهداشتی بلوک 8" {
                    milestone
                    priority 500
                    complete 100
                    maxstart 2017-12-08
                    minstart 2017-12-08
                    maxend 2017-12-10
                    minend 2017-12-10
                    charge 34205600.0 onend
                }


                task task1154 "نصب کانال سرویس بهداشتی بلوک 8" {
                    milestone
                    priority 500
                    complete 100
                    maxstart 2017-12-10
                    minstart 2017-12-10
                    maxend 2017-12-12
                    minend 2017-12-12
                    charge 21415680.0 onend
                }


                task task1155 "لوله سرد و گرم مصرفی سرویس بهداشتی بلوک 8" {
                    milestone
                    priority 500
                    complete 100
                    maxstart 2018-01-05
                    minstart 2018-01-05
                    maxend 2018-01-07
                    minend 2018-01-07
                    charge 21415680.0 onend
                }


                task task1156 "لوله فاضلاب و ونت سرویس بهداشتی بلوک 8" {
                    milestone
                    priority 500
                    complete 100
                    maxstart 2017-12-27
                    minstart 2017-12-27
                    maxend 2017-12-31
                    minend 2017-12-31
                    charge 53725100.0 onend
                }


                task task1157 "عایق لوله سرویس بهداشتی بلوک 8" {
                    milestone
                    priority 500
                    complete 100
                    maxstart 2018-01-07
                    minstart 2018-01-07
                    maxend 2018-01-09
                    minend 2018-01-09
                    charge 33194304.0 onend
                }


                task task1158 "تست لوله ها سرویس بهداشتی بلوک 8" {
                    milestone
                    priority 500
                    complete 100
                    maxstart 2018-01-07
                    minstart 2018-01-07
                    maxend 2018-01-09
                    minend 2018-01-09
                    charge 4944940.0 onend
                }

            }


            task task1159 "تاسیسات برقی فاز 1" {
                priority 500
                complete 100
                maxstart 2017-10-11
                minstart 2017-10-11
                maxend 2018-01-03
                minend 2018-01-03
                start 2017-10-11
                end 2018-01-03
                charge 32913713.0 onend

                task task1160 "سوراخکاری و شیارزنی سرویس بهداشتی بلوک 8" {
                    milestone
                    priority 500
                    complete 100
                    maxstart 2017-12-29
                    minstart 2017-12-29
                    maxend 2018-01-03
                    minend 2018-01-03
                    charge 1900000.0 onend
                }


                task task1161 "لوله گذاری صوت، روشنایی و اعلام حریق سرویس بهداشتی بلوک 8" {
                    milestone
                    priority 500
                    complete 100
                    maxstart 2017-10-11
                    minstart 2017-10-11
                    maxend 2017-10-15
                    minend 2017-10-15
                    charge 27783252.0 onend
                }


                task task1162 "کابل کشی جریان ضعیف(تلفن) سرویس بهداشتی بلوک 8" {
                    milestone
                    priority 500
                    complete 100
                    maxstart 2017-12-29
                    minstart 2017-12-29
                    maxend 2018-01-02
                    minend 2018-01-02
                    charge 3230461.0 onend
                }

            }


            task task1163 "نازک کاری" {
                priority 500
                complete 100
                maxstart 2018-01-08
                minstart 2018-01-08
                maxend 2018-03-03
                minend 2018-03-03
                start 2018-01-08
                end 2018-03-03
                charge 1043451546.0 onend

                task task1164 "پوشش دیوارها سرویس بهداشتی بلوک 8" {
                    milestone
                    priority 500
                    complete 100
                    maxstart 2018-01-08
                    minstart 2018-01-08
                    maxend 2018-01-20
                    minend 2018-01-20
                    charge 207046350.0 onend
                }


                task task1165 "زیرسازی سقف کاذب سرویس بهداشتی بلوک 8" {
                    milestone
                    priority 500
                    complete 100
                    maxstart 2018-02-11
                    minstart 2018-02-11
                    maxend 2018-02-15
                    minend 2018-02-15
                    charge 97441344.0 onend
                }


                task task1166 "نصب پنل سقف کاذب سرویس بهداشتی بلوک 8" {
                    milestone
                    priority 500
                    complete 100
                    maxstart 2018-02-15
                    minstart 2018-02-15
                    maxend 2018-02-19
                    minend 2018-02-19
                    charge 90916332.0 onend
                }


                task task1167 "نصب درب و پنجره سرویس بهداشتی بلوک 8" {
                    milestone
                    priority 500
                    complete 100
                    maxstart 2018-02-19
                    minstart 2018-02-19
                    maxend 2018-03-03
                    minend 2018-03-03
                    charge 557700000.0 onend
                }


                task task1168 "کفسازی سرویس بهداشتی بلوک 8" {
                    milestone
                    priority 500
                    complete 100
                    maxstart 2018-02-19
                    minstart 2018-02-19
                    maxend 2018-02-27
                    minend 2018-02-27
                    charge 90347520.0 onend
                }

            }


            task task1169 "تاسیسات مکانیکی فاز 2" {
                priority 500
                maxstart 2018-05-11
                minstart 2018-04-21
                maxend 2018-05-11
                minend 2018-05-11
                start 2018-04-21
                end 2018-05-11
                charge 758545600.0 onend

                task task1170 "نصب شیرآلات و تجهیزات بهداشتی سرویس بهداشتی بلوک 8" {
                    milestone
                    priority 500
                    maxstart 2018-05-11
                    minstart 2018-04-21
                    maxend 2018-05-11
                    minend 2018-05-11
                    charge 616000000.0 onend
                }


                task task1171 "نصب دمپر و فایر دمپر سرویس بهداشتی بلوک 8" {
                    milestone
                    priority 500
                    maxstart 2018-05-11
                    minstart 2018-05-04
                    maxend 2018-05-11
                    minend 2018-05-10
                    charge 48000000.0 onend
                }


                task task1172 "نصب دریچه هوا سرویس بهداشتی بلوک 8" {
                    milestone
                    priority 500
                    maxstart 2018-05-11
                    minstart 2018-05-11
                    maxend 2018-05-11
                    minend 2018-05-11
                    charge 58500000.0 onend
                }


                task task1173 "تست تاسیسات مکانیکی سرویس بهداشتی بلوک 8" {
                    milestone
                    priority 500
                    maxstart 2018-05-11
                    minstart 2018-05-11
                    maxend 2018-05-11
                    minend 2018-05-11
                    charge 36045600.0 onend
                }

            }


            task task1174 "تاسیسات برقی فاز 2" {
                priority 500
                maxstart 2018-05-11
                minstart 2018-05-05
                maxend 2018-05-11
                minend 2018-05-11
                start 2018-05-05
                end 2018-05-11
                charge 50449236.0 onend

                task task1175 "نصب کلید و پریز سرویس بهداشتی بلوک 8" {
                    milestone
                    priority 500
                    maxstart 2018-05-11
                    minstart 2018-05-05
                    maxend 2018-05-11
                    minend 2018-05-11
                    charge 294306.0 onend
                }


                task task1176 "نصب تجهیزات صوت سرویس بهداشتی بلوک 8" {
                    milestone
                    priority 500
                    maxstart 2018-05-11
                    minstart 2018-05-07
                    maxend 2018-05-11
                    minend 2018-05-11
                    charge 27141400.0 onend
                }


                task task1177 "نصب تجهیزات روشنایی سرویس بهداشتی بلوک 8" {
                    milestone
                    priority 500
                    maxstart 2018-05-11
                    minstart 2018-05-11
                    maxend 2018-05-11
                    minend 2018-05-11
                    charge 23013530.0 onend
                }

            }

        }


        task task1178 "فودکورت" {
            priority 500
            complete 59
            maxstart 2017-07-24
            minstart 2017-07-24
            maxend 2018-05-11
            minend 2018-05-11
            start 2017-07-24
            end 2018-05-11
            charge 10537454820.0 onend

            task task1179 "سفتکاری" {
                priority 500
                complete 100
                maxstart 2017-10-15
                minstart 2017-10-15
                maxend 2017-10-29
                minend 2017-10-29
                start 2017-10-15
                end 2017-10-29
                charge 870012000.0 onend

                task task1180 "آهن کشی ودیوارچینی درزژوئن فودکورت بلوک 8" {
                    milestone
                    priority 500
                    complete 100
                    maxstart 2017-10-15
                    minstart 2017-10-15
                    maxend 2017-10-29
                    minend 2017-10-29
                    charge 870012000.0 onend
                }

            }


            task task1181 "تاسیسات مکانیکی فاز 1" {
                priority 500
                complete 99
                maxstart 2017-07-24
                minstart 2017-07-24
                maxend 2018-02-04
                minend 2018-02-04
                start 2017-07-24
                end 2018-02-04
                charge 3413180028.0 onend

                task task1182 "ساخت کانال فودکورت بلوک 8" {
                    milestone
                    priority 500
                    complete 100
                    maxstart 2017-11-16
                    minstart 2017-11-16
                    maxend 2017-11-28
                    minend 2017-11-28
                    charge 442769184.0 onend
                }


                task task1183 "ساپورت زنی و شاسی کشی فودکورت بلوک 8" {
                    milestone
                    priority 500
                    complete 100
                    maxstart 2017-07-24
                    minstart 2017-07-24
                    maxend 2017-08-07
                    minend 2017-08-07
                    charge 707200780.0 onend
                }


                task task1184 "نصب کانال فودکورت بلوک 8" {
                    milestone
                    priority 500
                    complete 100
                    maxstart 2017-12-30
                    minstart 2017-12-30
                    maxend 2018-01-13
                    minend 2018-01-13
                    charge 442769184.0 onend
                }


                task task1185 "عایق کانال فودکورت بلوک 8" {
                    milestone
                    priority 500
                    complete 100
                    maxstart 2017-09-13
                    minstart 2017-09-13
                    maxend 2017-09-17
                    minend 2017-09-17
                    charge 700728000.0 onend
                }


                task task1186 "لوله سرد و گرم فن کوئل فودکورت بلوک 8" {
                    milestone
                    priority 500
                    complete 100
                    maxstart 2018-01-04
                    minstart 2018-01-04
                    maxend 2018-01-07
                    minend 2018-01-07
                    charge 124924800.0 onend
                }


                task task1187 "لوله سرد و گرم مصرفی فودکورت بلوک 8" {
                    milestone
                    priority 500
                    complete 100
                    maxstart 2018-01-09
                    minstart 2018-01-09
                    maxend 2018-01-12
                    minend 2018-01-12
                    charge 31231200.0 onend
                }


                task task1188 "لوله اطفاء حریق فودکورت بلوک 8" {
                    milestone
                    priority 500
                    complete 100
                    maxstart 2018-01-25
                    minstart 2018-01-25
                    maxend 2018-02-01
                    minend 2018-02-01
                    charge 553833280.0 onend
                }


                task task1189 "لوله فاضلاب و ونت فودکورت بلوک 8" {
                    milestone
                    priority 500
                    complete 100
                    maxstart 2017-12-31
                    minstart 2017-12-31
                    maxend 2018-01-03
                    minend 2018-01-03
                    charge 37923600.0 onend
                }


                task task1190 "لوله آب باران فودکورت بلوک 8" {
                    milestone
                    priority 500
                    complete 100
                    maxstart 2017-10-17
                    minstart 2017-10-17
                    maxend 2017-10-24
                    minend 2017-10-24
                    charge 31603000.0 onend
                }


                task task1191 "عایق لوله فودکورت بلوک 8" {
                    milestone
                    priority 500
                    complete 99
                    maxstart 2018-01-12
                    minstart 2018-01-12
                    maxend 2018-01-19
                    minend 2018-01-19
                    charge 283534680.0 onend
                }


                task task1192 "تست لوله ها فودکورت بلوک 8" {
                    milestone
                    priority 500
                    complete 100
                    maxstart 2018-02-01
                    minstart 2018-02-01
                    maxend 2018-02-04
                    minend 2018-02-04
                    charge 56662320.0 onend
                }

            }


            task task1193 "تاسیسات برقی فاز 1" {
                priority 500
                complete 99
                maxstart 2017-10-21
                minstart 2017-10-21
                maxend 2018-02-02
                minend 2018-02-02
                start 2017-10-21
                end 2018-02-02
                charge 1273498294.0 onend

                task task1194 "سوراخکاری و شیارزنی فودکورت بلوک 8" {
                    milestone
                    priority 500
                    complete 100
                    maxstart 2017-11-30
                    minstart 2017-11-30
                    maxend 2017-12-19
                    minend 2017-12-19
                    charge 3800000.0 onend
                }


                task task1195 "ساپورت زنی فودکورت بلوک 8" {
                    milestone
                    priority 500
                    complete 99
                    maxstart 2018-01-09
                    minstart 2018-01-09
                    maxend 2018-01-18
                    minend 2018-01-18
                    charge 32080000.0 onend
                }


                task task1196 "سینی کابل فودکورت بلوک 8" {
                    milestone
                    priority 500
                    complete 100
                    maxstart 2018-01-18
                    minstart 2018-01-18
                    maxend 2018-01-27
                    minend 2018-01-27
                    charge 107327025.0 onend
                }


                task task1197 "لوله گذاری صوت، روشنایی و اعلام حریق فودکورت بلوک 8" {
                    milestone
                    priority 500
                    complete 100
                    maxstart 2017-10-21
                    minstart 2017-10-21
                    maxend 2017-11-09
                    minend 2017-11-09
                    charge 387973269.0 onend
                }


                task task1198 "کابل کشی ولتاژ ضعیف فودکورت بلوک 8" {
                    milestone
                    priority 500
                    complete 100
                    maxstart 2018-01-15
                    minstart 2018-01-15
                    maxend 2018-02-02
                    minend 2018-02-02
                    charge 742318000.0 onend
                }

            }


            task task1199 "نازک کاری" {
                priority 500
                complete 58
                maxstart 2018-02-15
                minstart 2018-02-15
                maxend 2018-05-11
                minend 2018-04-20
                start 2018-02-15
                end 2018-04-20
                charge 4121782218.0 onend

                task task1200 "زیرسازی سقف کاذب فودکورت بلوک 8" {
                    milestone
                    priority 500
                    complete 100
                    maxstart 2018-02-15
                    minstart 2018-02-15
                    maxend 2018-03-12
                    minend 2018-03-12
                    charge 1530328800.0 onend
                }


                task task1201 "نصب پنل سقف کاذب فودکورت بلوک 8" {
                    milestone
                    priority 500
                    maxstart 2018-05-11
                    minstart 2018-04-06
                    maxend 2018-05-11
                    minend 2018-04-20
                    charge 1427852650.0 onend
                }


                task task1202 "کفسازی فودکورت بلوک 8" {
                    milestone
                    priority 500
                    maxstart 2018-05-11
                    minstart 2018-03-23
                    maxend 2018-05-11
                    minend 2018-03-27
                    charge 1163600768.0 onend
                }

            }


            task task1203 "تاسیسات مکانیکی فاز 2" {
                priority 500
                maxstart 2018-05-11
                minstart 2018-04-25
                maxend 2018-05-11
                minend 2018-05-11
                start 2018-04-25
                end 2018-05-11
                charge 413893200.0 onend

                task task1204 "نصب دمپر و فایر دمپر فودکورت بلوک 8" {
                    milestone
                    priority 500
                    maxstart 2018-05-11
                    minstart 2018-05-07
                    maxend 2018-05-11
                    minend 2018-05-11
                    charge 232000000.0 onend
                }


                task task1205 "نصب جعبه و کپسول آتش نشانی فودکورت بلوک 8" {
                    milestone
                    priority 500
                    maxstart 2018-05-11
                    minstart 2018-05-11
                    maxend 2018-05-11
                    minend 2018-05-11
                    charge 74900000.0 onend
                }


                task task1206 "نصب دریچه هوا فودکورت بلوک 8" {
                    milestone
                    priority 500
                    maxstart 2018-05-11
                    minstart 2018-04-25
                    maxend 2018-05-11
                    minend 2018-05-11
                    charge 78000000.0 onend
                }


                task task1207 "تست تاسیسات مکانیکی  فودکورت بلوک 8" {
                    milestone
                    priority 500
                    maxstart 2018-05-11
                    minstart 2018-05-11
                    maxend 2018-05-11
                    minend 2018-05-11
                    charge 28993200.0 onend
                }

            }


            task task1208 "تاسیسات برقی فاز 2" {
                priority 500
                maxstart 2018-05-11
                minstart 2018-04-21
                maxend 2018-05-11
                minend 2018-05-11
                start 2018-04-21
                end 2018-05-11
                charge 445089080.0 onend

                task task1209 "نصب تجهیزات صوت فودکورت بلوک 8" {
                    milestone
                    priority 500
                    maxstart 2018-05-11
                    minstart 2018-04-28
                    maxend 2018-05-11
                    minend 2018-05-11
                    charge 318911450.0 onend
                }


                task task1210 "نصب تجهیزات روشنایی فودکورت بلوک 8" {
                    milestone
                    priority 500
                    maxstart 2018-05-11
                    minstart 2018-04-21
                    maxend 2018-05-11
                    minend 2018-05-11
                    charge 126177630.0 onend
                }

            }

        }


        task task1211 "دفتر تجاری" {
            priority 500
            complete 100
            maxstart 2017-11-04
            minstart 2017-11-04
            maxend 2018-02-07
            minend 2018-02-07
            start 2017-11-04
            end 2018-02-07
            charge 967856901.0 onend

            task task1212 "سفتکاری" {
                priority 500
                complete 100
                maxstart 2017-11-04
                minstart 2017-11-04
                maxend 2017-11-13
                minend 2017-11-13
                start 2017-11-04
                end 2017-11-13
                charge 152289280.0 onend

                task task1213 "نصب وال پست دفتر تجاری بلوک 8" {
                    milestone
                    priority 500
                    complete 100
                    maxstart 2017-11-04
                    minstart 2017-11-04
                    maxend 2017-11-08
                    minend 2017-11-08
                    charge 66626560.0 onend
                }


                task task1214 "دیوارچینی هبلکس دفتر تجاری بلوک 8" {
                    milestone
                    priority 500
                    complete 100
                    maxstart 2017-11-08
                    minstart 2017-11-08
                    maxend 2017-11-13
                    minend 2017-11-13
                    charge 85662720.0 onend
                }

            }


            task task1215 "تاسیسات مکانیکی فاز 1" {
                priority 500
                complete 100
                maxstart 2017-11-16
                minstart 2017-11-16
                maxend 2018-02-07
                minend 2018-02-07
                start 2017-11-16
                end 2018-02-07
                charge 523760982.0 onend

                task task1216 "ساخت کانال دفتر تجاری بلوک 8" {
                    milestone
                    priority 500
                    complete 100
                    maxstart 2017-11-16
                    minstart 2017-11-16
                    maxend 2017-11-19
                    minend 2017-11-19
                    charge 69868656.0 onend
                }


                task task1217 "ساپورت زنی و شاسی کشی دفتر تجاری بلوک 8" {
                    milestone
                    priority 500
                    complete 100
                    maxstart 2017-12-30
                    minstart 2017-12-30
                    maxend 2018-01-02
                    minend 2018-01-02
                    charge 111595770.0 onend
                }


                task task1218 "نصب کانال دفتر تجاری بلوک 8" {
                    milestone
                    priority 500
                    complete 100
                    maxstart 2018-01-02
                    minstart 2018-01-02
                    maxend 2018-01-05
                    minend 2018-01-05
                    charge 69868656.0 onend
                }


                task task1219 "عایق کانال دفتر تجاری بلوک 8" {
                    milestone
                    priority 500
                    complete 100
                    maxstart 2018-01-05
                    minstart 2018-01-05
                    maxend 2018-01-08
                    minend 2018-01-08
                    charge 134676000.0 onend
                }


                task task1220 "لوله اطفاء حریق دفتر تجاری بلوک 8" {
                    milestone
                    priority 500
                    complete 100
                    maxstart 2018-02-01
                    minstart 2018-02-01
                    maxend 2018-02-04
                    minend 2018-02-04
                    charge 128568440.0 onend
                }


                task task1221 "تست لوله ها دفتر تجاری بلوک 8" {
                    milestone
                    priority 500
                    complete 100
                    maxstart 2018-02-04
                    minstart 2018-02-04
                    maxend 2018-02-07
                    minend 2018-02-07
                    charge 9183460.0 onend
                }

            }


            task task1222 "تاسیسات برقی فاز 1" {
                priority 500
                complete 100
                maxstart 2017-11-09
                minstart 2017-11-09
                maxend 2017-12-25
                minend 2017-12-25
                start 2017-11-09
                end 2017-12-25
                charge 62549807.0 onend

                task task1223 "سوراخکاری و شیارزنی دفتر تجاری بلوک 8" {
                    milestone
                    priority 500
                    complete 100
                    maxstart 2017-12-19
                    minstart 2017-12-19
                    maxend 2017-12-25
                    minend 2017-12-25
                    charge 1140000.0 onend
                }


                task task1224 "لوله گذاری اعلام حریق دفتر تجاری بلوک 8" {
                    milestone
                    priority 500
                    complete 100
                    maxstart 2017-11-09
                    minstart 2017-11-09
                    maxend 2017-11-15
                    minend 2017-11-15
                    charge 61409807.0 onend
                }

            }


            task task1225 "نازک کاری" {
                priority 500
                complete 100
                maxstart 2017-11-10
                minstart 2017-11-10
                maxend 2017-11-21
                minend 2017-11-21
                start 2017-11-10
                end 2017-11-21
                charge 229256832.0 onend

                task task1226 "سرامیک دفتر تجاری بلوک 8" {
                    milestone
                    priority 500
                    complete 100
                    maxstart 2017-11-10
                    minstart 2017-11-10
                    maxend 2017-11-21
                    minend 2017-11-21
                    charge 229256832.0 onend
                }

            }

        }

    }

}

task task1227 "شفتها و رایزرهای تاسیساتی" {
    chargeset taskCost
    priority 500
    complete 100
    maxstart 2017-10-11
    minstart 2017-10-11
    maxend 2017-12-27
    minend 2017-12-27
    start 2017-10-11
    end 2017-12-27
    charge 6445625573.9 onend

    task task1228 "مایلستون ابلاغ شفتها و رایزرهای تاسیساتی" {
        milestone
        priority 500
        complete 100
        maxstart 2017-10-11
        minstart 2017-10-11
        maxend 2017-10-11
        minend 2017-10-11
    }


    task task1229 "بلوک 8" {
        priority 500
        complete 100
        maxstart 2017-10-11
        minstart 2017-10-11
        maxend 2017-10-24
        minend 2017-10-24
        start 2017-10-11
        end 2017-10-24
        charge 813749754.0 onend

        task task1230 "داکت F12 (همکف تا 4+)" {
            priority 500
            complete 100
            maxstart 2017-10-11
            minstart 2017-10-11
            maxend 2017-10-21
            minend 2017-10-21
            start 2017-10-11
            end 2017-10-21
            charge 239272004.0 onend

            task task1231 "سفتکاری" {
                priority 500
                complete 100
                maxstart 2017-10-11
                minstart 2017-10-11
                maxend 2017-10-13
                minend 2017-10-13
                start 2017-10-11
                end 2017-10-13
                charge 104903484.0 onend

                task task1232 "آسترزنی سیمانی رایزرF12" {
                    milestone
                    priority 500
                    complete 100
                    maxstart 2017-10-11
                    minstart 2017-10-11
                    maxend 2017-10-13
                    minend 2017-10-13
                    charge 104903484.0 onend
                }

            }


            task task1233 "تاسیسات مکانیکی فاز 1" {
                priority 500
                complete 100
                maxstart 2017-10-13
                minstart 2017-10-13
                maxend 2017-10-21
                minend 2017-10-21
                start 2017-10-13
                end 2017-10-21
                charge 134368520.0 onend

                task task1234 "شاسی کشی رایزرF12" {
                    milestone
                    priority 500
                    complete 100
                    maxstart 2017-10-13
                    minstart 2017-10-13
                    maxend 2017-10-14
                    minend 2017-10-14
                    charge 83803720.0 onend
                }


                task task1235 "اجرای لوله کشی فاضلاب و ونت رایزرF12" {
                    milestone
                    priority 500
                    complete 100
                    maxstart 2017-10-14
                    minstart 2017-10-14
                    maxend 2017-10-21
                    minend 2017-10-21
                    charge 50564800.0 onend
                }

            }

        }


        task task1236 "داکت F13 (همکف تا 4+ )" {
            priority 500
            complete 100
            maxstart 2017-10-11
            minstart 2017-10-11
            maxend 2017-10-24
            minend 2017-10-24
            start 2017-10-11
            end 2017-10-24
            charge 574477750.0 onend

            task task1237 "سفتکاری" {
                priority 500
                complete 100
                maxstart 2017-10-11
                minstart 2017-10-11
                maxend 2017-10-13
                minend 2017-10-13
                start 2017-10-11
                end 2017-10-13
                charge 253056650.0 onend

                task task1238 "آسترزنی سیمانی رایزرF13" {
                    milestone
                    priority 500
                    complete 100
                    maxstart 2017-10-11
                    minstart 2017-10-11
                    maxend 2017-10-13
                    minend 2017-10-13
                    charge 253056650.0 onend
                }

            }


            task task1239 "تاسیسات مکانیکی فاز 1" {
                priority 500
                complete 100
                maxstart 2017-10-13
                minstart 2017-10-13
                maxend 2017-10-24
                minend 2017-10-24
                start 2017-10-13
                end 2017-10-24
                charge 321421100.0 onend

                task task1240 "شاسی کشی رایزرF13" {
                    milestone
                    priority 500
                    complete 100
                    maxstart 2017-10-13
                    minstart 2017-10-13
                    maxend 2017-10-14
                    minend 2017-10-14
                    charge 180434540.0 onend
                }


                task task1241 "ساخت کانال های رایزرF13" {
                    milestone
                    priority 500
                    complete 100
                    maxstart 2017-10-14
                    minstart 2017-10-14
                    maxend 2017-10-16
                    minend 2017-10-16
                    charge 48185280.0 onend
                }


                task task1242 " نصب کانال های رایزرF13" {
                    milestone
                    priority 500
                    complete 100
                    maxstart 2017-10-16
                    minstart 2017-10-16
                    maxend 2017-10-18
                    minend 2017-10-18
                    charge 48185280.0 onend
                }


                task task1243 "اجرای لوله کشی سرد و گرم رایزرF13" {
                    milestone
                    priority 500
                    complete 100
                    maxstart 2017-10-23
                    minstart 2017-10-23
                    maxend 2017-10-24
                    minend 2017-10-24
                    charge 44616000.0 onend
                }

            }

        }

    }


    task task1244 "بلوک 13" {
        priority 500
        complete 100
        maxstart 2017-10-17
        minstart 2017-10-17
        maxend 2017-12-10
        minend 2017-12-10
        start 2017-10-17
        end 2017-12-10
        charge 2261316274.0 onend

        task task1245 "داکت F9 (2+ تا 4+ )" {
            priority 500
            complete 100
            maxstart 2017-10-17
            minstart 2017-10-17
            maxend 2017-10-24
            minend 2017-10-24
            start 2017-10-17
            end 2017-10-24
            charge 277999631.0 onend

            task task1246 "سفتکاری" {
                priority 500
                complete 100
                maxstart 2017-10-17
                minstart 2017-10-17
                maxend 2017-10-19
                minend 2017-10-19
                start 2017-10-17
                end 2017-10-19
                charge 113645441.0 onend

                task task1247 "آسترزنی سیمانی رایزرF9" {
                    milestone
                    priority 500
                    complete 100
                    maxstart 2017-10-17
                    minstart 2017-10-17
                    maxend 2017-10-19
                    minend 2017-10-19
                    charge 113645441.0 onend
                }

            }


            task task1248 "تاسیسات مکانیکی فاز 1" {
                priority 500
                complete 100
                maxstart 2017-10-19
                minstart 2017-10-19
                maxend 2017-10-24
                minend 2017-10-24
                start 2017-10-19
                end 2017-10-24
                charge 164354190.0 onend

                task task1249 "شاسی کشی رایزرF9" {
                    milestone
                    priority 500
                    complete 100
                    maxstart 2017-10-19
                    minstart 2017-10-19
                    maxend 2017-10-20
                    minend 2017-10-20
                    charge 67983630.0 onend
                }


                task task1250 "ساخت کانال های رایزرF9" {
                    milestone
                    priority 500
                    complete 100
                    maxstart 2017-10-20
                    minstart 2017-10-20
                    maxend 2017-10-22
                    minend 2017-10-22
                    charge 48185280.0 onend
                }


                task task1251 " نصب کانال های رایزرF9" {
                    milestone
                    priority 500
                    complete 100
                    maxstart 2017-10-22
                    minstart 2017-10-22
                    maxend 2017-10-24
                    minend 2017-10-24
                    charge 48185280.0 onend
                }

            }

        }


        task task1252 "داکت F09 (3+ تا 4+ )" {
            priority 500
            complete 100
            maxstart 2017-10-24
            minstart 2017-10-24
            maxend 2017-11-06
            minend 2017-11-06
            start 2017-10-24
            end 2017-11-06
            charge 544561585.0 onend

            task task1253 "سفتکاری" {
                priority 500
                complete 100
                maxstart 2017-10-24
                minstart 2017-10-24
                maxend 2017-10-26
                minend 2017-10-26
                start 2017-10-24
                end 2017-10-26
                charge 62113905.0 onend

                task task1254 "آسترزنی سیمانی رایزرF09" {
                    milestone
                    priority 500
                    complete 100
                    maxstart 2017-10-24
                    minstart 2017-10-24
                    maxend 2017-10-26
                    minend 2017-10-26
                    charge 62113905.0 onend
                }

            }


            task task1255 "تاسیسات مکانیکی فاز 1" {
                priority 500
                complete 100
                maxstart 2017-10-26
                minstart 2017-10-26
                maxend 2017-11-06
                minend 2017-11-06
                start 2017-10-26
                end 2017-11-06
                charge 482447680.0 onend

                task task1256 "شاسی کشی رایزرF09" {
                    milestone
                    priority 500
                    complete 100
                    maxstart 2017-10-26
                    minstart 2017-10-26
                    maxend 2017-10-27
                    minend 2017-10-27
                    charge 68411200.0 onend
                }


                task task1257 "ساخت کانال های رایزرF09" {
                    milestone
                    priority 500
                    complete 100
                    maxstart 2017-10-27
                    minstart 2017-10-27
                    maxend 2017-11-01
                    minend 2017-11-01
                    charge 144555840.0 onend
                }


                task task1258 " نصب کانال های رایزرF09" {
                    milestone
                    priority 500
                    complete 100
                    maxstart 2017-11-01
                    minstart 2017-11-01
                    maxend 2017-11-06
                    minend 2017-11-06
                    charge 144555840.0 onend
                }


                task task1259 "اجرای لوله کشی سرد و گرم رایزرF09" {
                    milestone
                    priority 500
                    complete 100
                    maxstart 2017-11-01
                    minstart 2017-11-01
                    maxend 2017-11-02
                    minend 2017-11-02
                    charge 124924800.0 onend
                }

            }

        }


        task task1260 "داکت F10 (همکف تا 1+ )" {
            priority 500
            complete 100
            maxstart 2017-11-02
            minstart 2017-11-02
            maxend 2017-11-07
            minend 2017-11-07
            start 2017-11-02
            end 2017-11-07
            charge 201920065.0 onend

            task task1261 "سفتکاری" {
                priority 500
                complete 100
                maxstart 2017-11-02
                minstart 2017-11-02
                maxend 2017-11-04
                minend 2017-11-04
                start 2017-11-02
                end 2017-11-04
                charge 121927295.0 onend

                task task1262 "آسترزنی سیمانی رایزرF10" {
                    milestone
                    priority 500
                    complete 100
                    maxstart 2017-11-02
                    minstart 2017-11-02
                    maxend 2017-11-04
                    minend 2017-11-04
                    charge 121927295.0 onend
                }

            }


            task task1263 "تاسیسات مکانیکی فاز 1" {
                priority 500
                complete 100
                maxstart 2017-11-04
                minstart 2017-11-04
                maxend 2017-11-07
                minend 2017-11-07
                start 2017-11-04
                end 2017-11-07
                charge 79992770.0 onend

                task task1264 "شاسی کشی رایزرF10" {
                    milestone
                    priority 500
                    complete 100
                    maxstart 2017-11-04
                    minstart 2017-11-04
                    maxend 2017-11-05
                    minend 2017-11-05
                    charge 58577090.0 onend
                }


                task task1265 "ساخت کانال های رایزرF10" {
                    milestone
                    priority 500
                    complete 100
                    maxstart 2017-11-05
                    minstart 2017-11-05
                    maxend 2017-11-06
                    minend 2017-11-06
                    charge 10707840.0 onend
                }


                task task1266 " نصب کانال های رایزرF10" {
                    milestone
                    priority 500
                    complete 100
                    maxstart 2017-11-06
                    minstart 2017-11-06
                    maxend 2017-11-07
                    minend 2017-11-07
                    charge 10707840.0 onend
                }

            }

        }


        task task1267 "داکت F11 (همکف تا 4+ )" {
            priority 500
            complete 100
            maxstart 2017-11-07
            minstart 2017-11-07
            maxend 2017-11-12
            minend 2017-11-12
            start 2017-11-07
            end 2017-11-12
            charge 205182549.0 onend

            task task1268 "سفتکاری" {
                priority 500
                complete 100
                maxstart 2017-11-07
                minstart 2017-11-07
                maxend 2017-11-09
                minend 2017-11-09
                start 2017-11-07
                end 2017-11-09
                charge 65794729.0 onend

                task task1269 "آسترزنی سیمانی رایزرF11" {
                    milestone
                    priority 500
                    complete 100
                    maxstart 2017-11-07
                    minstart 2017-11-07
                    maxend 2017-11-09
                    minend 2017-11-09
                    charge 65794729.0 onend
                }

            }


            task task1270 "تاسیسات مکانیکی فاز 1" {
                priority 500
                complete 100
                maxstart 2017-11-09
                minstart 2017-11-09
                maxend 2017-11-12
                minend 2017-11-12
                start 2017-11-09
                end 2017-11-12
                charge 139387820.0 onend

                task task1271 "شاسی کشی رایزرF11" {
                    milestone
                    priority 500
                    complete 100
                    maxstart 2017-11-09
                    minstart 2017-11-09
                    maxend 2017-11-10
                    minend 2017-11-10
                    charge 70976620.0 onend
                }


                task task1272 "اجرای لوله کشی سرد و گرم رایزرF11" {
                    milestone
                    priority 500
                    complete 100
                    maxstart 2017-11-10
                    minstart 2017-11-10
                    maxend 2017-11-12
                    minend 2017-11-12
                    charge 17846400.0 onend
                }


                task task1273 "اجرای لوله کشی فاضلاب و ونت رایزرF11" {
                    milestone
                    priority 500
                    complete 100
                    maxstart 2017-11-10
                    minstart 2017-11-10
                    maxend 2017-11-12
                    minend 2017-11-12
                    charge 50564800.0 onend
                }

            }

        }


        task task1274 "داکت F14 (همکف تا 4+ )" {
            priority 500
            complete 100
            maxstart 2017-11-12
            minstart 2017-11-12
            maxend 2017-11-17
            minend 2017-11-17
            start 2017-11-12
            end 2017-11-17
            charge 196854221.0 onend

            task task1275 "سفتکاری" {
                priority 500
                complete 100
                maxstart 2017-11-12
                minstart 2017-11-12
                maxend 2017-11-14
                minend 2017-11-14
                start 2017-11-12
                end 2017-11-14
                charge 58433081.0 onend

                task task1276 "آسترزنی سیمانی رایزرF14" {
                    milestone
                    priority 500
                    complete 100
                    maxstart 2017-11-12
                    minstart 2017-11-12
                    maxend 2017-11-14
                    minend 2017-11-14
                    charge 58433081.0 onend
                }

            }


            task task1277 "تاسیسات مکانیکی فاز 1" {
                priority 500
                complete 100
                maxstart 2017-11-14
                minstart 2017-11-14
                maxend 2017-11-17
                minend 2017-11-17
                start 2017-11-14
                end 2017-11-17
                charge 138421140.0 onend

                task task1278 "شاسی کشی رایزرF14" {
                    milestone
                    priority 500
                    complete 100
                    maxstart 2017-11-14
                    minstart 2017-11-14
                    maxend 2017-11-15
                    minend 2017-11-15
                    charge 69266340.0 onend
                }


                task task1279 "اجرای لوله کشی سرد و گرم رایزرF14" {
                    milestone
                    priority 500
                    complete 100
                    maxstart 2017-11-15
                    minstart 2017-11-15
                    maxend 2017-11-17
                    minend 2017-11-17
                    charge 31231200.0 onend
                }


                task task1280 "اجرای لوله کشی فاضلاب و ونت رایزرF14" {
                    milestone
                    priority 500
                    complete 100
                    maxstart 2017-11-15
                    minstart 2017-11-15
                    maxend 2017-11-17
                    minend 2017-11-17
                    charge 37923600.0 onend
                }

            }

        }


        task task1281 "داکت F15 (همکف تا 4+ )" {
            priority 500
            complete 100
            maxstart 2017-11-17
            minstart 2017-11-17
            maxend 2017-11-22
            minend 2017-11-22
            start 2017-11-17
            end 2017-11-22
            charge 192490222.0 onend

            task task1282 "سفتکاری" {
                priority 500
                complete 100
                maxstart 2017-11-17
                minstart 2017-11-17
                maxend 2017-11-19
                minend 2017-11-19
                start 2017-11-17
                end 2017-11-19
                charge 61653802.0 onend

                task task1283 "آسترزنی سیمانی رایزرF15" {
                    milestone
                    priority 500
                    complete 100
                    maxstart 2017-11-17
                    minstart 2017-11-17
                    maxend 2017-11-19
                    minend 2017-11-19
                    charge 61653802.0 onend
                }

            }


            task task1284 "تاسیسات مکانیکی فاز 1" {
                priority 500
                complete 100
                maxstart 2017-11-19
                minstart 2017-11-19
                maxend 2017-11-22
                minend 2017-11-22
                start 2017-11-19
                end 2017-11-22
                charge 130836420.0 onend

                task task1285 "شاسی کشی رایزرF15" {
                    milestone
                    priority 500
                    complete 100
                    maxstart 2017-11-19
                    minstart 2017-11-19
                    maxend 2017-11-20
                    minend 2017-11-20
                    charge 70976620.0 onend
                }


                task task1286 "اجرای لوله کشی سرد و گرم رایزرF15" {
                    milestone
                    priority 500
                    complete 100
                    maxstart 2017-11-20
                    minstart 2017-11-20
                    maxend 2017-11-22
                    minend 2017-11-22
                    charge 15615600.0 onend
                }


                task task1287 "اجرای لوله کشی فاضلاب و ونت رایزرF15" {
                    milestone
                    priority 500
                    complete 100
                    maxstart 2017-11-20
                    minstart 2017-11-20
                    maxend 2017-11-22
                    minend 2017-11-22
                    charge 44244200.0 onend
                }

            }

        }


        task task1288 "داکت G (همکف تا 1+ )" {
            priority 500
            complete 100
            maxstart 2017-11-22
            minstart 2017-11-22
            maxend 2017-11-28
            minend 2017-11-28
            start 2017-11-22
            end 2017-11-28
            charge 242515976.0 onend

            task task1289 "سفتکاری" {
                priority 500
                complete 100
                maxstart 2017-11-22
                minstart 2017-11-22
                maxend 2017-11-24
                minend 2017-11-24
                start 2017-11-22
                end 2017-11-24
                charge 120546986.0 onend

                task task1290 "آسترزنی سیمانی رایزرG" {
                    milestone
                    priority 500
                    complete 100
                    maxstart 2017-11-22
                    minstart 2017-11-22
                    maxend 2017-11-24
                    minend 2017-11-24
                    charge 120546986.0 onend
                }

            }


            task task1291 "تاسیسات مکانیکی فاز 1" {
                priority 500
                complete 100
                maxstart 2017-11-24
                minstart 2017-11-24
                maxend 2017-11-28
                minend 2017-11-28
                start 2017-11-24
                end 2017-11-28
                charge 121968990.0 onend

                task task1292 "شاسی کشی رایزرG" {
                    milestone
                    priority 500
                    complete 100
                    maxstart 2017-11-24
                    minstart 2017-11-24
                    maxend 2017-11-25
                    minend 2017-11-25
                    charge 57721950.0 onend
                }


                task task1293 "ساخت کانال های رایزرG" {
                    milestone
                    priority 500
                    complete 100
                    maxstart 2017-11-25
                    minstart 2017-11-25
                    maxend 2017-11-26
                    minend 2017-11-26
                    charge 32123520.0 onend
                }


                task task1294 " نصب کانال های رایزرG" {
                    milestone
                    priority 500
                    complete 100
                    maxstart 2017-11-26
                    minstart 2017-11-26
                    maxend 2017-11-28
                    minend 2017-11-28
                    charge 32123520.0 onend
                }

            }

        }


        task task1295 "داکت 37 (1- تا 4- )" {
            priority 500
            complete 100
            maxstart 2017-11-28
            minstart 2017-11-28
            maxend 2017-12-02
            minend 2017-12-02
            start 2017-11-28
            end 2017-12-02
            charge 140243008.0 onend

            task task1296 "سفتکاری" {
                priority 500
                complete 100
                maxstart 2017-11-28
                minstart 2017-11-28
                maxend 2017-11-30
                minend 2017-11-30
                start 2017-11-28
                end 2017-11-30
                charge 44169888.0 onend

                task task1297 "آسترزنی سیمانی رایزر37" {
                    milestone
                    priority 500
                    complete 100
                    maxstart 2017-11-28
                    minstart 2017-11-28
                    maxend 2017-11-30
                    minend 2017-11-30
                    charge 44169888.0 onend
                }

            }


            task task1298 "تاسیسات مکانیکی فاز 1" {
                priority 500
                complete 100
                maxstart 2017-11-30
                minstart 2017-11-30
                maxend 2017-12-02
                minend 2017-12-02
                start 2017-11-30
                end 2017-12-02
                charge 96073120.0 onend

                task task1299 "شاسی کشی رایزر37" {
                    milestone
                    priority 500
                    complete 100
                    maxstart 2017-11-30
                    minstart 2017-11-30
                    maxend 2017-12-01
                    minend 2017-12-01
                    charge 58149520.0 onend
                }


                task task1300 "اجرای لوله کشی سرد و گرم رایزر37" {
                    milestone
                    priority 500
                    complete 100
                    maxstart 2017-12-01
                    minstart 2017-12-01
                    maxend 2017-12-02
                    minend 2017-12-02
                    charge 37923600.0 onend
                }

            }

        }


        task task1301 "داکت 38 (1- تا 4- )" {
            priority 500
            complete 100
            maxstart 2017-12-02
            minstart 2017-12-02
            maxend 2017-12-06
            minend 2017-12-06
            start 2017-12-02
            end 2017-12-06
            charge 106632270.0 onend

            task task1302 "سفتکاری" {
                priority 500
                complete 100
                maxstart 2017-12-02
                minstart 2017-12-02
                maxend 2017-12-04
                minend 2017-12-04
                start 2017-12-02
                end 2017-12-04
                charge 27606180.0 onend

                task task1303 "آسترزنی سیمانی رایزر38" {
                    milestone
                    priority 500
                    complete 100
                    maxstart 2017-12-02
                    minstart 2017-12-02
                    maxend 2017-12-04
                    minend 2017-12-04
                    charge 27606180.0 onend
                }

            }


            task task1304 "تاسیسات مکانیکی فاز 1" {
                priority 500
                complete 100
                maxstart 2017-12-04
                minstart 2017-12-04
                maxend 2017-12-06
                minend 2017-12-06
                start 2017-12-04
                end 2017-12-06
                charge 79026090.0 onend

                task task1305 "شاسی کشی رایزر38" {
                    milestone
                    priority 500
                    complete 100
                    maxstart 2017-12-04
                    minstart 2017-12-04
                    maxend 2017-12-05
                    minend 2017-12-05
                    charge 50025690.0 onend
                }


                task task1306 "اجرای لوله کشی سرد و گرم رایزر38" {
                    milestone
                    priority 500
                    complete 100
                    maxstart 2017-12-05
                    minstart 2017-12-05
                    maxend 2017-12-06
                    minend 2017-12-06
                    charge 29000400.0 onend
                }

            }

        }


        task task1307 "داکت 39 (1- تا 4- )" {
            priority 500
            complete 100
            maxstart 2017-12-06
            minstart 2017-12-06
            maxend 2017-12-10
            minend 2017-12-10
            start 2017-12-06
            end 2017-12-10
            charge 152916747.0 onend

            task task1308 "سفتکاری" {
                priority 500
                complete 100
                maxstart 2017-12-06
                minstart 2017-12-06
                maxend 2017-12-08
                minend 2017-12-08
                start 2017-12-06
                end 2017-12-08
                charge 50151227.0 onend

                task task1309 "آسترزنی سیمانی رایزرF39" {
                    milestone
                    priority 500
                    complete 100
                    maxstart 2017-12-06
                    minstart 2017-12-06
                    maxend 2017-12-08
                    minend 2017-12-08
                    charge 50151227.0 onend
                }

            }


            task task1310 "تاسیسات مکانیکی فاز 1" {
                priority 500
                complete 100
                maxstart 2017-12-08
                minstart 2017-12-08
                maxend 2017-12-10
                minend 2017-12-10
                start 2017-12-08
                end 2017-12-10
                charge 102765520.0 onend

                task task1311 "شاسی کشی رایزرF39" {
                    milestone
                    priority 500
                    complete 100
                    maxstart 2017-12-08
                    minstart 2017-12-08
                    maxend 2017-12-09
                    minend 2017-12-09
                    charge 58149520.0 onend
                }


                task task1312 "اجرای لوله کشی سرد و گرم رایزرF39" {
                    milestone
                    priority 500
                    complete 100
                    maxstart 2017-12-09
                    minstart 2017-12-09
                    maxend 2017-12-10
                    minend 2017-12-10
                    charge 44616000.0 onend
                }

            }

        }

    }


    task task1313 "بلوک 5" {
        priority 500
        complete 100
        maxstart 2017-12-10
        minstart 2017-12-10
        maxend 2017-12-21
        minend 2017-12-21
        start 2017-12-10
        end 2017-12-21
        charge 649768253.0 onend

        task task1314 "داکت A (3+)" {
            priority 500
            complete 100
            maxstart 2017-12-10
            minstart 2017-12-10
            maxend 2017-12-15
            minend 2017-12-15
            start 2017-12-10
            end 2017-12-15
            charge 85454544.4 onend

            task task1315 "سفتکاری" {
                priority 500
                complete 100
                maxstart 2017-12-10
                minstart 2017-12-10
                maxend 2017-12-12
                minend 2017-12-12
                start 2017-12-10
                end 2017-12-12
                charge 29814674.4 onend

                task task1316 "آسترزنی سیمانی رایزرA" {
                    milestone
                    priority 500
                    complete 100
                    maxstart 2017-12-10
                    minstart 2017-12-10
                    maxend 2017-12-12
                    minend 2017-12-12
                    charge 29814674.4 onend
                }

            }


            task task1317 "تاسیسات مکانیکی فاز 1" {
                priority 500
                complete 100
                maxstart 2017-12-12
                minstart 2017-12-12
                maxend 2017-12-15
                minend 2017-12-15
                start 2017-12-12
                end 2017-12-15
                charge 55639870.0 onend

                task task1318 "شاسی کشی رایزرA" {
                    milestone
                    priority 500
                    complete 100
                    maxstart 2017-12-12
                    minstart 2017-12-12
                    maxend 2017-12-13
                    minend 2017-12-13
                    charge 23516350.0 onend
                }


                task task1319 "ساخت کانال های رایزرA" {
                    milestone
                    priority 500
                    complete 100
                    maxstart 2017-12-13
                    minstart 2017-12-13
                    maxend 2017-12-14
                    minend 2017-12-14
                    charge 16061760.0 onend
                }


                task task1320 " نصب کانال های رایزرA" {
                    milestone
                    priority 500
                    complete 100
                    maxstart 2017-12-14
                    minstart 2017-12-14
                    maxend 2017-12-15
                    minend 2017-12-15
                    charge 16061760.0 onend
                }

            }

        }


        task task1321 "داکت 31 (همکف تا2+)" {
            priority 500
            complete 100
            maxstart 2017-12-12
            minstart 2017-12-12
            maxend 2017-12-17
            minend 2017-12-17
            start 2017-12-12
            end 2017-12-17
            charge 267571602.0 onend

            task task1322 "سفتکاری" {
                priority 500
                complete 100
                maxstart 2017-12-12
                minstart 2017-12-12
                maxend 2017-12-14
                minend 2017-12-14
                start 2017-12-12
                end 2017-12-14
                charge 142631930.0 onend

                task task1323 "آسترزنی سیمانی رایزر31" {
                    milestone
                    priority 500
                    complete 100
                    maxstart 2017-12-12
                    minstart 2017-12-12
                    maxend 2017-12-14
                    minend 2017-12-14
                    charge 142631930.0 onend
                }

            }


            task task1324 "تاسیسات مکانیکی فاز 1" {
                priority 500
                complete 100
                maxstart 2017-12-14
                minstart 2017-12-14
                maxend 2017-12-17
                minend 2017-12-17
                start 2017-12-14
                end 2017-12-17
                charge 124939672.0 onend

                task task1325 "شاسی کشی رایزر31" {
                    milestone
                    priority 500
                    complete 100
                    maxstart 2017-12-14
                    minstart 2017-12-14
                    maxend 2017-12-15
                    minend 2017-12-15
                    charge 73542040.0 onend
                }


                task task1326 "ساخت کانال های رایزر31" {
                    milestone
                    priority 500
                    complete 100
                    maxstart 2017-12-15
                    minstart 2017-12-15
                    maxend 2017-12-16
                    minend 2017-12-16
                    charge 25698816.0 onend
                }


                task task1327 " نصب کانال های رایزر31" {
                    milestone
                    priority 500
                    complete 100
                    maxstart 2017-12-16
                    minstart 2017-12-16
                    maxend 2017-12-17
                    minend 2017-12-17
                    charge 25698816.0 onend
                }

            }

        }


        task task1328 "داکت 32 (همکف تا2+)" {
            priority 500
            complete 100
            maxstart 2017-12-14
            minstart 2017-12-14
            maxend 2017-12-21
            minend 2017-12-21
            start 2017-12-14
            end 2017-12-21
            charge 296742106.6 onend

            task task1329 "سفتکاری" {
                priority 500
                complete 100
                maxstart 2017-12-14
                minstart 2017-12-14
                maxend 2017-12-17
                minend 2017-12-17
                start 2017-12-14
                end 2017-12-17
                charge 148245186.6 onend

                task task1330 "آسترزنی سیمانی رایزر32" {
                    milestone
                    priority 500
                    complete 100
                    maxstart 2017-12-14
                    minstart 2017-12-14
                    maxend 2017-12-17
                    minend 2017-12-17
                    charge 148245186.6 onend
                }

            }


            task task1331 "تاسیسات مکانیکی فاز 1" {
                priority 500
                complete 100
                maxstart 2017-12-17
                minstart 2017-12-17
                maxend 2017-12-21
                minend 2017-12-21
                start 2017-12-17
                end 2017-12-21
                charge 148496920.0 onend

                task task1332 "شاسی کشی رایزر32" {
                    milestone
                    priority 500
                    complete 100
                    maxstart 2017-12-17
                    minstart 2017-12-17
                    maxend 2017-12-18
                    minend 2017-12-18
                    charge 73542040.0 onend
                }


                task task1333 "ساخت کانال های رایزر32" {
                    milestone
                    priority 500
                    complete 100
                    maxstart 2017-12-18
                    minstart 2017-12-18
                    maxend 2017-12-19
                    minend 2017-12-19
                    charge 37477440.0 onend
                }


                task task1334 " نصب کانال های رایزر32" {
                    milestone
                    priority 500
                    complete 100
                    maxstart 2017-12-19
                    minstart 2017-12-19
                    maxend 2017-12-21
                    minend 2017-12-21
                    charge 37477440.0 onend
                }

            }

        }

    }


    task task1335 "بلوک 6" {
        priority 500
        complete 100
        maxstart 2017-12-17
        minstart 2017-12-17
        maxend 2017-12-27
        minend 2017-12-27
        start 2017-12-17
        end 2017-12-27
        charge 243147974.0 onend

        task task1336 "داکت F7(همکف تا 4+)" {
            priority 500
            complete 100
            maxstart 2017-12-17
            minstart 2017-12-17
            maxend 2017-12-27
            minend 2017-12-27
            start 2017-12-17
            end 2017-12-27
            charge 243147974.0 onend

            task task1337 "سفتکاری" {
                priority 500
                complete 100
                maxstart 2017-12-17
                minstart 2017-12-17
                maxend 2017-12-19
                minend 2017-12-19
                start 2017-12-17
                end 2017-12-19
                charge 63494214.0 onend

                task task1338 "آسترزنی سیمانی رایزرF07" {
                    milestone
                    priority 500
                    complete 100
                    maxstart 2017-12-17
                    minstart 2017-12-17
                    maxend 2017-12-19
                    minend 2017-12-19
                    charge 63494214.0 onend
                }

            }


            task task1339 "تاسیسات مکانیکی فاز 1" {
                priority 500
                complete 100
                maxstart 2017-12-19
                minstart 2017-12-19
                maxend 2017-12-27
                minend 2017-12-27
                start 2017-12-19
                end 2017-12-27
                charge 179653760.0 onend

                task task1340 "شاسی کشی رایزرF7" {
                    milestone
                    priority 500
                    complete 100
                    maxstart 2017-12-19
                    minstart 2017-12-19
                    maxend 2017-12-20
                    minend 2017-12-20
                    charge 70976620.0 onend
                }


                task task1341 "ساخت کانال های رایزرF7" {
                    milestone
                    priority 500
                    complete 100
                    maxstart 2017-12-20
                    minstart 2017-12-20
                    maxend 2017-12-21
                    minend 2017-12-21
                    charge 25431120.0 onend
                }


                task task1342 " نصب کانال های رایزرF7" {
                    milestone
                    priority 500
                    complete 100
                    maxstart 2017-12-20
                    minstart 2017-12-20
                    maxend 2017-12-21
                    minend 2017-12-21
                    charge 25431120.0 onend
                }


                task task1343 "اجرای لوله کشی سرد و گرم رایزرF7" {
                    milestone
                    priority 500
                    complete 100
                    maxstart 2017-12-20
                    minstart 2017-12-20
                    maxend 2017-12-27
                    minend 2017-12-27
                    charge 35692800.0 onend
                }


                task task1344 "اجرای لوله کشی فاضلاب و ونت رایزرF7" {
                    milestone
                    priority 500
                    complete 100
                    maxstart 2017-12-20
                    minstart 2017-12-20
                    maxend 2017-12-27
                    minend 2017-12-27
                    charge 22122100.0 onend
                }

            }

        }

    }


    task task1345 "بلوک 10" {
        priority 500
        complete 100
        maxstart 2017-10-26
        minstart 2017-10-26
        maxend 2017-11-06
        minend 2017-11-06
        start 2017-10-26
        end 2017-11-06
        charge 630629777.0 onend

        task task1346 "داکت 33 (2+ تا 3+ )" {
            priority 500
            complete 100
            maxstart 2017-10-26
            minstart 2017-10-26
            maxend 2017-10-30
            minend 2017-10-30
            start 2017-10-26
            end 2017-10-30
            charge 223856249.0 onend

            task task1347 "سفتکاری" {
                priority 500
                complete 100
                maxstart 2017-10-26
                minstart 2017-10-26
                maxend 2017-10-28
                minend 2017-10-28
                start 2017-10-26
                end 2017-10-28
                charge 107203999.0 onend

                task task1348 "آسترزنی سیمانی رایزر33" {
                    milestone
                    priority 500
                    complete 100
                    maxstart 2017-10-26
                    minstart 2017-10-26
                    maxend 2017-10-28
                    minend 2017-10-28
                    charge 107203999.0 onend
                }

            }


            task task1349 "تاسیسات مکانیکی فاز 1" {
                priority 500
                complete 100
                maxstart 2017-10-28
                minstart 2017-10-28
                maxend 2017-10-30
                minend 2017-10-30
                start 2017-10-28
                end 2017-10-30
                charge 116652250.0 onend

                task task1350 "شاسی کشی رایزر33" {
                    milestone
                    priority 500
                    complete 100
                    maxstart 2017-10-28
                    minstart 2017-10-28
                    maxend 2017-10-29
                    minend 2017-10-29
                    charge 53446250.0 onend
                }


                task task1351 "اجرای لوله کشی فاضلاب و ونت رایزر33" {
                    milestone
                    priority 500
                    complete 100
                    maxstart 2017-10-29
                    minstart 2017-10-29
                    maxend 2017-10-30
                    minend 2017-10-30
                    charge 63206000.0 onend
                }

            }

        }


        task task1352 "داکت 01 (همکف )" {
            priority 500
            complete 100
            maxstart 2017-10-28
            minstart 2017-10-28
            maxend 2017-11-03
            minend 2017-11-03
            start 2017-10-28
            end 2017-11-03
            charge 172822000.0 onend

            task task1353 "سفتکاری" {
                priority 500
                complete 100
                maxstart 2017-10-28
                minstart 2017-10-28
                maxend 2017-10-30
                minend 2017-10-30
                start 2017-10-28
                end 2017-10-30
                charge 59813390.0 onend

                task task1354 "آسترزنی سیمانی رایزر01" {
                    milestone
                    priority 500
                    complete 100
                    maxstart 2017-10-28
                    minstart 2017-10-28
                    maxend 2017-10-30
                    minend 2017-10-30
                    charge 59813390.0 onend
                }

            }


            task task1355 "تاسیسات مکانیکی فاز 1" {
                priority 500
                complete 100
                maxstart 2017-10-30
                minstart 2017-10-30
                maxend 2017-11-03
                minend 2017-11-03
                start 2017-10-30
                end 2017-11-03
                charge 113008610.0 onend

                task task1356 "شاسی کشی رایزر01" {
                    milestone
                    priority 500
                    complete 100
                    maxstart 2017-10-30
                    minstart 2017-10-30
                    maxend 2017-10-31
                    minend 2017-10-31
                    charge 38053730.0 onend
                }


                task task1357 "ساخت کانال های رایزر01" {
                    milestone
                    priority 500
                    complete 100
                    maxstart 2017-10-31
                    minstart 2017-10-31
                    maxend 2017-11-01
                    minend 2017-11-01
                    charge 37477440.0 onend
                }


                task task1358 " نصب کانال های رایزر01" {
                    milestone
                    priority 500
                    complete 100
                    maxstart 2017-11-01
                    minstart 2017-11-01
                    maxend 2017-11-03
                    minend 2017-11-03
                    charge 37477440.0 onend
                }

            }

        }


        task task1359 "داکت F3 (همکف )" {
            priority 500
            complete 100
            maxstart 2017-10-30
            minstart 2017-10-30
            maxend 2017-11-04
            minend 2017-11-04
            start 2017-10-30
            end 2017-11-04
            charge 102245039.6 onend

            task task1360 "سفتکاری" {
                priority 500
                complete 100
                maxstart 2017-10-30
                minstart 2017-10-30
                maxend 2017-11-01
                minend 2017-11-01
                start 2017-10-30
                end 2017-11-01
                charge 36440157.6 onend

                task task1361 "آسترزنی سیمانی رایزرF3" {
                    milestone
                    priority 500
                    complete 100
                    maxstart 2017-10-30
                    minstart 2017-10-30
                    maxend 2017-11-01
                    minend 2017-11-01
                    charge 36440157.6 onend
                }

            }


            task task1362 "تاسیسات مکانیکی فاز 1" {
                priority 500
                complete 100
                maxstart 2017-11-01
                minstart 2017-11-01
                maxend 2017-11-04
                minend 2017-11-04
                start 2017-11-01
                end 2017-11-04
                charge 65804882.0 onend

                task task1363 "شاسی کشی رایزرF3" {
                    milestone
                    priority 500
                    complete 100
                    maxstart 2017-11-01
                    minstart 2017-11-01
                    maxend 2017-11-02
                    minend 2017-11-02
                    charge 27792050.0 onend
                }


                task task1364 "ساخت کانال های رایزرF3" {
                    milestone
                    priority 500
                    complete 100
                    maxstart 2017-11-02
                    minstart 2017-11-02
                    maxend 2017-11-03
                    minend 2017-11-03
                    charge 19006416.0 onend
                }


                task task1365 " نصب کانال های رایزرF3" {
                    milestone
                    priority 500
                    complete 100
                    maxstart 2017-11-03
                    minstart 2017-11-03
                    maxend 2017-11-04
                    minend 2017-11-04
                    charge 19006416.0 onend
                }

            }

        }


        task task1366 "داکت F1 (همکف تا 3+ )" {
            priority 500
            complete 100
            maxstart 2017-11-01
            minstart 2017-11-01
            maxend 2017-11-06
            minend 2017-11-06
            start 2017-11-01
            end 2017-11-06
            charge 131706488.4 onend

            task task1367 "سفتکاری" {
                priority 500
                complete 100
                maxstart 2017-11-01
                minstart 2017-11-01
                maxend 2017-11-03
                minend 2017-11-03
                start 2017-11-01
                end 2017-11-03
                charge 51899618.4 onend

                task task1368 "آسترزنی سیمانی رایزرF1" {
                    milestone
                    priority 500
                    complete 100
                    maxstart 2017-11-01
                    minstart 2017-11-01
                    maxend 2017-11-03
                    minend 2017-11-03
                    charge 51899618.4 onend
                }

            }


            task task1369 "تاسیسات مکانیکی فاز 1" {
                priority 500
                complete 100
                maxstart 2017-11-03
                minstart 2017-11-03
                maxend 2017-11-06
                minend 2017-11-06
                start 2017-11-03
                end 2017-11-06
                charge 79806870.0 onend

                task task1370 "شاسی کشی رایزرF1" {
                    milestone
                    priority 500
                    complete 100
                    maxstart 2017-11-03
                    minstart 2017-11-03
                    maxend 2017-11-04
                    minend 2017-11-04
                    charge 42329430.0 onend
                }


                task task1371 "ساخت کانال های رایزرF1" {
                    milestone
                    priority 500
                    complete 100
                    maxstart 2017-11-04
                    minstart 2017-11-04
                    maxend 2017-11-05
                    minend 2017-11-05
                    charge 18738720.0 onend
                }


                task task1372 " نصب کانال های رایزرF1" {
                    milestone
                    priority 500
                    complete 100
                    maxstart 2017-11-05
                    minstart 2017-11-05
                    maxend 2017-11-06
                    minend 2017-11-06
                    charge 18738720.0 onend
                }

            }

        }

    }


    task task1373 "بلوک 11" {
        priority 500
        complete 100
        maxstart 2017-10-31
        minstart 2017-10-31
        maxend 2017-11-12
        minend 2017-11-12
        start 2017-10-31
        end 2017-11-12
        charge 1177856869.9 onend

        task task1374 "داکت F6 (همکف تا 4+ )" {
            priority 500
            complete 100
            maxstart 2017-11-03
            minstart 2017-11-03
            maxend 2017-11-08
            minend 2017-11-08
            start 2017-11-03
            end 2017-11-08
            charge 158479816.0 onend

            task task1375 "سفتکاری" {
                priority 500
                complete 100
                maxstart 2017-11-03
                minstart 2017-11-03
                maxend 2017-11-05
                minend 2017-11-05
                start 2017-11-03
                end 2017-11-05
                charge 60733596.0 onend

                task task1376 "آسترزنی سیمانی رایزرF6" {
                    milestone
                    priority 500
                    complete 100
                    maxstart 2017-11-03
                    minstart 2017-11-03
                    maxend 2017-11-05
                    minend 2017-11-05
                    charge 60733596.0 onend
                }

            }


            task task1377 "تاسیسات مکانیکی فاز 1" {
                priority 500
                complete 100
                maxstart 2017-11-05
                minstart 2017-11-05
                maxend 2017-11-08
                minend 2017-11-08
                start 2017-11-05
                end 2017-11-08
                charge 97746220.0 onend

                task task1378 "شاسی کشی رایزرF6" {
                    milestone
                    priority 500
                    complete 100
                    maxstart 2017-11-05
                    minstart 2017-11-05
                    maxend 2017-11-06
                    minend 2017-11-06
                    charge 70976620.0 onend
                }


                task task1379 "ساخت کانال های رایزرF6" {
                    milestone
                    priority 500
                    complete 100
                    maxstart 2017-11-06
                    minstart 2017-11-06
                    maxend 2017-11-07
                    minend 2017-11-07
                    charge 13384800.0 onend
                }


                task task1380 " نصب کانال های رایزرF6" {
                    milestone
                    priority 500
                    complete 100
                    maxstart 2017-11-07
                    minstart 2017-11-07
                    maxend 2017-11-08
                    minend 2017-11-08
                    charge 13384800.0 onend
                }

            }

        }


        task task1381 "داکت D (همکف )" {
            priority 500
            complete 100
            maxstart 2017-10-31
            minstart 2017-10-31
            maxend 2017-11-06
            minend 2017-11-06
            start 2017-10-31
            end 2017-11-06
            charge 169666345.0 onend

            task task1382 "سفتکاری" {
                priority 500
                complete 100
                maxstart 2017-10-31
                minstart 2017-10-31
                maxend 2017-11-02
                minend 2017-11-02
                start 2017-10-31
                end 2017-11-02
                charge 57512875.0 onend

                task task1383 "آسترزنی سیمانی رایزرD" {
                    milestone
                    priority 500
                    complete 100
                    maxstart 2017-10-31
                    minstart 2017-10-31
                    maxend 2017-11-02
                    minend 2017-11-02
                    charge 57512875.0 onend
                }

            }


            task task1384 "تاسیسات مکانیکی فاز 1" {
                priority 500
                complete 100
                maxstart 2017-11-02
                minstart 2017-11-02
                maxend 2017-11-06
                minend 2017-11-06
                start 2017-11-02
                end 2017-11-06
                charge 112153470.0 onend

                task task1385 "شاسی کشی رایزرD" {
                    milestone
                    priority 500
                    complete 100
                    maxstart 2017-11-02
                    minstart 2017-11-02
                    maxend 2017-11-03
                    minend 2017-11-03
                    charge 37198590.0 onend
                }


                task task1386 "ساخت کانال های رایزرD" {
                    milestone
                    priority 500
                    complete 100
                    maxstart 2017-11-03
                    minstart 2017-11-03
                    maxend 2017-11-04
                    minend 2017-11-04
                    charge 37477440.0 onend
                }


                task task1387 " نصب کانال های رایزرD" {
                    milestone
                    priority 500
                    complete 100
                    maxstart 2017-11-04
                    minstart 2017-11-04
                    maxend 2017-11-06
                    minend 2017-11-06
                    charge 37477440.0 onend
                }

            }

        }


        task task1388 "داکت 2 (همکف تا 3+ )" {
            priority 500
            complete 100
            maxstart 2017-11-02
            minstart 2017-11-02
            maxend 2017-11-08
            minend 2017-11-08
            start 2017-11-02
            end 2017-11-08
            charge 394851828.0 onend

            task task1389 "سفتکاری" {
                priority 500
                complete 100
                maxstart 2017-11-02
                minstart 2017-11-02
                maxend 2017-11-04
                minend 2017-11-04
                start 2017-11-02
                end 2017-11-04
                charge 209806968.0 onend

                task task1390 "آسترزنی سیمانی رایزر2" {
                    milestone
                    priority 500
                    complete 100
                    maxstart 2017-11-02
                    minstart 2017-11-02
                    maxend 2017-11-04
                    minend 2017-11-04
                    charge 209806968.0 onend
                }

            }


            task task1391 "تاسیسات مکانیکی فاز 1" {
                priority 500
                complete 100
                maxstart 2017-11-04
                minstart 2017-11-04
                maxend 2017-11-08
                minend 2017-11-08
                start 2017-11-04
                end 2017-11-08
                charge 185044860.0 onend

                task task1392 "شاسی کشی رایزر2" {
                    milestone
                    priority 500
                    complete 100
                    maxstart 2017-11-04
                    minstart 2017-11-04
                    maxend 2017-11-05
                    minend 2017-11-05
                    charge 105182220.0 onend
                }


                task task1393 "ساخت کانال های رایزر2" {
                    milestone
                    priority 500
                    complete 100
                    maxstart 2017-11-05
                    minstart 2017-11-05
                    maxend 2017-11-06
                    minend 2017-11-06
                    charge 32123520.0 onend
                }


                task task1394 " نصب کانال های رایزر2" {
                    milestone
                    priority 500
                    complete 100
                    maxstart 2017-11-06
                    minstart 2017-11-06
                    maxend 2017-11-08
                    minend 2017-11-08
                    charge 32123520.0 onend
                }


                task task1395 "اجرای لوله کشی سرد و گرم رایزر2" {
                    milestone
                    priority 500
                    complete 100
                    maxstart 2017-11-06
                    minstart 2017-11-06
                    maxend 2017-11-07
                    minend 2017-11-07
                    charge 15615600.0 onend
                }

            }

        }


        task task1396 "داکت 3 (2+ تا 4+ )" {
            priority 500
            complete 100
            maxstart 2017-11-04
            minstart 2017-11-04
            maxend 2017-11-12
            minend 2017-11-12
            start 2017-11-04
            end 2017-11-12
            charge 306767619.0 onend

            task task1397 "سفتکاری" {
                priority 500
                complete 100
                maxstart 2017-11-04
                minstart 2017-11-04
                maxend 2017-11-06
                minend 2017-11-06
                start 2017-11-04
                end 2017-11-06
                charge 79597819.0 onend

                task task1398 "آسترزنی سیمانی رایزر3" {
                    milestone
                    priority 500
                    complete 100
                    maxstart 2017-11-04
                    minstart 2017-11-04
                    maxend 2017-11-06
                    minend 2017-11-06
                    charge 79597819.0 onend
                }

            }


            task task1399 "تاسیسات مکانیکی فاز 1" {
                priority 500
                complete 100
                maxstart 2017-11-06
                minstart 2017-11-06
                maxend 2017-11-12
                minend 2017-11-12
                start 2017-11-06
                end 2017-11-12
                charge 227169800.0 onend

                task task1400 "شاسی کشی رایزر3" {
                    milestone
                    priority 500
                    complete 100
                    maxstart 2017-11-06
                    minstart 2017-11-06
                    maxend 2017-11-07
                    minend 2017-11-07
                    charge 55584100.0 onend
                }


                task task1401 "ساخت کانال های رایزر3" {
                    milestone
                    priority 500
                    complete 100
                    maxstart 2017-11-07
                    minstart 2017-11-07
                    maxend 2017-11-09
                    minend 2017-11-09
                    charge 66924000.0 onend
                }


                task task1402 " نصب کانال های رایزر3" {
                    milestone
                    priority 500
                    complete 100
                    maxstart 2017-11-09
                    minstart 2017-11-09
                    maxend 2017-11-12
                    minend 2017-11-12
                    charge 66924000.0 onend
                }


                task task1403 "اجرای لوله کشی سرد و گرم رایزر3" {
                    milestone
                    priority 500
                    complete 100
                    maxstart 2017-11-09
                    minstart 2017-11-09
                    maxend 2017-11-10
                    minend 2017-11-10
                    charge 15615600.0 onend
                }


                task task1404 "اجرای لوله کشی فاضلاب و ونت رایزر3" {
                    milestone
                    priority 500
                    complete 100
                    maxstart 2017-11-09
                    minstart 2017-11-09
                    maxend 2017-11-10
                    minend 2017-11-10
                    charge 22122100.0 onend
                }

            }

        }


        task task1405 "داکت 36 (1- تا 4- )" {
            priority 500
            complete 100
            maxstart 2017-10-31
            minstart 2017-10-31
            maxend 2017-11-04
            minend 2017-11-04
            start 2017-10-31
            end 2017-11-04
            charge 148091261.9 onend

            task task1406 "سفتکاری" {
                priority 500
                complete 100
                maxstart 2017-10-31
                minstart 2017-10-31
                maxend 2017-11-02
                minend 2017-11-02
                start 2017-10-31
                end 2017-11-02
                charge 63172141.9 onend

                task task1407 "آسترزنی سیمانی رایزر36" {
                    milestone
                    priority 500
                    complete 100
                    maxstart 2017-10-31
                    minstart 2017-10-31
                    maxend 2017-11-02
                    minend 2017-11-02
                    charge 63172141.9 onend
                }

            }


            task task1408 "تاسیسات مکانیکی فاز 1" {
                priority 500
                complete 100
                maxstart 2017-11-02
                minstart 2017-11-02
                maxend 2017-11-04
                minend 2017-11-04
                start 2017-11-02
                end 2017-11-04
                charge 84919120.0 onend

                task task1409 "شاسی کشی رایزر36" {
                    milestone
                    priority 500
                    complete 100
                    maxstart 2017-11-02
                    minstart 2017-11-02
                    maxend 2017-11-03
                    minend 2017-11-03
                    charge 58149520.0 onend
                }


                task task1410 "اجرای لوله کشی سرد و گرم رایزر36" {
                    milestone
                    priority 500
                    complete 100
                    maxstart 2017-11-03
                    minstart 2017-11-03
                    maxend 2017-11-04
                    minend 2017-11-04
                    charge 26769600.0 onend
                }

            }

        }

    }


    task task1411 "بلوک 12" {
        priority 500
        complete 100
        maxstart 2017-11-05
        minstart 2017-11-05
        maxend 2017-11-13
        minend 2017-11-13
        start 2017-11-05
        end 2017-11-13
        charge 669156672.0 onend

        task task1412 "داکت F08 (همکف تا 4+ )" {
            priority 500
            complete 100
            maxstart 2017-11-05
            minstart 2017-11-05
            maxend 2017-11-12
            minend 2017-11-12
            start 2017-11-05
            end 2017-11-12
            charge 406145202.0 onend

            task task1413 "سفتکاری" {
                priority 500
                complete 100
                maxstart 2017-11-05
                minstart 2017-11-05
                maxend 2017-11-07
                minend 2017-11-07
                start 2017-11-05
                end 2017-11-07
                charge 162876462.0 onend

                task task1414 "آسترزنی سیمانی رایزرF08" {
                    milestone
                    priority 500
                    complete 100
                    maxstart 2017-11-05
                    minstart 2017-11-05
                    maxend 2017-11-07
                    minend 2017-11-07
                    charge 162876462.0 onend
                }

            }


            task task1415 "تاسیسات مکانیکی فاز 1" {
                priority 500
                complete 100
                maxstart 2017-11-07
                minstart 2017-11-07
                maxend 2017-11-12
                minend 2017-11-12
                start 2017-11-07
                end 2017-11-12
                charge 243268740.0 onend

                task task1416 "شاسی کشی رایزرF08" {
                    milestone
                    priority 500
                    complete 100
                    maxstart 2017-11-07
                    minstart 2017-11-07
                    maxend 2017-11-08
                    minend 2017-11-08
                    charge 101761660.0 onend
                }


                task task1417 "ساخت کانال های رایزرF08" {
                    milestone
                    priority 500
                    complete 100
                    maxstart 2017-11-08
                    minstart 2017-11-08
                    maxend 2017-11-09
                    minend 2017-11-09
                    charge 10707840.0 onend
                }


                task task1418 " نصب کانال های رایزرF08" {
                    milestone
                    priority 500
                    complete 100
                    maxstart 2017-11-09
                    minstart 2017-11-09
                    maxend 2017-11-10
                    minend 2017-11-10
                    charge 10707840.0 onend
                }


                task task1419 "اجرای لوله کشی سرد و گرم رایزرF08" {
                    milestone
                    priority 500
                    complete 100
                    maxstart 2017-11-09
                    minstart 2017-11-09
                    maxend 2017-11-12
                    minend 2017-11-12
                    charge 75847200.0 onend
                }


                task task1420 "اجرای لوله کشی فاضلاب و ونت رایزرF08" {
                    milestone
                    priority 500
                    complete 100
                    maxstart 2017-11-09
                    minstart 2017-11-09
                    maxend 2017-11-12
                    minend 2017-11-12
                    charge 44244200.0 onend
                }

            }

        }


        task task1421 "داکت E (همکف تا 1+ )" {
            priority 500
            complete 100
            maxstart 2017-11-07
            minstart 2017-11-07
            maxend 2017-11-13
            minend 2017-11-13
            start 2017-11-07
            end 2017-11-13
            charge 263011470.0 onend

            task task1422 "سفتکاری" {
                priority 500
                complete 100
                maxstart 2017-11-07
                minstart 2017-11-07
                maxend 2017-11-09
                minend 2017-11-09
                start 2017-11-07
                end 2017-11-09
                charge 138030900.0 onend

                task task1423 "آسترزنی سیمانی رایزرE" {
                    milestone
                    priority 500
                    complete 100
                    maxstart 2017-11-07
                    minstart 2017-11-07
                    maxend 2017-11-09
                    minend 2017-11-09
                    charge 138030900.0 onend
                }

            }


            task task1424 "تاسیسات مکانیکی فاز 1" {
                priority 500
                complete 100
                maxstart 2017-11-09
                minstart 2017-11-09
                maxend 2017-11-13
                minend 2017-11-13
                start 2017-11-09
                end 2017-11-13
                charge 124980570.0 onend

                task task1425 "شاسی کشی رایزرE" {
                    milestone
                    priority 500
                    complete 100
                    maxstart 2017-11-09
                    minstart 2017-11-09
                    maxend 2017-11-10
                    minend 2017-11-10
                    charge 50025690.0 onend
                }


                task task1426 "ساخت کانال های رایزرE" {
                    milestone
                    priority 500
                    complete 100
                    maxstart 2017-11-10
                    minstart 2017-11-10
                    maxend 2017-11-11
                    minend 2017-11-11
                    charge 37477440.0 onend
                }


                task task1427 " نصب کانال های رایزرE" {
                    milestone
                    priority 500
                    complete 100
                    maxstart 2017-11-11
                    minstart 2017-11-11
                    maxend 2017-11-13
                    minend 2017-11-13
                    charge 37477440.0 onend
                }

            }

        }

    }

}

task task1428 "برچیدن کارگاه" {
    milestone
    chargeset taskCost
    priority 500
    maxstart 2018-05-11
    minstart 2018-05-11
    maxend 2018-05-11
    minend 2018-05-11
}

task task1429 "پایان پروژه" {
    milestone
    chargeset taskCost
    priority 500
    complete 99
    maxstart 2018-05-11
    minstart 2018-05-11
    maxend 2018-05-11
    minend 2018-05-11
}

# ------------END-------------



# ------------Reports-------------
taskreport taskReports "tasksReport" {
    headline "Tasks Table"
    formats csv
    columns
    bsi{title "wbs"}, 
    id{title "id"}, 
    name{title "name"},
    start{title "start"}, 
    end{title "end"},
    duration{title "duration"},
    effort{title "effort"}, 
    effortdone{title "effortdone"},
    effortleft{title "effortleft"},
    priority{title "priority"},
    responsible{title "responsible"},
    resources{title "resources"},
    status{title "status"},
    activetasks{title "active_sub_tasks"},
    opentasks{title "open_sub_tasks"},
    closedtasks{title "closed_sub_tasks"},
    complete{title "complete"},
    followers{title "followers"},
    precursors{title "depends_on"},
    pathcriticalness{title "path_criticalness"},
    gauge{title "schedule_gauge"},
    cost { title "cost"}

    balance cost rev
    sorttasks tree
    selfcontained yes
    scenarios delayed
}

resourcereport resourceReports "resourceReport" {
    headline "Resources Table"
    formats csv
    columns
    bsi{title "wbs"},
    id{title "id"},
    name{title "name"},
    rate{title "rate"},
    efficiency{title "efficiency"},
    cost{title "cost"},
    duties{title "assigned_tasks"},
    freetime{title "unallocated_work_time"},
    freework{title "unallocated_work_capacity"},
    criticalness,
    fte{title "full_time_equivalent"},
    managers{title "managers"}

    balance cost rev
    sortresources tree
    selfcontained yes
    scenarios delayed
}

# ------------END-------------